# 07.09.26

Schedule from MS Project, 2023-03-10 to 2027-03-10, A marks actual dates.
DEXP

## Calendars

- Стандартный: Mon-Fri 09:00-13:00, 14:00-18:00; Sat-Sun off. Exceptions (off unless hours are given): 2026-09-05 09:00-13:00, 14:00-18:00, 2026-09-12 to 2026-09-13 09:00-13:00, 14:00-18:00, 2026-09-19 to 2026-09-20 09:00-13:00, 14:00-18:00, 2026-09-26 to 2026-09-27 09:00-13:00, 14:00-18:00.

## Resources

| Resource |
| --- |
| Макаревич А |
| Дедов В |
| Бобренок В |
| Тимофеев В |
| Зорькин В |
| Бундин В |
| Труфанов А |
| Некрасов А |
| Шуранов Ю |
| Домоводов К |
| Амрулин Р |
| Карабанов |
| Олег |
| оплот |
| Коленкоров |
| Мультан |
| Малинина М |
| Лобанов И |
| Дворник |
| Подрядчик |
| Олег лукас |
| Черепанов И |
| оперторы2 |
| оператор2 |
| Тракресурс |
| Сапелин С |
| Технолог |
| Фрезер ЧПУ |
| Пинчук А |
| КИнжекул |
| ТО_2 |
| ТО_1 |
| ТО_М |
| ТО |
| Кладовщики |

## Schedule

| ID | WBS | Task | Duration | Start | Finish | Predecessors | Complete | Remaining | Total slack | Free slack | Constraint | Resources | Work | Actual work |
| --- | --- | --- | --- | --- | --- | --- | --- | --- | --- | --- | --- | --- | --- | --- |
| 1 | 1 | **1 цех** | 431.5d? | 2023-03-10 09:00 A | 2024-11-02 13:00 |  | 98% | 7.11d? |  |  |  |  | 22708.1h | 22431.2h |
| 2 | 1.1 | Монтаж трассы слива в раковину с рекурператоров | 7h | 2026-09-30 09:00 | 2026-09-30 17:00 |  |  |  | 114.72d |  | start no earlier than 2026-09-30 09:00 | Труфанов А; Некрасов А | 14h |  |
| 3 | 1.2 | Проверка весов на 2 линии красный смеситель, со слов валентина, после замены блока питания, работает, а потом выбивает весы, перестают работать | 1h | 2026-09-29 09:00 | 2026-09-29 10:00 |  |  |  | 116.47d |  | start no earlier than 2026-09-29 09:00 | Дедов В | 1h |  |
| 4 | 1.3 | Повторный замер параметров в 1 цеху, вентилляция (подробности по точкам у Домоводова) | 5h | 2026-09-25 09:00 A | 2026-09-25 15:00 A |  | 100% |  |  |  | start no earlier than 2026-09-25 09:00 | Труфанов А; Некрасов А | 10h | 10h |
| 5 | 1.4 | замеры в точках выброса вентиляции с проедставителем | 6h | 2026-09-29 09:00 A | 2026-09-29 16:00 A |  | 100% |  |  |  | start no earlier than 2026-09-29 09:00 | Труфанов А; Некрасов А | 12h | 12h |
| 6 | 1.5 | изготовить переход между прекондиционер и экструдер на 1 линию | 1d? | 2026-09-27 09:00 | 2026-09-27 18:00 |  |  |  | 117.59d |  | start no earlier than 2026-09-27 09:00 | Макаревич А | 8h |  |
| 7 | 1.6 | **замена ленты пролистывателя** | 21d | 2026-09-18 09:00 A | 2026-10-12 18:00 |  | 30% | 14.74d | 106.59d |  |  |  | 11.75h | 3.5h |
| 8 | 1.6.1 | Полная дефектовка пролистывателя, снятие лент/замена | 3h | 2026-09-18 09:00 A | 2026-09-18 12:00 A |  | 100% |  |  |  | start no earlier than 2026-09-18 09:00 | Тимофеев В | 3h | 3h |
| 9 | 1.6.2 | заявка на ремень клиновый для ленты + клей | 30min | 2026-09-18 12:00 A | 2026-09-18 12:30 A | 8 | 100% |  |  |  | start no earlier than 2026-09-18 08:00 | Зорькин В | 0.5h | 0.5h |
| 10 | 1.6.3 | контроль доставки | 15min | 2026-09-25 12:30 | 2026-09-25 12:45 | 9FS+7d |  |  | 117.12d | 10.53d | start no earlier than 2026-09-18 08:00 | Зорькин В | 0.25h |  |
| 11 | 1.6.4 | склеить ремень | 4h | 2026-10-09 09:00 | 2026-10-09 13:00 | 10FS+1d |  |  | 106.59d | 0d | start no earlier than 2026-10-09 09:00 | Тимофеев В | 4h |  |
| 12 | 1.6.5 | замена лент | 4h | 2026-10-12 14:00 | 2026-10-12 18:00 | 11FS+1d |  |  | 106.59d |  | start no earlier than 2026-09-18 08:00 | Тимофеев В | 4h |  |
| 13 | 1.7 | уборка остатков монтажа с рампы | 1h | 2026-09-14 09:00 A | 2026-09-14 10:00 A |  | 100% |  |  |  | start no earlier than 2026-09-14 09:00 | Некрасов А; Тимофеев В; Труфанов А | 3h | 3h |
| 14 | 1.8 | крепить табличку видеонаблюдение в офисе | 15min | 2026-09-14 09:00 A | 2026-09-14 09:15 A |  | 100% |  |  |  | start no earlier than 2026-09-14 09:00 | Тимофеев В | 0.25h | 0.25h |
| 15 | 1.9 | закрыть чердак у Лукаса | 15min | 2026-09-14 09:00 A | 2026-09-14 09:15 A |  | 100% |  |  |  | start no earlier than 2026-09-14 09:00 | Труфанов А; Некрасов А | 0.5h | 0.5h |
| 16 | 1.10 | **ремонт весов смеситель 1 линия** | 1.12d | 2026-09-24 09:00 A | 2026-09-25 10:00 A |  | 100% |  |  |  |  |  | 2h | 2h |
| 17 | 1.10.1 | Реанимировать весы, чтобы показывали. Смесители | 1h | 2026-09-24 09:00 A | 2026-09-24 10:00 A |  | 100% |  |  |  | start no earlier than 2026-09-24 09:00 | Дедов В | 1h | 1h |
| 18 | 1.10.2 | подключить блок питания найти на складе | 1h | 2026-09-25 09:00 A | 2026-09-25 10:00 A |  | 100% |  |  |  | start no earlier than 2026-09-25 08:00 | Бундин В | 1h | 1h |
| 19 | 1.11 | Закрыть каналыгу. На анкера | 2h | 2026-09-15 09:00 A | 2026-09-15 11:00 A |  | 100% |  |  |  | start no earlier than 2026-09-15 09:00 | Бундин В | 2h | 2h |
| 20 | 1.12 | **Дополнительное освещение на Рампе** | 15.14d | 2026-09-11 09:00 A | 2026-09-26 10:05 |  | 85% | 2.29d | 119.46d |  |  |  | 7.17h | 6.08h |
| 21 | 1.12.1 | Прокинуть кабель | 2h | 2026-09-11 09:00 A | 2026-09-11 11:00 A |  | 100% |  |  |  | start no earlier than 2026-09-11 09:00 | Бобренок В | 2h | 2h |
| 22 | 1.12.2 | установить доп светильник на погрузочной рампе | 4h | 2026-09-15 09:00 A | 2026-09-15 13:00 A | 21 | 100% |  |  |  | start no earlier than 2026-09-15 09:00 | Бобренок В | 4h | 4h |
| 23 | 1.12.3 | заявка выключатель | 5min | 2026-09-16 09:00 A | 2026-09-16 09:05 A | 22 | 100% |  |  |  | start no earlier than 2026-09-16 08:00 | Зорькин В | 0.08h | 0.08h |
| 24 | 1.12.4 | контроль | 5min | 2026-09-25 09:00 | 2026-09-25 09:05 | 23FS+7d |  |  | 119.46d | 0d | start no earlier than 2026-09-25 09:00 | Зорькин В | 0.08h |  |
| 25 | 1.12.5 | пожключение выключателя | 1h | 2026-09-26 09:05 | 2026-09-26 10:05 | 24FS+1d |  |  | 119.46d |  | start no earlier than 2026-09-26 09:00 | Бобренок В | 1h |  |
| 26 | 1.13 | востановить светильник отсек выгрузки ГП + установить доп светильник | 4h | 2026-09-09 09:00 A | 2026-09-09 13:00 A |  | 100% |  |  |  | start no earlier than 2026-09-09 09:00 | Бундин В | 4h | 4h |

| ID | WBS | Task | Duration | Start | Finish | Predecessors | Complete | Remaining | Total slack | Free slack | Constraint | Resources | Work | Actual work |
| --- | --- | --- | --- | --- | --- | --- | --- | --- | --- | --- | --- | --- | --- | --- |
| 27 | 1.14 | **реконструкция хранения гидролизатов и маршрут подачи навесок** | 29.19d? | 2026-09-08 09:00 A | 2026-10-09 10:30 |  | 1% | 28.76d? | 108.41d |  |  |  | 52.33h | 1h |
| 28 | 1.14.1 | **перенос системы отопления** | 0.12d | 2026-09-11 09:00 A | 2026-09-11 10:00 A |  | 100% |  |  |  |  |  | 1h | 1h |
| 29 | 1.14.1.1 | посик сварщиков | 1h | 2026-09-11 09:00 A | 2026-09-11 10:00 A |  | 100% |  |  |  | start no earlier than 2026-09-11 09:00 | Домоводов К | 1h | 1h |
| 30 | 1.14.2 | **монтаж доп плащадки** | 9.19d | 2026-09-28 09:00 | 2026-10-09 10:30 |  |  |  | 108.41d |  |  |  | 17.5h |  |
| 31 | 1.14.2.1 | составить чертеж площадки | 1h | 2026-09-28 09:00 | 2026-09-28 10:00 |  |  |  | 108.41d | 0d | start no earlier than 2026-09-28 09:00 | Домоводов К | 1h |  |
| 32 | 1.14.2.2 | заявка | 15min | 2026-09-29 10:00 | 2026-09-29 10:15 | 31FS+1d |  |  | 108.41d | 0d | start no earlier than 2026-09-10 09:00 | Зорькин В | 0.25h |  |
| 33 | 1.14.2.3 | контроль доставки | 15min | 2026-10-06 10:15 | 2026-10-06 10:30 | 32FS+5d |  |  | 108.41d | 0d | start no earlier than 2026-09-08 08:00 | Зорькин В | 0.25h |  |
| 34 | 1.14.2.4 | монтаж | 2d | 2026-10-07 10:30 | 2026-10-09 10:30 | 33FS+1d |  |  | 108.41d |  | start no earlier than 2026-09-28 09:00 | Тимофеев В | 16h |  |
| 35 | 1.14.3 | **монтаж перегородка корридор** | 8.19d | 2026-09-25 09:00 | 2026-10-05 10:30 |  |  |  | 112.41d |  |  |  | 17.5h |  |
| 36 | 1.14.3.1 | составить чертеж площадки | 1h | 2026-09-25 09:00 | 2026-09-25 10:00 |  |  |  | 112.41d | 0d | start no earlier than 2026-09-25 09:00 | Домоводов К | 1h |  |
| 37 | 1.14.3.2 | заявка | 15min | 2026-09-25 10:00 | 2026-09-25 10:15 | 36 |  |  | 112.41d | 0d | start no earlier than 2026-09-10 09:00 | Зорькин В | 0.25h |  |
| 38 | 1.14.3.3 | контроль доставки | 15min | 2026-09-30 10:15 | 2026-09-30 10:30 | 37FS+5d |  |  | 112.41d | 0d | start no earlier than 2026-09-08 08:00 | Зорькин В | 0.25h |  |
| 39 | 1.14.3.4 | монтаж | 2d | 2026-10-01 10:30 | 2026-10-05 10:30 | 38FS+1d |  |  | 112.41d |  | start no earlier than 2026-09-28 09:00 | Тимофеев В | 16h |  |
| 40 | 1.14.4 | **врезка двери в проем на упаковку** | 0.04d | 2026-09-09 09:00 | 2026-09-09 09:20 |  |  |  | 136.55d |  |  |  | 0.33h |  |
| 41 | 1.14.4.1 | планирование с Олегом, как сделана стена | 20min | 2026-09-09 09:00 | 2026-09-09 09:20 |  |  |  | 136.55d |  | start no earlier than 2026-09-09 09:00 | Домоводов К | 0.33h |  |
| 42 | 1.14.5 | замена двери в гидролизатную - | 1d? | 2026-09-08 09:00 | 2026-09-08 18:00 |  |  |  | 136.59d |  | start no earlier than 2026-09-08 08:00 |  |  |  |
| 43 | 1.14.6 | перенос батареи отопления в гидролизатной | 1d? | 2026-09-08 09:00 | 2026-09-08 18:00 |  |  |  | 136.59d |  | start no earlier than 2026-09-08 08:00 |  |  |  |
| 44 | 1.14.7 | демонтаж бетонного отлива/отмостка | 2d | 2026-09-08 09:00 | 2026-09-09 18:00 |  |  |  | 135.59d |  | start no earlier than 2026-09-08 08:00 | Олег | 16h |  |
| 45 | 1.15 | **ревизия парогенератор КАРЧЕР** | 3.03d? | 2026-09-21 09:00 A | 2026-09-24 09:15 A |  | 100% |  |  |  |  |  | 8.5h | 8.5h |
| 46 | 1.15.1 | орг отправить курьера на пнд | 15min | 2026-09-23 09:00 A | 2026-09-23 09:15 A |  | 100% |  |  |  | start no earlier than 2026-09-23 09:00 | Зорькин В | 0.25h | 0.25h |
| 47 | 1.15.2 | контроль доставки | 15min | 2026-09-24 09:00 A | 2026-09-24 09:15 A | 46 | 100% |  |  |  | start no earlier than 2026-09-24 09:00 | Зорькин В | 0.25h | 0.25h |
| 48 | 1.15.3 | монтаж | 1d? | 2026-09-21 09:00 A | 2026-09-21 18:00 A | 47 | 100% |  |  |  | start no earlier than 2026-09-25 09:00 | Тимофеев В | 8h | 8h |
| 49 | 1.16 | **подключить циклоны 1 и 2 линия** | 1.12d | 2026-09-09 09:00 A | 2026-09-10 10:00 A |  | 100% |  |  |  |  |  | 1.17h | 1.17h |
| 50 | 1.16.1 | контроль поставка кабель | 10min | 2026-09-09 09:00 A | 2026-09-09 09:10 A |  | 100% |  |  |  | start no earlier than 2026-09-09 09:00 | Зорькин В | 0.17h | 0.17h |
| 51 | 1.16.2 | монтаж кабеля (временно удлинить от сущестующих концов) | 1h | 2026-09-10 09:00 A | 2026-09-10 10:00 A |  | 100% |  |  |  | start no earlier than 2026-09-10 09:00 | Бундин В | 1h | 1h |

| ID | WBS | Task | Type | Duration | Start | Finish | Predecessors | Complete | Remaining | Total slack | Free slack | Constraint | Resources | Work | Actual work |
| --- | --- | --- | --- | --- | --- | --- | --- | --- | --- | --- | --- | --- | --- | --- | --- |
| 52 | 1.17 | **бактерицидные лампы** |  | 7.12d | 2026-09-09 09:00 A | 2026-09-16 10:00 A |  | 100% |  |  |  |  |  | 3h | 3h |
| 53 | 1.17.1 | замена бактерицидных ламп в коридоре и посмотреть, где не горят |  | 1h | 2026-09-09 09:00 A | 2026-09-09 10:00 A |  | 100% |  |  |  | start no earlier than 2026-09-09 09:00 | Бундин В | 1h | 1h |
| 54 | 1.17.2 | ремонт лампы снятой бундиным с мойки экструдера |  | 1h | 2026-09-16 09:00 A | 2026-09-16 10:00 A |  | 100% |  |  |  | start no earlier than 2026-09-16 09:00 | Бундин В | 1h | 1h |
| 55 | 1.17.3 | ремонт лампы в тамбуре вывоз ГП |  | 1h | 2026-09-16 09:00 A | 2026-09-16 10:00 A |  | 100% |  |  |  | start no earlier than 2026-09-16 09:00 | Бундин В | 1h | 1h |
| 56 | 1.18 | исправить "не возможность открыть" краны фильтр жир 2л |  | 30min | 2026-09-10 09:00 A | 2026-09-10 09:30 A |  | 100% |  |  |  | start no earlier than 2026-09-10 09:00 | Тимофеев В | 0.5h | 0.5h |
| 57 | 1.19 | ремонт силиконовых уплотнений печи на сетке 1 и 2 л |  | 3h? | 2026-09-10 09:00 A | 2026-09-10 12:00 A |  | 100% |  |  |  | start no earlier than 2026-09-10 09:00 | Бундин В | 3h | 3h |
| 58 | 1.20 | **сместить квадропак в сторону охладителя 2л** |  | 20.5d | 2026-09-10 09:00 A | 2026-09-30 13:00 |  | 60% | 8.2d | 115.09d |  |  |  | 20h | 12h |
| 59 | 1.20.1 | отключение / перенгос мехнизмов |  | 3h | 2026-09-10 09:00 A | 2026-09-10 12:00 A |  | 100% |  |  |  | start no earlier than 2026-09-10 09:00 | Некрасов А; Труфанов А | 6h | 6h |
| 60 | 1.20.2 | подключение |  | 3h | 2026-09-11 09:00 A | 2026-09-11 12:00 A |  | 100% |  |  |  | start no earlier than 2026-09-11 09:00 | Некрасов А; Труфанов А | 6h | 6h |
| 61 | 1.20.3 | доработка перил |  | 4h | 2026-09-30 09:00 | 2026-09-30 13:00 |  |  |  | 115.09d |  | start no earlier than 2026-09-30 09:00 | Труфанов А; Некрасов А | 8h |  |
| 62 | 1.21 | **квадропак - сделать силиконовый успокоитель между нория и весы 800*250 шаг шторок 60** |  | 9.25d | 2026-09-25 09:00 | 2026-10-06 11:00 |  |  |  | 111.34d |  |  |  | 2.33h |  |
| 63 | 1.21.1 | заявка прозрачный силикон |  | 10min | 2026-09-25 09:00 | 2026-09-25 09:10 |  |  |  | 113.3d | 0d | start no earlier than 2026-09-25 09:00 | Зорькин В | 0.17h |  |
| 64 | 1.21.2 | доставка контроль |  | 10min | 2026-10-02 09:10 | 2026-10-02 09:20 | 63FS+7d |  |  | 113.3d | 1.96d | start no earlier than 2026-09-23 08:00 | Зорькин В | 0.17h |  |
| 65 | 1.21.3 | сборка |  | 2h | 2026-10-06 09:00 | 2026-10-06 11:00 | 64 |  |  | 111.34d |  | start no earlier than 2026-10-06 09:00 | Тимофеев В | 2h |  |
| 66 | 1.22 | квадропак - ремонт люфта штанги нажима роликов открытия захватов на станции №1 |  | 4h | 2026-09-30 09:00 | 2026-09-30 13:00 |  |  |  | 115.09d |  | start no earlier than 2026-09-30 09:00 | Тимофеев В | 4h |  |
| 67 | 1.23 | квадропак - кронштейн пневовстряхивателя - востановить резтбу сквозную |  | 1h | 2026-09-30 09:00 | 2026-09-30 10:00 |  |  |  | 115.47d |  | start no earlier than 2026-09-30 09:00 | Тимофеев В | 1h |  |
| 68 | 1.24 | Ревизия утечек воздуха на квадропаке (важно проверить пневмораспределителях) и вакуумную систему (если работают, отменяем задание) | manual | 2h | 2026-09-23 09:00 A | 2026-09-23 11:00 A |  | 100% |  |  |  | start no earlier than 2026-09-23 09:00 | Тимофеев В | 2h | 2h |
| 69 | 1.25 | Комплексное ТО квадропака, проверка всех соединений, протяжка болтов на всех узлах | manual | 2h | 2026-09-23 09:00 A | 2026-09-23 11:00 A |  | 100% |  |  |  | start no earlier than 2026-09-23 09:00 | Тимофеев В | 2h | 2h |
| 70 | 1.26 | Сделать основную кнопку на НОТИСЕ, чтоб срабатывало от нее, а не от блока управления (схему взять у нас в кабинете) | manual | 1h | 2026-09-22 09:00 A | 2026-09-22 10:00 A |  | 100% |  |  |  | start no earlier than 2026-09-22 09:00 | Дедов В | 1h | 1h |
| 71 | 1.27 | Убрать все кабеля на полу в зоне фасовки, теко-нотис (кабельный менеджмент) |  | 2h | 2026-09-10 09:00 A | 2026-09-10 11:00 A |  | 100% |  |  |  | start no earlier than 2026-09-10 09:00 | Бундин В | 2h | 2h |
| 72 | 1.28 | Клемная коробка на жирах сделать, сейчас вся висит на хомутах 2 линия |  | 1h | 2026-09-07 09:00 A | 2026-09-07 10:00 A |  | 100% |  |  |  | start no earlier than 2026-09-05 09:00 | Дедов В | 1h | 1h |
| 73 | 1.29 | Ошибка на баке жиротопки 2 линия Err.4 /разобраться и устранить причину |  | 1h | 2026-09-04 09:00 A | 2026-09-04 10:00 A |  | 100% |  |  |  | start no earlier than 2026-09-04 09:00 | Бобренок В | 1h | 1h |
| 74 | 1.30 | Установить новые газлифты, которые получил Бобренок на жиротопку 2 этаж |  | 2h | 2026-09-07 09:00 A | 2026-09-07 11:00 A |  | 100% |  |  |  | start no earlier than 2026-09-07 09:00 | Тимофеев В | 2h | 2h |
| 75 | 1.31 | **Не работают роль ставни на жирах, не стопоряться сделать/устранить неисправность** |  | 20.02d | 2026-09-09 09:00 A | 2026-09-29 09:10 |  | 98% | 0.4d | 116.57d |  |  |  | 8.33h | 8.17h |
| 76 | 1.31.1 | Вызвать подрядчика/контроль |  | 10min | 2026-09-09 09:00 A | 2026-09-09 09:10 A |  | 100% |  |  |  | start no earlier than 2026-09-09 09:00 | Зорькин В | 0.17h | 0.17h |
| 77 | 1.31.2 | получить счет на ремонт |  | 1d | 2026-09-09 09:10 A | 2026-09-10 09:10 A | 76 | 100% |  |  |  | start no earlier than 2026-09-08 09:00 | Зорькин В | 8h | 8h |
| 78 | 1.31.3 | согласовать с подрядчиком дату ремонта |  | 10min | 2026-09-29 09:00 | 2026-09-29 09:10 | 77 |  |  | 116.57d |  | start no earlier than 2026-09-29 09:00 | Зорькин В | 0.17h |  |
| 79 | 1.32 | закреить отбойник корридор навесок (заанкерить) |  | 1h | 2026-09-03 09:00 A | 2026-09-03 10:00 A |  | 100% |  |  |  | start no earlier than 2026-09-03 08:00 | Бобренок В | 1h | 1h |
| 80 | 1.33 | Переподключение кондиционера срежима кондиционера на автоматический |  | 15min | 2026-09-02 09:00 A | 2026-09-02 09:15 A |  | 100% |  |  |  | start no earlier than 2026-09-02 09:00 | Бобренок В | 0.25h | 0.25h |
| 81 | 1.34 | Замена редуктора поворотного стола |  | 1h | 2026-09-02 09:00 A | 2026-09-02 10:00 A |  | 100% |  |  |  | start no earlier than 2026-09-02 09:00 | Бобренок В | 1h | 1h |
| 82 | 1.35 | Программирование частотника теко 0,4 привод смещения ленты |  | 2h | 2026-09-02 09:00 A | 2026-09-02 11:00 A |  | 100% |  |  |  | start no earlier than 2026-09-02 09:00 | Тимофеев В | 2h | 2h |
| 83 | 1.36 | Прозвонить кабель паллетных весов ошибка Error 10 |  | 1h | 2026-09-07 09:00 A | 2026-09-07 10:00 A |  | 100% |  |  |  | start no earlier than 2026-09-05 09:00 | Дедов В | 1h | 1h |
| 84 | 1.37 | Замена подшипников на ножевом узле |  | 2h | 2026-09-01 09:00 A | 2026-09-01 11:00 A |  | 100% |  |  |  | start no earlier than 2026-09-01 09:00 | Бундин В | 2h | 2h |
| 85 | 1.38 | Замена насоса на водяной рубашке жиротопке 2 этаж |  | 2h | 2026-09-01 09:00 A | 2026-09-01 11:00 A |  | 100% |  |  |  | start no earlier than 2026-09-01 09:00 | Бундин В | 2h | 2h |
| 86 | 1.39 | Замена контактора 1 линия 2 зона экструдера |  | 1h | 2026-09-01 09:00 A | 2026-09-01 10:00 A |  | 100% |  |  |  | start no earlier than 2026-09-01 09:00 | Бундин В | 1h | 1h |
| 87 | 1.40 | Редуктор смесителя 1 линия, собрать информацию, что не так, что нужно сделать |  | 30min | 2026-09-02 09:00 A | 2026-09-02 09:30 A |  | 100% |  |  |  | start no earlier than 2026-09-02 09:00 | Тимофеев В | 0.5h | 0.5h |
| 88 | 1.41 | Ремонт мухобойки 1 цех в корридоре завоза навесок |  | 1h | 2026-09-01 09:00 A | 2026-09-01 10:00 A |  | 100% |  |  |  | start no earlier than 2026-09-01 09:00 | Труфанов А | 1h | 1h |
| 89 | 1.42 | капает с кондиционера ближе к жировику (устранить) |  | 2h | 2026-08-31 09:00 A | 2026-08-31 11:00 A |  | 100% |  |  |  | start no earlier than 2026-08-31 09:00 | Бундин В; Тимофеев В | 4h | 4h |
| 90 | 1.43 | отвезти внутренний блок с 1 цеха на синий склад | manual | 1h | 2026-08-30 09:00 A | 2026-08-30 10:00 A |  | 100% |  |  |  | start no earlier than 2026-08-30 09:00 | Бундин В | 1h | 1h |
| 91 | 1.44 | чистка фильтра кондиционера между печками | manual | 1h | 2026-08-31 09:00 A | 2026-08-31 10:00 A |  | 100% |  |  |  | start no earlier than 2026-08-31 09:00 | Бундин В | 1h | 1h |
| 92 | 1.45 | ревизия приточной вентиляции (протяжка контактов и т.д.) | manual | 3h | 2026-08-31 09:00 A | 2026-08-31 12:00 A |  | 100% |  |  |  | start no earlier than 2026-08-31 09:00 | Дедов В | 3h | 3h |
| 93 | 1.46 | прикрутить лоток между барабанами, чтобы не бил о лопасти 1 линия | manual | 1h | 2026-08-30 09:00 A | 2026-08-30 10:00 A |  | 100% |  |  |  | start no earlier than 2026-08-30 09:00 | Бундин В | 1h | 1h |
| 94 | 1.47 | улитка на подиуме за цехом, прикрутить отвод в бок (отвод под подиумом) | manual | 1h | 2026-08-31 09:00 A | 2026-08-31 10:00 A |  | 100% |  |  |  | start no earlier than 2026-08-31 09:00 | Бундин В | 1h | 1h |
| 95 | 1.48 | течет вода с поломоечной машинки - разобраться | manual | 2h | 2026-08-31 09:00 A | 2026-08-31 11:00 A |  | 100% |  |  |  | start no earlier than 2026-08-31 09:00 | Дедов В | 2h | 2h |

| ID | WBS | Task | Duration | Start | Finish | Predecessors | Complete | Remaining | Total slack | Free slack | Constraint | Resources | Work | Actual work |
| --- | --- | --- | --- | --- | --- | --- | --- | --- | --- | --- | --- | --- | --- | --- |
| 96 | 1.49 | **почистить шнек сухого гидрализата (1 линия)** | 0.12d | 2026-08-28 08:00 A | 2026-08-28 10:00 A |  | 100% |  |  |  |  | Бобренок В | 3h | 3h |
| 97 | 1.49.1 | замена пошипников | 1h | 2026-08-28 08:00 A | 2026-08-28 10:00 A |  | 100% |  |  |  | start no earlier than 2026-08-28 08:00 | Тимофеев В; Некрасов А | 2h | 2h |
| 98 | 1.50 | замена фильтров на приточке | 1h | 2026-08-27 09:00 A | 2026-08-27 10:00 A |  | 100% |  |  |  | start no earlier than 2026-08-27 09:00 | Дедов В | 1h | 1h |
| 99 | 1.51 | **продумать как сделать герметичную крышку на смесителе сухого гидрализата** | 35.25d | 2026-08-27 09:00 A | 2026-10-06 11:00 |  | 57% | 15.11d | 111.34d |  |  |  | 20h | 12h |
| 100 | 1.51.1 | печать уплотненителей крышек | 4h | 2026-09-28 09:00 | 2026-09-28 13:00 |  |  |  | 116.84d | 5.5d | start no earlier than 2026-09-28 09:00 | Домоводов К | 4h |  |
| 101 | 1.51.2 | изготовить крышку (расскажу по телефону) | 4h | 2026-08-27 09:00 A | 2026-08-27 13:00 A |  | 100% |  |  |  | start no earlier than 2026-08-27 09:00 | Бобренок В; Шуранов Ю | 8h | 8h |
| 102 | 1.51.3 | изготовить крышку для 2 линии (как сделал Слава) | 4h | 2026-09-01 09:00 A | 2026-09-01 13:00 A |  | 100% |  |  |  | start no earlier than 2026-09-01 09:00 | Макаревич А | 4h | 4h |
| 103 | 1.51.4 | установка на струбцинах с уплотнителями | 2h | 2026-10-06 09:00 | 2026-10-06 11:00 | 100 |  |  | 111.34d |  | start no earlier than 2026-10-06 09:00 | Тимофеев В; Домоводов К | 4h |  |
| 104 | 1.52 | **метал от тенов печи, устранить причину** | 15.38d? | 2026-08-24 09:00 A | 2026-09-11 12:00 A |  | 100% |  |  |  |  |  | 5.42h | 5.42h |
| 105 | 1.52.1 | выяснить сгорел тен русский или китайский (будет ночью остановка) | 15min | 2026-08-27 09:00 A | 2026-08-27 09:15 A |  | 100% |  |  |  | start no earlier than 2026-08-27 09:00 | Бобренок В | 0.25h | 0.25h |
| 106 | 1.52.2 | вскрыть 2 зону и посмотреть какой тен (мойка) | 1h | 2026-08-31 09:00 A | 2026-08-31 10:00 A |  | 100% |  |  |  | start no earlier than 2026-09-02 09:00 | Некрасов А | 1h | 1h |
| 107 | 1.52.3 | осмотр состояния тенов/ планирование замены | 10min | 2026-08-27 09:00 A | 2026-08-27 09:10 A |  | 100% |  |  |  | start no earlier than 2026-08-27 09:00 | Бобренок В | 0.17h | 0.17h |
| 108 | 1.52.4 | выяснить статус поставки тенов из китая | 1h | 2026-08-24 09:00 A | 2026-08-24 10:00 A |  | 100% |  |  |  | start no earlier than 2026-08-24 09:00 | Шуранов Ю | 1h | 1h |
| 109 | 1.52.5 | замена заброкованных осмотром тенов | 3h? | 2026-09-11 09:00 A | 2026-09-11 12:00 A |  | 100% |  |  |  | start no earlier than 2026-09-11 09:00 | Тимофеев В | 3h | 3h |
| 110 | 1.53 | замена плата 485 в контроллере 2 линия | 1h | 2026-08-21 09:00 A | 2026-08-21 10:00 A |  | 100% |  |  |  | start no earlier than 2026-08-21 09:00 | Дедов В | 1h | 1h |
| 111 | 1.54 | перемонтаж частотный привод сух гидролизат | 2h | 2026-09-02 09:00 A | 2026-09-02 11:00 A |  | 100% |  |  |  | start no earlier than 2026-09-04 09:00 | Некрасов А; Дедов В | 4h | 4h |
| 112 | 1.55 | поменять светильник где вывозят готовую продукцию (с люлки) | 2h | 2026-08-31 09:00 A | 2026-08-31 11:00 A |  | 100% |  |  |  | start no earlier than 2026-08-31 09:00 | Тимофеев В; Бундин В | 4h | 4h |
| 113 | 1.56 | на нотис настроить кнопку, чтобы работала в цикле | 1h | 2026-08-20 09:00 A | 2026-08-20 10:00 A |  | 100% |  |  |  | start no earlier than 2026-08-20 09:00 | Дедов В | 1h | 1h |
| 114 | 1.57 | изготовление герметичной крышки под мойкой экструдера (объясню по телефону) занкрепить на анкера | 2h | 2026-08-19 08:00 A | 2026-08-19 11:00 A |  | 100% |  |  |  | start no earlier than 2026-08-19 08:00 | Бобренок В | 2h | 2h |
| 115 | 1.58 | **проверка пылесоса, почему не стартует (в слесарке)** | 1d? | 2026-08-25 09:00 A | 2026-08-25 18:00 A |  | 100% |  |  |  |  | Бобренок В | 16h | 16h |
| 116 | 1.58.1 | заказать двигатель и выяснить на гарантии он или нет | 1d? | 2026-08-25 09:00 A | 2026-08-25 18:00 A |  | 100% |  |  |  | start no earlier than 2026-08-25 08:00 | Шуранов Ю | 8h | 8h |
| 117 | 1.59 | ремонт свет в раздевалке | 30min | 2026-08-14 09:00 A | 2026-08-14 09:30 A |  | 100% |  |  |  | start no earlier than 2026-08-14 09:00 | Бундин В | 0.5h | 0.5h |
| 118 | 1.60 | стиральная машинка проверка насоса слива, разборка, фото шильдик. Не качает. | 2h | 2026-08-15 09:00 A | 2026-08-17 11:00 A |  | 100% |  |  |  | start no earlier than 2026-08-15 09:00 | Бундин В | 2h | 2h |
| 119 | 1.61 | **настройка пробники на толстую цветную пленку** | 9.38d? | 2026-08-14 09:00 A | 2026-08-27 12:00 A |  | 100% |  |  |  |  |  | 25.25h | 25.25h |
| 120 | 1.61.1 | тест пленки на пробнике с Луговских В в 11 00 | 1h | 2026-08-14 09:00 A | 2026-08-14 10:00 A |  | 100% |  |  |  | start no earlier than 2026-08-14 09:00 | Тимофеев В | 1h | 1h |
| 121 | 1.61.2 | установить протяжной ролик к турбе от ТЕКО 1.5 с синего,снять с синего примерка | 2h | 2026-08-17 09:00 A | 2026-08-17 11:00 A |  | 100% |  |  |  | start no earlier than 2026-08-17 09:00 | Тимофеев В | 2h | 2h |
| 122 | 1.61.3 | настройка пробника с режимом фотометки | 1h | 2026-08-27 09:00 A | 2026-08-27 10:00 A |  | 100% |  |  |  | start no earlier than 2026-08-27 09:00 | Дедов В | 1h | 1h |
| 123 | 1.61.4 | получить пневмоцилиндр | 15min | 2026-08-20 09:00 A | 2026-08-20 09:15 A |  | 100% |  |  |  | start no earlier than 2026-08-20 09:00 | Тимофеев В | 0.25h | 0.25h |
| 124 | 1.61.5 | изготовление крепления вспомогательной протяжки | 6h | 2026-08-21 09:00 A | 2026-08-21 16:00 A |  | 100% |  |  |  | start no earlier than 2026-08-21 09:00 | Тимофеев В | 6h | 6h |
| 125 | 1.61.6 | подключение частотника через реле от двигателя протяжки (спросить Константина) | 1d? | 2026-08-25 09:00 A | 2026-08-25 18:00 A |  | 100% |  |  |  | start no earlier than 2026-08-25 08:00 | Бундин В | 8h | 8h |
| 126 | 1.61.7 | настройка частотника для работы пробника | 3h | 2026-08-27 09:00 A | 2026-08-27 12:00 A |  | 100% |  |  |  | start no earlier than 2026-08-27 09:00 | Тимофеев В; Шуранов Ю | 6h | 6h |
| 127 | 1.61.8 | жалобы, что пробники бьют периодически током- проверить соединения, контакты и т.д. | 1h | 2026-08-26 08:00 A | 2026-08-26 10:00 A |  | 100% |  |  |  | start no earlier than 2026-08-26 08:00 | Бобренок В | 1h | 1h |
| 128 | 1.62 | настройка параметров ЧП сухой ГДЗ сбиты, переставлен с линии 2. Снял Слава, найти. Настройка в птц | 15min | 2026-08-20 09:00 A | 2026-08-20 09:15 A |  | 100% |  |  |  | start no earlier than 2026-08-20 09:00 | Дедов В | 0.25h | 0.25h |

| ID | WBS | Task | Type | Duration | Start | Finish | Predecessors | Complete | Remaining | Total slack | Free slack | Constraint | Resources | Work | Actual work |
| --- | --- | --- | --- | --- | --- | --- | --- | --- | --- | --- | --- | --- | --- | --- | --- |
| 129 | 1.63 | **ТЕКО ремонт кнопки, которую снял Бобренок В , вернуть то что снял с 3ц** |  | 19.12d | 2026-08-13 09:00 A | 2026-09-08 10:00 A |  | 100% |  |  |  |  |  | 2.75h | 2.75h |
| 130 | 1.63.1 | осмотр |  | 30min | 2026-08-13 09:00 A | 2026-08-13 09:30 A |  | 100% |  |  |  | start no earlier than 2026-08-13 09:00 | Домоводов К | 0.5h | 0.5h |
| 131 | 1.63.2 | заявка в ТЕКО платы |  | 30min | 2026-08-18 09:00 A | 2026-08-18 09:30 A | 130 | 100% |  |  |  | start no earlier than 2026-08-18 09:00 | Зорькин В | 0.5h | 0.5h |
| 132 | 1.63.3 | контроль поставки |  | 15min | 2026-09-04 09:00 A | 2026-09-04 09:15 A | 131FS+10d | 100% |  |  |  | start no earlier than 2026-09-04 09:00 | Зорькин В | 0.25h | 0.25h |
| 133 | 1.63.4 | монтаж платы на место |  | 1h | 2026-09-08 09:00 A | 2026-09-08 10:00 A | 132FS+1d | 100% |  |  |  | start no earlier than 2026-09-09 09:00 | Тимофеев В | 1h | 1h |
| 134 | 1.63.5 | Вернуть голову с восстановленной клавиатурой на НОТИС в 3 цех |  | 30min | 2026-09-08 09:00 A | 2026-09-08 09:30 A |  | 100% |  |  |  | start no earlier than 2026-09-09 09:00 | Тимофеев В | 0.5h | 0.5h |
| 135 | 1.64 | установить вент решетки на трассу кондиционера |  | 30min | 2026-08-12 09:00 A | 2026-08-12 09:30 A |  | 100% |  |  |  | start no earlier than 2026-08-12 09:00 | Труфанов А; Некрасов А | 1h | 1h |
| 136 | 1.65 | течь сливной трубы кондиционара править трассу |  | 2h | 2026-08-12 09:00 A | 2026-08-12 11:00 A |  | 100% |  |  |  | start no earlier than 2026-08-12 09:00 | Труфанов А; Некрасов А | 4h | 4h |
| 137 | 1.66 | слить конденсат и чистка фильтров, продуть радиаторы компрессора | manual | 2h | 2026-08-09 09:00 A | 2026-08-09 11:00 A |  | 100% |  |  |  | start no earlier than 2026-08-09 09:00 | Бундин В | 2h | 2h |
| 138 | 1.67 | заменить камеру над квадропаком (слева) -камера у нас в слесарке, взять в помощь оператора | manual | 1h | 2026-08-09 09:00 A | 2026-08-09 10:00 A |  | 100% |  |  |  | start no earlier than 2026-08-09 09:00 | Бундин В | 1h | 1h |
| 139 | 1.68 | дверь тяжело открывается в гидрализаторную (попробовать поправить, задевает металл-металл) |  | 1h | 2026-08-06 09:00 A | 2026-08-06 10:00 A |  | 100% |  |  |  | start no earlier than 2026-08-06 08:00 | Труфанов А | 1h | 1h |
| 140 | 1.69 | заменить плафон в душе | manual | 1h | 2026-08-06 09:00 A | 2026-08-06 10:00 A |  | 100% |  |  |  | start no earlier than 2026-08-06 09:00 | Бундин В | 1h | 1h |
| 141 | 1.70 | ТО пробники и Теко 0,4 (чистка тен, ножей, смазка) |  | 4h | 2026-08-05 08:00 A | 2026-08-05 13:00 A |  | 100% |  |  |  | start no earlier than 2026-08-05 08:00 | Макаревич А | 4h | 4h |
| 142 | 1.71 | **палетообмостчик монтаж в 1ц** |  | 45.38d | 2026-08-12 09:00 A | 2026-10-05 12:00 |  | 29% | 32.03d | 112.22d |  |  |  | 7.25h | 1.25h |
| 143 | 1.71.1 | получить договор + счет |  | 1h | 2026-08-12 09:00 A | 2026-08-12 10:00 A |  | 100% |  |  |  | start no earlier than 2026-08-12 09:00 | Зорькин В | 1h | 1h |
| 144 | 1.71.2 | **согласвоание договор** |  | 2.89d | 2026-08-12 10:00 A | 2026-08-17 09:05 A | 143 | 100% |  |  |  |  |  | 0.17h | 0.17h |
| 145 | 1.71.2.1 | передать Маше |  | 5min | 2026-08-12 10:00 A | 2026-08-12 10:05 A |  | 100% |  |  |  | start no earlier than 2026-08-12 09:00 | Домоводов К | 0.08h | 0.08h |
| 146 | 1.71.2.2 | контроль |  | 5min | 2026-08-17 09:00 A | 2026-08-17 09:05 A | 145FS+3d | 100% |  |  |  | start no earlier than 2026-08-17 09:00 | Домоводов К | 0.08h | 0.08h |
| 147 | 1.71.3 | оплата подать счет | milestone | 0d | 2026-08-12 09:00 A | 2026-08-12 09:00 A |  | 100% |  |  |  | start no earlier than 2026-08-12 09:00 | Домоводов К |  |  |
| 148 | 1.71.4 | доставка конетроль |  | 5min | 2026-09-01 09:00 A | 2026-09-01 09:05 A |  | 100% |  |  |  | start no earlier than 2026-09-01 09:00 | Зорькин В | 0.08h | 0.08h |
| 149 | 1.71.5 | монтаж |  | 3h | 2026-10-05 09:00 | 2026-10-05 12:00 |  |  |  | 112.22d |  | start no earlier than 2026-10-05 09:00 | Некрасов А; Труфанов А | 6h |  |
| 150 | 1.72 | **замена сетка печи линия 1** |  | 44.09d? | 2026-08-12 09:00 A | 2026-10-02 09:45 |  | 5% | 41.71d? | 113.5d |  |  |  | 9.5h | 0.75h |
| 151 | 1.72.1 | замерить параметры сетки |  | 15min | 2026-08-12 09:00 A | 2026-08-12 09:15 A |  | 100% |  |  |  | start no earlier than 2026-08-12 09:00 | Домоводов К; Тимофеев В | 0.5h | 0.5h |
| 152 | 1.72.2 | получить счет на сетку КИТАЙ |  | 15min | 2026-08-17 09:00 A | 2026-08-17 09:15 A | 151 | 100% |  |  |  | start no earlier than 2026-08-17 09:00 | Зорькин В | 0.25h | 0.25h |
| 153 | 1.72.3 | контроль оплата | milestone | 0d | 2026-08-21 09:00 A | 2026-08-21 09:00 A | 152FS+2d | 100% |  |  |  | start no earlier than 2026-08-21 09:00 | Зорькин В |  |  |
| 154 | 1.72.4 | контроль доставки |  | 15min | 2026-09-30 09:00 | 2026-09-30 09:15 | 153FS+30d |  |  | 113.5d | 0d | start no earlier than 2026-09-30 09:00 | Зорькин В | 0.25h |  |
| 155 | 1.72.5 | приемка |  | 30min | 2026-09-30 09:15 | 2026-09-30 09:45 | 154 |  |  | 113.5d | 0d | start no earlier than 2026-08-10 08:00 | Зорькин В | 0.5h |  |
| 156 | 1.72.6 | замена |  | 1d? | 2026-10-01 09:45 | 2026-10-02 09:45 | 155FS+1d |  |  | 113.5d |  | start no earlier than 2026-09-26 09:00 | Тимофеев В | 8h |  |

| ID | WBS | Task | Type | Duration | Start | Finish | Predecessors | Complete | Remaining | Actual finish | Total slack | Constraint | Resources | Work | Actual work |
| --- | --- | --- | --- | --- | --- | --- | --- | --- | --- | --- | --- | --- | --- | --- | --- |
| 157 | 1.73 | **зависает диспелей на расходомере 2л** |  | 43.06d | 2026-08-11 09:00 A | 2026-09-30 09:30 |  | 82% | 7.83d |  | 115.53d |  |  | 2.75h | 2.25h |
| 158 | 1.73.1 | контроль поставки |  | 15min | 2026-08-11 09:00 A | 2026-08-11 09:15 A |  | 100% |  |  |  | start no earlier than 2026-08-11 09:00 | Домоводов К | 0.25h | 0.25h |
| 159 | 1.73.2 | замена кабель к монитору |  | 30min | 2026-08-19 09:00 A | 2026-08-19 09:30 A | 158 | 100% |  |  |  | start no earlier than 2026-08-19 09:00 | Домоводов К | 0.5h | 0.5h |
| 160 | 1.73.3 | объеденить минус шину контроллера с нулевым проводом оборудования ч/з резистор 10 Ом |  | 30min | 2026-09-30 09:00 | 2026-09-30 09:30 |  |  |  |  | 115.53d | start no earlier than 2026-09-30 09:00 | Дедов В | 0.5h |  |
| 161 | 1.73.4 | замена кабель от ЧП к контроллеру на экранированный |  | 30min | 2026-08-24 09:00 A | 2026-08-24 09:30 A |  | 100% |  |  |  | start no earlier than 2026-08-24 09:00 | Домоводов К | 0.5h | 0.5h |
| 162 | 1.73.5 | замена блок питания 5в |  | 1h | 2026-08-13 09:00 A | 2026-08-13 10:00 A |  | 100% |  |  |  | start no earlier than 2026-08-13 09:00 | Труфанов А | 1h | 1h |
| 163 | 1.74 | подключить розетку на правой ноге квадропака (отключить квадропак на 5 минут) |  | 2h | 2026-08-11 09:00 A | 2026-08-11 11:00 A |  | 100% |  |  |  | start no earlier than 2026-08-11 09:00 | Бобренок В | 2h | 2h |
| 164 | 1.75 | **перенос вентилятор охладителя линия2 в реверс, убрать шкаф** |  | 24.12d | 2026-08-18 09:00 A | 2026-09-16 10:00 A |  | 100% |  |  |  |  |  | 38.25h | 38.25h |
| 165 | 1.75.1 | проектирование рамы |  | 2d | 2026-08-19 09:00 A | 2026-08-20 18:00 A |  | 100% |  |  |  | start no earlier than 2026-08-19 09:00 | Зорькин В | 16h | 16h |
| 166 | 1.75.2 | чертеж рамы под вентилятор |  | 2h | 2026-08-18 09:00 A | 2026-08-18 11:00 A |  | 100% |  |  |  | start no earlier than 2026-08-18 09:00 | Зорькин В; Домоводов К | 4h | 4h |
| 167 | 1.75.3 | заявка вент фитинги |  | 1h | 2026-08-21 09:00 A | 2026-08-21 10:00 A | 166 | 100% |  |  |  | start no earlier than 2026-08-21 09:00 | Зорькин В | 1h | 1h |
| 168 | 1.75.4 | конроль поставки |  | 15min | 2026-09-09 09:00 A | 2026-09-09 09:15 A | 167FS+10d | 100% |  |  |  | start no earlier than 2026-09-09 09:00 | Зорькин В | 0.25h | 0.25h |
| 169 | 1.75.5 | сборка рама |  | 4h | 2026-09-07 09:00 A | 2026-09-07 13:00 A |  | 100% |  |  |  | start no earlier than 2026-09-07 09:00 | Некрасов А; Труфанов А | 8h | 8h |
| 170 | 1.75.6 | модернизация венттилятора/монтаж вентилляции |  | 4h | 2026-09-11 09:00 A | 2026-09-11 13:00 A | 169 | 100% |  |  |  | start no earlier than 2026-09-11 09:00 | Некрасов А; Труфанов А | 8h | 8h |
| 171 | 1.75.7 | Подключение улитки, монтаж щитка к стене |  | 1h | 2026-09-16 09:00 A | 2026-09-16 10:00 A |  | 100% |  |  |  | start no earlier than 2026-09-16 09:00 | Макаревич А | 1h | 1h |
| 172 | 1.76 | **ревизия красного смесителя 2 линия (просыпается мука)** |  | 34.03d | 2026-08-17 09:00 A | 2026-09-25 09:15 |  | 92% | 2.62d |  | 120.56d |  |  | 3.25h | 3h |
| 173 | 1.76.1 | подтянуть торцевое уплотнение смесителя |  | 30min | 2026-08-17 09:00 A | 2026-08-17 09:30 A |  | 100% |  |  |  | start no earlier than 2026-08-17 09:00 | Бундин В | 0.5h | 0.5h |
| 174 | 1.76.2 | запрос штатное уплотнеие у производителя / заявка |  | 30min | 2026-08-19 09:00 A | 2026-08-19 09:30 A |  | 100% |  |  |  | start no earlier than 2026-08-19 09:00 | Шуранов Ю | 0.5h | 0.5h |
| 175 | 1.76.3 | контроль поставки уплотнение торцевое вала |  | 15min | 2026-09-25 09:00 | 2026-09-25 09:15 | 174FS+5d |  |  |  | 120.56d | start no earlier than 2026-09-25 09:00 | Зорькин В | 0.25h |  |
| 176 | 1.76.4 | замена |  | 2h | 2026-09-01 09:00 A | 2026-09-01 11:00 A | 175FS+1d | 100% |  |  |  | start no earlier than 2026-09-04 09:00 | Тимофеев В | 2h | 2h |
| 177 | 1.77 | шум зл двигателя 2 линия / смазка |  | 1h | 2026-08-10 08:00 A | 2026-08-10 10:00 A |  | 100% |  |  |  | start no earlier than 2026-08-10 08:00 | Тимофеев В | 1h | 1h |
| 178 | 1.78 | натяжка транспортер №2 линия 2 |  | 2h | 2026-08-12 09:00 A | 2026-08-12 11:00 A |  | 100% |  |  |  | start no earlier than 2026-08-12 09:00 | Тимофеев В | 2h | 2h |
| 179 | 1.79 | монтаж- подключение внутреннего блока кондиционера |  | 2h | 2026-08-05 09:00 A | 2026-08-05 11:00 A |  | 100% |  |  |  | start no earlier than 2026-08-05 09:00 | Труфанов А; Тимофеев В | 4h | 4h |
| 180 | 1.80 | **теко 0,4 -восстановить или заменить блок для тепловухи** |  | 1.12d? | 2026-08-04 09:00 A | 2026-08-05 10:00 |  | 100% |  | 2026-08-05 18:00 |  |  | Макаревич А | 17h | 17h |
| 181 | 1.80.1 | проверить подключение транспортера и тепловуху |  | 1d? | 2026-08-05 09:00 A | 2026-08-05 18:00 A |  | 100% |  |  |  | start no earlier than 2026-08-05 09:00 | Шуранов Ю | 8h | 8h |
| 182 | 1.81 | замена перегоревших светильников, монтаж доп. Светильников (Шуранов- покажу) |  | 4h | 2026-08-05 09:00 A | 2026-08-05 13:00 A |  | 100% |  |  |  | start no earlier than 2026-08-12 09:00 | Труфанов А; Тимофеев В | 8h | 8h |
| 183 | 1.82 | включить мухоловку 1 линия экструдер | manual | 0.5h | 2026-08-02 09:00 A | 2026-08-02 09:30 A |  | 100% |  |  |  | start no earlier than 2026-08-02 09:00 | Бобренок В | 0.5h | 0.5h |
| 184 | 1.83 | пропадает питание на весах смесителя 2 линия- проверить | manual | 1h | 2026-08-01 09:00 A | 2026-08-01 10:00 A |  | 100% |  |  |  | start no earlier than 2026-08-01 09:00 | Бундин В | 1h | 1h |
| 185 | 1.84 | эксперимент с лейкой жиры |  | 2h | 2026-08-06 09:00 A | 2026-08-06 11:00 A |  | 100% |  |  |  | start no earlier than 2026-08-07 09:00 | Тимофеев В | 2h | 2h |
| 186 | 1.85 | камера над компрессором снять и поменять (камеры у нас в кабинете) |  | 1h | 2026-08-03 09:00 A | 2026-08-03 10:00 A |  | 100% |  |  |  | start no earlier than 2026-08-03 09:00 | Макаревич А; Тимофеев В | 2h | 2h |
| 187 | 1.86 | на мезонине смотрит на квадропак, поменять и сделать чуть ниже обзор |  | 1h | 2026-08-03 09:00 A | 2026-08-03 10:00 A |  | 100% |  |  |  | start no earlier than 2026-08-03 09:00 | Макаревич А; Тимофеев В | 2h | 2h |
| 188 | 1.87 | камера 1 линия повернуть чуть правее и приподнять |  | 1h | 2026-08-03 09:00 A | 2026-08-03 10:00 A |  | 100% |  |  |  | start no earlier than 2026-08-03 09:00 | Макаревич А; Тимофеев В | 2h | 2h |
| 189 | 1.88 | камера на углу, где вывозят готовую продукцию с люльки поменять (камеры у нас в кабинете) |  | 2h | 2026-08-03 09:00 A | 2026-08-03 11:00 A |  | 100% |  |  |  | start no earlier than 2026-08-03 09:00 | Макаревич А; Тимофеев В | 4h | 4h |
| 190 | 1.89 | повесить камеру над входом в фасовку, чтобы смотрела на коридор и как обрабатывают руки, монтаж кабеля |  | 3h | 2026-08-03 09:00 A | 2026-08-03 12:00 A |  | 100% |  |  |  | start no earlier than 2026-08-03 09:00 | Макаревич А; Тимофеев В | 6h | 6h |

| ID | WBS | Task | Type | Duration | Start | Finish | Predecessors | Complete | Remaining | Total slack | Free slack | Constraint | Resources | Work | Actual work |
| --- | --- | --- | --- | --- | --- | --- | --- | --- | --- | --- | --- | --- | --- | --- | --- |
| 191 | 1.90 | **снять камеру зона экструдера и повесить на жирах со стороны экструдера, монтаж кабель** |  | 0.12d | 2026-09-09 09:00 A | 2026-09-09 10:00 A |  | 100% |  |  |  |  |  | 2h | 2h |
| 192 | 1.90.1 | на мойке попробовать снять камеру |  | 1h | 2026-09-09 09:00 A | 2026-09-09 10:00 A |  | 100% |  |  |  | start no earlier than 2026-09-09 09:00 | Труфанов А; Некрасов А | 2h | 2h |
| 193 | 1.91 | открутить полочку на столе на жирах, сделать ребра жесткости |  | 1h | 2026-07-31 09:00 A | 2026-07-31 10:00 A |  | 100% |  |  |  | start no earlier than 2026-07-31 08:00 | Бундин В | 1h | 1h |
| 194 | 1.92 | слив конденсата с компрессора и продуть радиаторы и фильтры |  | 1h | 2026-07-31 08:00 A | 2026-07-31 10:00 A |  | 100% |  |  |  | start no earlier than 2026-07-31 08:00 | Тимофеев В | 1h | 1h |
| 195 | 1.93 | Ревизия головы от Нотис/заключение |  | 1h | 2026-07-27 08:00 A | 2026-07-27 10:00 A |  | 100% |  |  |  | start no earlier than 2026-07-27 08:00 | Дедов В | 1h | 1h |
| 196 | 1.94 | Снять клавиатуру с головы нотис, подготовить ее к замене лежит на верстаке |  | 30min | 2026-07-29 08:00 A | 2026-07-29 09:30 A |  | 100% |  |  |  | start no earlier than 2026-07-29 08:00 | Дедов В | 0.5h | 0.5h |
| 197 | 1.95 | Ремонт клавиатуры от головы нотис, клаву получить на складе, голову взять у нас в кабинете |  | 1h | 2026-09-01 09:00 A | 2026-09-01 10:00 A |  | 100% |  |  |  | start no earlier than 2026-09-01 08:00 | Бундин В | 1h | 1h |
| 198 | 1.96 | **ремонт кондиционер зона фасовки** |  | 0.5d | 2026-07-16 09:00 A | 2026-07-16 13:00 A |  | 100% |  |  |  |  |  | 6h | 6h |
| 199 | 1.96.1 | демонтаж внутреннего блока |  | 2h | 2026-07-16 09:00 A | 2026-07-16 11:00 A |  | 100% |  |  |  | start no earlier than 2026-07-16 09:00 | Некрасов А; Труфанов А | 4h | 4h |
| 200 | 1.96.2 | разборка, отделить испаритель от рамы |  | 1h | 2026-07-16 11:00 A | 2026-07-16 12:00 A | 199 | 100% |  |  |  | start no earlier than 2026-07-15 09:00 | Бундин В | 1h | 1h |
| 201 | 1.96.3 | опресовка в воде |  | 1h | 2026-07-16 12:00 A | 2026-07-16 13:00 A | 200 | 100% |  |  |  | start no earlier than 2026-07-15 09:00 | Бундин В | 1h | 1h |
| 202 | 1.97 | редуктор конвейера выгрузки пакетов квадропак -> обеспечить гибкое соединеине к раме, жесткое будет ломать либо вал либо редутор |  | 2h | 2026-07-16 09:00 A | 2026-07-16 11:00 A |  | 100% |  |  |  | start no earlier than 2026-07-16 09:00 | Некрасов А | 2h | 2h |
| 203 | 1.98 | **выполнить смотровые люки состояния цепи средниий и верхние этажи. На торцевой крышке с стороны экструдера.** |  | 37d | 2026-07-14 09:00 A | 2026-09-02 18:00 |  | 13% | 32.29d | 141.59d |  |  |  | 9.17h | 1.17h |
| 204 | 1.98.1 | заявка шарниры нерж + бугельный зажим |  | 1h | 2026-07-14 09:00 A | 2026-07-14 10:00 A |  | 100% |  |  |  | start no earlier than 2026-07-14 08:00 | Домоводов К | 1h | 1h |
| 205 | 1.98.2 | контроль доставка |  | 10min | 2026-08-17 09:00 A | 2026-08-17 09:10 A | 204FS+7d | 100% |  |  |  | start no earlier than 2026-08-17 09:00 | Шуранов Ю | 0.17h | 0.17h |
| 206 | 1.98.3 | монтаж 1 линия |  | 4h | 2026-09-02 09:00 | 2026-09-02 13:00 | 205FS+1d |  |  | 141.59d | 0d | start no earlier than 2026-09-02 09:00 | Макаревич А | 4h |  |
| 207 | 1.98.4 | монтаж 2 линия |  | 4h | 2026-09-02 14:00 | 2026-09-02 18:00 | 206 |  |  | 141.59d |  | start no earlier than 2026-07-14 08:00 | Макаревич А | 4h |  |
| 208 | 1.99 | монтаж светильник под площадку дозатора квадропака |  | 4h | 2026-07-10 09:00 A | 2026-07-10 13:00 A |  | 100% |  |  |  | start no earlier than 2026-07-10 09:00 | Бобренок В | 4h | 4h |
| 209 | 1.100 | **замена вентилятор вытяжка с экструдеров** |  | 2.25d | 2026-07-13 09:00 A | 2026-07-15 11:00 A |  | 100% |  |  |  |  |  | 13h | 13h |
| 210 | 1.100.1 | подключение воздуховоды |  | 4h | 2026-07-13 09:00 A | 2026-07-13 13:00 A |  | 100% |  |  |  | start no earlier than 2026-07-13 09:00 | Некрасов А; Бундин В | 8h | 8h |
| 211 | 1.100.2 | установить крыльчатку на мотор |  | 1h | 2026-07-14 09:00 A | 2026-07-14 10:00 A |  | 100% |  |  |  | start no earlier than 2026-07-14 08:00 | Труфанов А | 1h | 1h |
| 212 | 1.100.3 | устарнить причину вибрации мотора |  | 2h | 2026-07-15 09:00 A | 2026-07-15 11:00 A |  | 100% |  |  |  | start no earlier than 2026-07-15 09:00 | Некрасов А; Труфанов А | 4h | 4h |
| 213 | 1.101 | **сборка дозатор на квадропак** |  | 68.5d | 2026-07-09 08:00 A | 2026-10-02 13:00 |  | 83% | 11.96d | 113.09d |  |  |  | 58.83h | 46.83h |
| 214 | 1.101.1 | установить переключатель блокировки сброса дозатором |  | 30min | 2026-08-15 09:00 A | 2026-08-17 09:30 A |  | 100% |  |  |  | start no earlier than 2026-08-15 09:00 | Труфанов А | 0.5h | 0.5h |
| 215 | 1.101.2 | упорядочить схему |  | 30min | 2026-08-15 09:00 A | 2026-08-17 09:30 A |  | 100% |  |  |  | start no earlier than 2026-08-15 09:00 | Труфанов А | 0.5h | 0.5h |
| 216 | 1.101.3 | транспортировка дозатора в слесарку |  | 1h | 2026-08-04 08:00 A | 2026-08-04 10:00 A |  | 100% |  |  |  | start no earlier than 2026-08-04 08:00 | Труфанов А; Тимофеев В | 2h | 2h |
| 217 | 1.101.4 | установить розетку для дозатора. Вывод кабель сверлить платформу, что бы он был не под ногами и удобен при уборке |  | 2h | 2026-07-09 08:00 A | 2026-07-09 11:00 A |  | 100% |  |  |  | start no earlier than 2026-07-09 08:00 | Бобренок В | 2h | 2h |
| 218 | 1.101.5 | закрепить монитор фото Зорькин |  | 2h | 2026-07-09 08:00 A | 2026-07-09 11:00 A |  | 100% |  |  |  | start no earlier than 2026-07-09 08:00 | Бобренок В | 2h | 2h |
| 219 | 1.101.6 | подключение дозатора к машине / поиск кабеля в 3 цехе / изучение документации |  | 4h | 2026-07-14 09:00 A | 2026-07-14 13:00 A |  | 100% |  |  |  | start no earlier than 2026-07-14 09:00 | Труфанов А | 4h | 4h |
| 220 | 1.101.7 | подключить реле аварии дозатора паралельно датчику отсутствия пакета квадропака (схема прилагается) |  | 1h | 2026-08-12 09:00 A | 2026-08-12 10:00 A | 219 | 100% |  |  |  | start no earlier than 2026-08-12 09:00 | Труфанов А | 1h | 1h |
| 221 | 1.101.8 | калибровка весов и разгон наполнения, тестирование работы |  | 4h | 2026-08-12 09:00 A | 2026-08-12 13:00 A |  | 100% |  |  |  | start no earlier than 2026-08-12 09:00 | Труфанов А | 4h | 4h |
| 222 | 1.101.9 | монтаж кабель выравнивания потенциалов площадка дозатора и площадка квадропака |  | 30min | 2026-08-15 09:00 A | 2026-08-17 09:30 A |  | 100% |  |  |  | start no earlier than 2026-08-15 09:00 | Труфанов А | 0.5h | 0.5h |
| 223 | 1.101.10 | контроль поставки маткериал | milestone | 0d | 2026-08-27 09:00 A | 2026-08-27 09:00 A |  | 100% |  |  |  | start no earlier than 2026-08-27 09:00 | Зорькин В |  |  |
| 224 | 1.101.11 | тестирование весов / разгон |  | 2h | 2026-09-14 09:00 A | 2026-09-14 11:00 A | 223 | 100% |  |  |  | start no earlier than 2026-09-14 09:00 | Зорькин В | 2h | 2h |
| 225 | 1.101.12 | подключить синхронизацию пуска дозатора паралельно катушки открытия заслонки квадропака |  | 4h | 2026-08-04 11:00 A | 2026-08-04 16:00 A | 220 | 100% |  |  |  | start no earlier than 2026-07-16 09:00 | Труфанов А | 4h | 4h |
| 226 | 1.101.13 | монтаж перила на площадку - подготовка |  | 2h | 2026-08-14 09:00 A | 2026-08-14 11:00 A |  | 100% |  |  |  | start no earlier than 2026-08-14 09:00 | Тимофеев В | 2h | 2h |
| 227 | 1.101.14 | монтаж перила на площадку |  | 2h | 2026-08-17 09:00 A | 2026-08-17 11:00 A |  | 100% |  |  |  | start no earlier than 2026-08-17 09:00 | Тимофеев В; Бобренок В | 4h | 4h |
| 228 | 1.101.15 | сверлить для крепления перил |  | 2h | 2026-09-04 09:00 A | 2026-09-04 11:00 A | 224 | 100% |  |  |  | start no earlier than 2026-09-04 09:00 | Макаревич А | 2h | 2h |
| 229 | 1.101.16 | закрыть зад крышку |  | 20min | 2026-09-13 09:00 A | 2026-09-13 09:20 A |  | 100% |  |  |  | start no earlier than 2026-09-13 09:00 | Дедов В | 0.33h | 0.33h |
| 230 | 1.101.17 | сборка дозатор |  | 2h | 2026-09-25 09:00 A | 2026-09-25 11:00 A |  | 100% |  |  |  | start no earlier than 2026-09-28 09:00 | Труфанов А; Некрасов А | 4h | 4h |
| 231 | 1.101.18 | тест компонентов |  | 1h | 2026-09-23 09:00 A | 2026-09-23 10:00 A |  | 100% |  |  |  | start no earlier than 2026-09-23 09:00 | Зорькин В | 1h | 1h |
| 232 | 1.101.19 | установить на пружины раму дозатора + квеличить её массу |  | 4h | 2026-09-25 09:00 A | 2026-09-25 13:00 A |  | 100% |  |  |  | start no earlier than 2026-09-25 08:00 | Некрасов А; Труфанов А | 8h | 8h |
| 233 | 1.101.20 | покупка за нал / найти доп пружины |  | 1h | 2026-09-28 09:00 | 2026-09-28 10:00 |  |  |  | 117.47d |  | start no earlier than 2026-09-28 09:00 | Зорькин В | 1h |  |
| 234 | 1.101.21 | увеличить доп пружины, сжались ноль |  | 4h | 2026-10-02 09:00 | 2026-10-02 13:00 |  |  |  | 113.09d |  | start no earlier than 2026-10-02 09:00 | Некрасов А; Труфанов А | 8h |  |
| 235 | 1.101.22 | монтаж кнопка дозатор ОН/ОФФ |  | 1h | 2026-09-30 09:00 | 2026-09-30 10:00 | 229 |  |  | 115.47d |  | start no earlier than 2026-09-30 09:00 | Труфанов А | 1h |  |
| 236 | 1.101.23 | закрыть металлом пустые места между площадками квадропак и дозатор |  | 2h | 2026-09-30 09:00 | 2026-09-30 11:00 | 228 |  |  | 115.34d |  | start no earlier than 2026-09-30 09:00 | Тимофеев В | 2h |  |
| 237 | 1.101.24 | Сделать перегородки в бункер дозатора для увеличения объема секций |  | 3h | 2026-09-02 09:00 A | 2026-09-02 12:00 A |  | 100% |  |  |  | start no earlier than 2026-09-04 09:00 | Тимофеев В | 3h | 3h |
| 238 | 1.102 | навести сортиировка / порядок пандус 1ц |  | 4h | 2026-07-10 09:00 A | 2026-07-10 13:00 A |  | 100% |  |  |  | start no earlier than 2026-07-10 09:00 | Тимофеев В; Амрулин Р | 7h | 7h |

| ID | WBS | Task | Type | Duration | Start | Finish | Predecessors | Complete | Remaining | Actual start | Actual finish | Total slack | Free slack | Constraint | Resources | Work | Actual work |
| --- | --- | --- | --- | --- | --- | --- | --- | --- | --- | --- | --- | --- | --- | --- | --- | --- | --- |
| 239 | 1.103 | **Кондиционер зоны экструдера** |  | 0.5d | 2026-07-07 09:00 A | 2026-07-07 13:00 A |  | 100% |  |  |  |  |  |  |  | 4h | 4h |
| 240 | 1.103.1 | Чистка сливной магистрали |  | 4h | 2026-07-07 09:00 A | 2026-07-07 13:00 A |  | 100% |  |  |  |  |  | start no earlier than 2026-07-07 09:00 | Бундин В | 4h | 4h |
| 241 | 1.104 | **установить датчик давления на экструдер** |  | 49.53d | 2026-07-06 08:00 A | 2026-09-10 14:15 |  | 68% | 15.89d |  |  | 135.06d |  |  |  | 15.25h | 11h |
| 242 | 1.104.1 | контроль поставка фитинги |  | 15min | 2026-09-10 09:00 | 2026-09-10 09:15 |  |  |  |  |  | 135.06d | 0d | start no earlier than 2026-09-10 09:00 | Зорькин В | 0.25h |  |
| 243 | 1.104.2 | монтаж кронштейны для фиксации датчикоа давления 1+2 линия |  | 2h | 2026-07-10 09:00 A | 2026-07-10 11:00 A |  | 100% |  |  |  |  |  | start no earlier than 2026-07-10 09:00 | Макаревич А; Некрасов А | 4h | 4h |
| 244 | 1.104.3 | установить датчики давления через гидравлические шланги |  | 2h | 2026-07-06 08:00 A | 2026-07-06 11:00 A |  | 100% |  |  |  |  |  | start no earlier than 2026-07-06 08:00 | Дедов В | 2h | 2h |
| 245 | 1.104.4 | доработка кожух нож узла для закрытия |  | 2h | 2026-07-07 09:00 A | 2026-07-07 11:00 A |  | 100% |  |  |  |  |  | start no earlier than 2026-07-07 09:00 | Бобренок В | 2h | 2h |
| 246 | 1.104.5 | Прокинуть кабель ШВВП 2х0,75 от датчиков давления до регистраторов, сделать по красоте. |  | 3h | 2026-07-10 09:00 A | 2026-07-10 12:00 A |  | 100% |  |  |  |  |  | start no earlier than 2026-07-10 09:00 | Бобренок В | 3h | 3h |
| 247 | 1.104.6 | подключение датчиков давления к регистратору |  | 4h | 2026-09-10 09:15 | 2026-09-10 14:15 | 242 |  |  |  |  | 135.06d |  | start no earlier than 2026-09-02 09:00 | Домоводов К | 4h |  |
| 248 | 1.105 | печь №1 ревизия/замена перемычек |  | 4h | 2026-07-04 09:00 A | 2026-07-06 13:00 A |  | 100% |  |  |  |  |  | start no earlier than 2026-07-04 09:00 | Макаревич А | 4h | 4h |
| 249 | 1.106 | печь №2 ревизия/замена перемычек |  | 2h | 2026-07-16 09:00 A | 2026-07-16 11:00 A |  | 100% |  |  |  |  |  | start no earlier than 2026-07-16 09:00 | Бобренок В | 2h | 2h |
| 250 | 1.107 | **заменить амперметры неиспрвные на ШУ 1 и 2 линия (они на складе приехали сегодня новые посмотреть фото в выдаче)** |  | 1h? | 2026-09-04 09:00 | 2026-09-04 10:00 |  | 100% |  | 2026-09-05 09:00 | 2026-09-11 13:00 |  |  |  |  | 6h | 6h |
| 251 | 1.107.1 | монтаж - оказалить не те |  | 2h | 2026-09-05 09:00 A | 2026-09-05 11:00 A |  | 100% |  |  |  |  |  | start no earlier than 2026-09-05 09:00 | Дедов В | 2h | 2h |
| 252 | 1.107.2 | контроль датч тока | milestone | 0d | 2026-09-09 09:00 A | 2026-09-09 09:00 A |  | 100% |  |  |  |  |  | start no earlier than 2026-09-09 09:00 | Зорькин В |  |  |
| 253 | 1.107.3 | монтаж датчиковтока на 2л |  | 4h | 2026-09-11 09:00 A | 2026-09-11 13:00 A |  | 100% |  |  |  |  |  | start no earlier than 2026-09-11 09:00 | Макаревич А | 4h | 4h |
| 254 | 1.108 | **ставим 2 частотника на вентиляторы вытяжки с печек №1 и 2** |  | 0.5d | 2026-07-02 09:00 A | 2026-07-02 13:00 A |  | 100% |  |  |  |  |  |  |  | 4h | 4h |
| 255 | 1.108.1 | подключение к улиткам вытяжки 1 и 2 линия (помошника дадим) |  | 4h | 2026-07-02 09:00 A | 2026-07-02 13:00 A |  | 100% |  |  |  |  |  | start no earlier than 2026-07-02 09:00 | Тимофеев В | 4h | 4h |
| 256 | 1.109 | подключить частотный привод вентилятор на площадке жиротопки |  | 4h | 2026-07-14 09:00 A | 2026-07-14 13:00 A |  | 100% |  |  |  |  |  | start no earlier than 2026-07-14 09:00 | Дедов В | 4h | 4h |
| 257 | 1.110 | установка частотника для улитку в жиротопке (по телефону расскажу) |  | 4h | 2026-07-02 09:00 A | 2026-07-02 13:00 A |  | 100% |  |  |  |  |  | start no earlier than 2026-07-02 09:00 | Дедов В | 4h | 4h |
| 258 | 1.111 | заменить шнеки и гильзы на 2 линии (ставим усиленные, 2 гильзы) по уровню (операторы помогут) | manual | 10h | 2026-07-05 09:00 A | 2026-07-06 11:00 A |  | 100% |  |  |  |  |  | start no earlier than 2026-07-05 09:00 | Бундин В | 10h | 10h |
| 259 | 1.112 | **поменять фильтрующую ткань на фильтрах кондиционеров 1 цех** |  | 0.25d | 2026-07-01 09:00 A | 2026-07-01 11:00 A |  | 100% |  |  |  |  |  |  |  | 4h | 4h |
| 260 | 1.112.1 | установка фильтров закрываем внутренние блоки |  | 2h | 2026-07-01 09:00 A | 2026-07-01 11:00 A |  | 100% |  |  |  |  |  | start no earlier than 2026-07-01 09:00 | Макаревич А; Некрасов А | 4h | 4h |
| 261 | 1.113 | изготовление кронштейна для установки вентилятора крепим на место в зоне экструдера |  | 2h | 2026-06-30 09:00 A | 2026-06-30 11:00 A |  | 100% |  |  |  |  |  | start no earlier than 2026-06-30 09:00 | Некрасов А; Тимофеев В | 4h | 4h |
| 262 | 1.114 | снять на всех валах барабанов колеса, будем покрывать полиуретаном |  | 3h | 2026-06-29 09:00 A | 2026-06-29 12:00 A |  | 100% |  |  |  |  |  | start no earlier than 2026-06-29 09:00 | Бундин В | 3h | 3h |

| ID | WBS | Task | Type | Duration | Start | Finish | Predecessors | Complete | Actual start | Actual finish | Total slack | Free slack | Constraint | Resources | Work | Actual work |
| --- | --- | --- | --- | --- | --- | --- | --- | --- | --- | --- | --- | --- | --- | --- | --- | --- |
| 263 | 1.115 | **сборка раковина нерж для мойки конвейер** |  | 7.25d? | 2026-10-12 09:00 | 2026-10-21 11:00 |  |  |  |  | 100.34d |  |  |  | 34h |  |
| 264 | 1.115.1 | подготовить данные, оформить как проект / инициировать совещание |  | 2h | 2026-10-12 09:00 | 2026-10-12 11:00 |  |  |  |  | 100.34d | 0d | start no earlier than 2026-10-12 09:00 | Зорькин В | 2h |  |
| 265 | 1.115.2 | совещание с руководителями / фиксация решения |  | 1d? | 2026-10-13 11:00 | 2026-10-14 11:00 | 264FS+1d |  |  |  | 100.34d | 0d | start no earlier than 2026-08-31 09:00 | Зорькин В | 8h |  |
| 266 | 1.115.3 | подготовить чертеж раковины, проверить материал |  | 1d? | 2026-10-15 11:00 | 2026-10-16 11:00 | 265FS+1d |  |  |  | 100.34d | 0d | start no earlier than 2026-09-08 09:00 | Зорькин В | 8h |  |
| 267 | 1.115.4 | сборка |  | 2d | 2026-10-19 11:00 | 2026-10-21 11:00 | 266FS+1d |  |  |  | 100.34d |  | start no earlier than 2026-07-14 08:00 | Бундин В | 16h |  |
| 268 | 1.116 | ревизия шестеренок питателя 2 линия, если нужно замена с зип- питатель синий склад |  | 3h | 2026-06-29 09:00 A | 2026-06-29 12:00 A |  | 100% |  |  |  |  | start no earlier than 2026-06-29 09:00 | Бундин В | 3h | 3h |
| 269 | 1.117 | повесить полочки у ОТК в кабинете- крепеж по гипсокортону у меня на столе |  | 1h | 2026-06-26 09:00 A | 2026-06-26 10:00 A |  | 100% |  |  |  |  | start no earlier than 2026-06-26 09:00 | Тимофеев В; Дедов В | 2h | 2h |
| 270 | 1.118 | нормально прикрутить светильник на стойке со сканером QR- кодов на фасовке, если нужно заменить на другой | manual | 2h | 2026-07-03 09:00 A | 2026-07-03 11:00 A |  | 100% |  |  |  |  | start no earlier than 2026-07-03 09:00 | Макаревич А | 2h | 2h |
| 271 | 1.119 | прикрутить розетку возле ШУ приточки |  | 1h | 2026-07-04 09:00 A | 2026-07-06 10:00 A |  | 100% |  |  |  |  | start no earlier than 2026-07-04 09:00 | Дедов В | 1h | 1h |
| 272 | 1.120 | заменить светильник 50Вт на жиротопке | manual | 2h | 2026-06-27 09:00 A | 2026-06-27 11:00 A |  | 100% |  |  |  |  | start no earlier than 2026-06-27 09:00 | Дедов В | 2h | 2h |
| 273 | 1.121 | мойка внутрених и внешних блоков керхером |  | 4h | 2026-06-24 09:00 A | 2026-06-24 13:00 A |  | 100% |  |  |  |  | start no earlier than 2026-06-24 09:00 | Тимофеев В; Дедов В | 8h | 8h |
| 274 | 1.122 | 1 линия средняя зона печи 115А |  | 2h | 2026-07-01 09:00 A | 2026-07-01 11:00 A |  | 100% |  |  |  |  | start no earlier than 2026-07-01 09:00 | Некрасов А | 2h | 2h |
| 275 | 1.123 | продуть внешний блок кондиционера (посередине) |  | 2h | 2026-06-24 09:00 A | 2026-06-24 11:00 A |  | 100% |  |  |  |  | start no earlier than 2026-06-24 09:00 | Тимофеев В | 2h | 2h |
| 276 | 1.124 | слить конденсат и продуть радиаторы на компрессоре |  | 1h | 2026-06-22 09:00 A | 2026-06-22 10:00 A |  | 100% |  |  |  |  | start no earlier than 2026-06-22 08:00 | Бундин В | 1h | 1h |
| 277 | 1.125 | взять ключи на складе и повесить возле каждого щитка | manual | 1h | 2026-07-05 09:00 A | 2026-07-05 10:00 A |  | 100% |  |  |  |  | start no earlier than 2026-07-05 09:00 | Бундин В | 1h | 1h |
| 278 | 1.126 | заменить монтажную коробку- пускатели улиток, зона экструдера | manual | 1h | 2026-06-30 09:00 A | 2026-06-30 10:00 A |  | 100% |  |  |  |  | start no earlier than 2026-06-30 09:00 | Бундин В | 1h | 1h |
| 279 | 1.127 | герметизация стыков в душевой женской, потечка воды | manual | 1h | 2026-06-21 09:00 A | 2026-06-21 10:00 A |  | 100% |  |  |  |  | start no earlier than 2026-06-21 09:00 | Бундин В | 1h | 1h |
| 280 | 1.128 | **вернуть колбу уровня подачи воды на 2 линию** |  | 1h? | 2026-06-26 09:00 | 2026-06-26 10:00 |  | 100% | 2026-06-29 09:00 | 2026-06-29 18:00 |  |  |  |  | 8h | 8h |
| 281 | 1.128.1 | найти колбу |  | 1d? | 2026-06-29 09:00 A | 2026-06-29 18:00 A |  | 100% |  |  |  |  | start no earlier than 2026-06-29 09:00 | Шуранов Ю | 8h | 8h |
| 282 | 1.129 | **изготовить шило для экструдерщиков, они подскажут** |  | 1h? | 2026-06-26 09:00 | 2026-06-26 10:00 |  |  |  |  |  |  |  |  | 0.25h |  |
| 283 | 1.129.1 | заказать спицы не пустые |  | 15min | 2026-09-01 09:00 | 2026-09-01 09:15 |  |  |  |  | 143.56d |  | start no earlier than 2026-09-01 09:00 | Шуранов Ю | 0.25h |  |
| 284 | 1.130 | отключить кондеры и продуть внешние блоки кондиционеров 1 ц. |  | 2h | 2026-06-20 09:00 A | 2026-06-22 11:00 A |  | 100% |  |  |  |  | start no earlier than 2026-06-20 09:00 | Бундин В | 2h | 2h |
| 285 | 1.131 | **померить верхний воздуховод и трассу для подключения новой улитки** |  | 1d? | 2026-06-22 09:00 A | 2026-06-22 18:00 A |  | 100% |  |  |  |  |  | Тимофеев В; Зорькин В | 24h | 24h |
| 286 | 1.131.1 | заказать переходник |  | 1d? | 2026-06-22 09:00 A | 2026-06-22 18:00 A |  | 100% |  |  |  |  | start no earlier than 2026-06-22 08:00 | Зорькин В | 8h | 8h |
| 287 | 1.132 | слив конденсата с компрессора и продуть радиаторы и фильтры |  | 1h | 2026-06-14 09:00 A | 2026-06-15 10:00 A |  | 100% |  |  |  |  | start no earlier than 2026-06-14 09:00 | Бобренок В | 1h | 1h |

| ID | WBS | Task | Duration | Start | Finish | Predecessors | Complete | Total slack | Constraint | Resources | Work | Actual work |
| --- | --- | --- | --- | --- | --- | --- | --- | --- | --- | --- | --- | --- |
| 288 | 1.133 | **закрепить редуктор к отводящему транспортеру** | 1d? | 2026-06-17 09:00 A | 2026-06-17 18:00 A |  | 100% |  |  | Некрасов А | 16h | 16h |
| 289 | 1.133.1 | сделать надежное крепление на мойке | 1d? | 2026-06-17 09:00 A | 2026-06-17 18:00 A |  | 100% |  | start no earlier than 2026-06-17 09:00 | Бундин В | 8h | 8h |
| 290 | 1.134 | заменить сальник на вакууматоре (редуктор) | 1h | 2026-06-11 09:00 A | 2026-06-11 10:00 A |  | 100% |  | start no earlier than 2026-06-11 09:00 | Тимофеев В | 1h | 1h |
| 291 | 1.135 | законтрогаить шпильки-ножки запайщиков | 1h | 2026-06-12 09:00 A | 2026-06-12 10:00 A |  | 100% |  | start no earlier than 2026-06-12 09:00 | Бундин В | 1h | 1h |
| 292 | 1.136 | настроить подачу масла на квадропаке по пневмо системе (спросить у Дедова) | 1h | 2026-06-10 09:00 A | 2026-06-10 10:00 A |  | 100% |  | start no earlier than 2026-06-10 09:00 | Труфанов А | 1h | 1h |
| 293 | 1.137 | **проверить давление в гидроаккумуляторе водоподготовки** | 0.25d | 2026-06-10 09:00 A | 2026-06-10 11:00 A |  | 100% |  |  | Дедов В | 4h | 4h |
| 294 | 1.137.1 | замена мембраны | 2h | 2026-06-10 09:00 A | 2026-06-10 11:00 A |  | 100% |  | start no earlier than 2026-06-10 09:00 | Дедов В | 2h | 2h |
| 295 | 1.138 | модернизация опроры пневмоцилиндра встряживателя №1 квадропак | 4h | 2026-10-19 09:00 | 2026-10-19 13:00 |  |  | 102.09d | start no earlier than 2026-10-19 09:00 | Некрасов А | 4h |  |
| 296 | 1.139 | **готовить в зип сетку оборотную для печей (нижняя)** | 0.5d | 2026-06-09 09:00 A | 2026-06-09 13:00 A |  | 100% |  |  |  | 4.5h | 4.5h |
| 297 | 1.139.1 | проверка материал | 30min | 2026-06-09 09:00 A | 2026-06-09 09:30 A |  | 100% |  | start no earlier than 2026-06-09 09:00 | Тимофеев В | 0.5h | 0.5h |
| 298 | 1.139.2 | сборка | 4h | 2026-06-09 09:00 A | 2026-06-09 13:00 A |  | 100% |  | start no earlier than 2026-06-09 09:00 | Тимофеев В | 4h | 4h |
| 299 | 1.140 | подключить частотный привод насос жир 2 линия/ при остановке | 2h | 2026-06-07 09:00 A | 2026-06-08 11:00 A |  | 100% |  | start no earlier than 2026-06-07 09:00 | Дедов В | 2h | 2h |
| 300 | 1.141 | **жиротопка текет сальник насоса** | 36.03d? | 2026-06-28 09:00 A | 2026-08-18 09:15 A |  | 100% |  |  |  | 18.5h | 18.5h |
| 301 | 1.141.1 | замена насос из зип | 1h | 2026-06-28 09:00 A | 2026-06-29 10:00 A |  | 100% |  | start no earlier than 2026-06-28 09:00 | Дедов В | 1h | 1h |
| 302 | 1.141.2 | замена сальник на снятом насосе | 1h | 2026-06-28 10:00 A | 2026-06-29 10:00 A | 301 | 100% |  | start no earlier than 2026-06-17 09:00 | Дедов В | 1h | 1h |
| 303 | 1.141.3 | заказать | 1d? | 2026-06-29 09:00 A | 2026-06-29 18:00 A |  | 100% |  | start no earlier than 2026-06-29 09:00 | Шуранов Ю | 8h | 8h |
| 304 | 1.141.4 | ревизия прогресса утечки | 15min | 2026-08-05 09:00 A | 2026-08-05 09:15 A |  | 100% |  | start no earlier than 2026-08-05 09:00 | Дедов В | 0.25h | 0.25h |
| 305 | 1.141.5 | контроль наличия сальника | 15min | 2026-08-18 09:00 A | 2026-08-18 09:15 A |  | 100% |  | start no earlier than 2026-08-18 09:00 | Шуранов Ю | 0.25h | 0.25h |
| 306 | 1.141.6 | замена сальника | 1d? | 2026-08-05 09:00 A | 2026-08-05 18:00 A |  | 100% |  | start no earlier than 2026-08-05 09:00 | Дедов В | 8h | 8h |
| 307 | 1.142 | ремонт весов напольный (палетные) проверить кабель на обрыв | 3h | 2026-06-11 09:00 A | 2026-06-11 12:00 A |  | 100% |  | start no earlier than 2026-06-11 09:00 | Дедов В | 3h | 3h |
| 308 | 1.143 | печь №2 проверка токов, тен, замена | 2h | 2026-06-04 09:00 A | 2026-06-04 11:00 A |  | 100% |  | start no earlier than 2026-06-04 09:00 | Некрасов А; Бундин В | 4h | 4h |
| 309 | 1.144 | изготовление шторки после приемного лотка циклона | 2h | 2026-06-04 09:00 A | 2026-06-04 11:00 A |  | 100% |  | start no earlier than 2026-06-04 09:00 | Бундин В | 2h | 2h |
| 310 | 1.145 | **на аппликаторе настроить печать QR-кода на пакет, чтобы не размазывало (по тел. Объясню)** | 3.12d | 2026-06-04 09:00 A | 2026-06-09 10:00 A |  | 100% |  |  |  | 2h | 2h |
| 311 | 1.145.1 | тест (подключить доп. Датчик -настроить печать без размытия, картридж находиться у Луговских подписанный) | 1h | 2026-06-04 09:00 A | 2026-06-04 10:00 A |  | 100% |  | start no earlier than 2026-06-04 09:00 | Дедов В | 1h | 1h |
| 312 | 1.145.2 | тест | 1h | 2026-06-09 09:00 A | 2026-06-09 10:00 A |  | 100% |  | start no earlier than 2026-06-09 09:00 | Тимофеев В | 1h | 1h |
| 313 | 1.146 | целкает аппликатор -разобраться, устранить | 1h | 2026-06-03 08:00 A | 2026-06-03 10:00 A |  | 100% |  | start no earlier than 2026-06-03 08:00 | Дедов В | 1h | 1h |

| ID | WBS | Task | Type | Duration | Start | Finish | Predecessors | Complete | Remaining | Total slack | Free slack | Constraint | Resources | Work | Actual work |
| --- | --- | --- | --- | --- | --- | --- | --- | --- | --- | --- | --- | --- | --- | --- | --- |
| 314 | 1.147 | **установить резервную трубку/штангу с форсункой на подачу жира** |  | 31d | 2026-09-08 09:00 A | 2026-10-12 18:00 |  | 10% | 27.9d | 106.59d |  |  |  | 10h | 1h |
| 315 | 1.147.1 | проект-схема разработать |  | 1h | 2026-09-08 09:00 A | 2026-09-08 10:00 A |  | 100% |  |  |  | start no earlier than 2026-09-08 09:00 | Домоводов К | 1h | 1h |
| 316 | 1.147.2 | разработать спецкронштейн крепления 4х трубок |  | 1h | 2026-09-10 09:00 | 2026-09-10 10:00 |  |  |  | 126.47d | 19.88d | start no earlier than 2026-09-10 09:00 | Домоводов К | 1h |  |
| 317 | 1.147.3 | монтаж спец кронштенна |  | 1h | 2026-10-01 09:00 | 2026-10-01 10:00 | 316FS+1d |  |  | 106.59d | 0d | start no earlier than 2026-10-01 09:00 | Тимофеев В | 1h |  |
| 318 | 1.147.4 | заявка фитинги / тройники / краны / трубка |  | 1h | 2026-10-01 10:00 | 2026-10-01 11:00 | 315FS+1d, 317 |  |  | 106.59d | 0d | start no earlier than 2026-06-03 08:00 | Зорькин В | 1h |  |
| 319 | 1.147.5 | доставка контроль | milestone | 0d | 2026-10-08 11:00 | 2026-10-08 11:00 | 318FS+5d |  |  | 106.59d | 0d | start no earlier than 2026-06-03 08:00 | Зорькин В |  |  |
| 320 | 1.147.6 | сборка в мастерской |  | 4h | 2026-10-09 11:00 | 2026-10-09 16:00 | 319FS+1d |  |  | 106.59d | 0d | start no earlier than 2026-06-15 09:00 | Тимофеев В | 4h |  |
| 321 | 1.147.7 | монтаж на линию |  | 2h | 2026-10-12 16:00 | 2026-10-12 18:00 | 320FS+1d |  |  | 106.59d |  | start no earlier than 2026-06-03 08:00 | Тимофеев В | 2h |  |
| 322 | 1.148 | **установить автоматику запуска шнека + смеситель по датчику уровня сырья в бункере экструдера** |  | 10.4d? | 2026-09-24 09:00 | 2026-10-06 12:10 |  |  |  | 111.2d |  |  |  | 19.17h |  |
| 323 | 1.148.1 | разработка схема / компановка |  | 1h | 2026-09-24 09:00 | 2026-09-24 10:00 |  |  |  | 111.2d | 0d | start no earlier than 2026-09-24 09:00 | Домоводов К | 1h |  |
| 324 | 1.148.2 | заявка датчики / пускатели / эл щит |  | 2h | 2026-09-24 10:00 | 2026-09-24 12:00 | 323 |  |  | 111.2d | 0d | start no earlier than 2026-06-04 09:00 | Домоводов К | 2h |  |
| 325 | 1.148.3 | доставка контроль |  | 5min | 2026-10-01 12:00 | 2026-10-01 12:05 | 324FS+7d |  |  | 111.2d | 0d | start no earlier than 2026-06-03 08:00 | Зорькин В | 0.08h |  |
| 326 | 1.148.4 | контроль поставки |  | 5min | 2026-10-02 12:05 | 2026-10-02 12:10 | 325FS+1d |  |  | 111.2d | 0d | start no earlier than 2026-06-03 08:00 | Зорькин В | 0.08h |  |
| 327 | 1.148.5 | сборка ШУ |  | 1d? | 2026-10-02 12:10 | 2026-10-05 12:10 | 326 |  |  | 111.2d | 0d | start no earlier than 2026-06-24 09:00 | Дедов В | 8h |  |
| 328 | 1.148.6 | монтаж в линию |  | 1d? | 2026-10-05 12:10 | 2026-10-06 12:10 | 327 |  |  | 111.2d |  | start no earlier than 2026-06-03 08:00 | Дедов В | 8h |  |
| 329 | 1.149 | поставить на двигатели накопительных столов тепловые реле |  | 2h | 2026-06-15 09:00 | 2026-06-15 11:00 |  |  |  | 199.34d |  | start no earlier than 2026-06-15 09:00 | Дедов В | 2h |  |
| 330 | 1.150 | влагоотделитель крышки загрузки квадропак треснул- замена |  | 1h | 2026-06-10 09:00 | 2026-06-10 10:00 |  |  |  | 202.47d |  | start no earlier than 2026-06-10 09:00 | Дедов В | 1h |  |
| 331 | 1.151 | установка ПЧ на насос жира 2 линия |  | 2h | 2026-06-02 09:00 A | 2026-06-02 11:00 A |  | 100% |  |  |  | start no earlier than 2026-06-02 09:00 | Дедов В | 2h | 2h |
| 332 | 1.152 | установка ПЧ на барабаны жиров 1 и 2 линия |  | 2h | 2026-06-02 09:00 A | 2026-06-02 11:00 A |  | 100% |  |  |  | start no earlier than 2026-06-02 09:00 | Дедов В | 2h | 2h |
| 333 | 1.153 | **рассекатели после шлюзовика 1 и 2 линия сделать, чтобы корм равномерно ложился по поверхности сетки** |  | 5.25d | 2026-06-03 09:00 A | 2026-06-10 11:00 A |  | 100% |  |  |  |  |  | 11h | 11h |
| 334 | 1.153.1 | после обеда будет остановка 2 линия- модернизация рассекателя |  | 1h | 2026-06-03 09:00 A | 2026-06-03 10:00 A |  | 100% |  |  |  | start no earlier than 2026-06-03 09:00 | Бундин В | 1h | 1h |
| 335 | 1.153.2 | **установить зубчатую пластину для выравнивания слоя на входе в печь** |  | 5.25d | 2026-06-03 09:00 A | 2026-06-10 11:00 A |  | 100% |  |  |  |  |  | 10h | 10h |
| 336 | 1.153.2.1 | подготовиьт чертеж |  | 2h | 2026-06-03 09:00 A | 2026-06-03 11:00 A |  | 100% |  |  |  | start no earlier than 2026-06-03 08:00 | Домоводов К | 2h | 2h |
| 337 | 1.153.2.2 | изготовить |  | 6h | 2026-06-05 09:00 A | 2026-06-05 16:00 A | 336 | 100% |  |  |  | start no earlier than 2026-06-05 09:00 | Бундин В | 6h | 6h |
| 338 | 1.153.2.3 | монтаж |  | 2h | 2026-06-10 09:00 A | 2026-06-10 11:00 A | 337 | 100% |  |  |  | start no earlier than 2026-06-10 09:00 | Некрасов А | 2h | 2h |

| ID | WBS | Task | Type | Duration | Start | Finish | Predecessors | Complete | Remaining | Total slack | Constraint | Resources | Work | Actual work |
| --- | --- | --- | --- | --- | --- | --- | --- | --- | --- | --- | --- | --- | --- | --- |
| 339 | 1.154 | **монтаж 2х прожекторов на барабаны жиров** |  | 0.25d | 2026-06-02 09:00 A | 2026-06-02 11:00 A |  | 100% |  |  |  |  | 2h | 2h |
| 340 | 1.154.1 | подключить в ШУ самого транспортера на автомат |  | 2h | 2026-06-02 09:00 A | 2026-06-02 11:00 A |  | 100% |  |  | start no earlier than 2026-06-02 09:00 | Макаревич А | 2h | 2h |
| 341 | 1.155 | **проверка вентилятор упавший в зимний период. Тест на месте** |  | 6.25d | 2026-06-05 09:00 A | 2026-06-15 11:00 A |  | 100% |  |  |  |  | 10h | 10h |
| 342 | 1.155.1 | изготовить подиум под улитку |  | 6h | 2026-06-05 09:00 A | 2026-06-05 16:00 A |  | 100% |  |  | start no earlier than 2026-06-05 09:00 | Тимофеев В | 6h | 6h |
| 343 | 1.155.2 | перенос вентилятора |  | 2h | 2026-06-15 09:00 A | 2026-06-15 11:00 A |  | 100% |  |  | start no earlier than 2026-06-15 09:00 | Тимофеев В; Некрасов А | 4h | 4h |
| 344 | 1.156 | прачка 1ц замена светильник |  | 1h | 2026-05-29 09:00 A | 2026-05-29 10:00 A |  | 100% |  |  | start no earlier than 2026-05-29 08:00 | Бундин В | 1h | 1h |
| 345 | 1.157 | запайщик замена нихром |  | 1h | 2026-05-29 09:00 A | 2026-05-29 10:00 A |  | 100% |  |  | start no earlier than 2026-05-29 08:00 | Бундин В | 1h | 1h |
| 346 | 1.158 | устранить провисание патрубка подачи ГДЗ линия 2 |  | 1h | 2026-08-31 09:00 A | 2026-08-31 10:00 A |  | 100% |  |  | start no earlier than 2026-08-31 09:00 | Тимофеев В | 1h | 1h |
| 347 | 1.159 | крепеление РР магистраль ф20 воздух в склад гдз |  | 15min | 2026-05-27 09:00 A | 2026-05-27 09:15 A |  | 100% |  |  | start no earlier than 2026-05-27 09:00 | Бундин В | 0.25h | 0.25h |
| 348 | 1.160 | **перевод насосов ГДЗ на канистры с трассой на насос > 1/2** |  | 3.25d | 2026-05-28 09:00 A | 2026-06-02 11:00 |  | 50% | 1.62d | 208.34d |  |  | 4h | 2h |
| 349 | 1.160.1 | подготовка канистры установить штуцер, подготовить шланг + фитинги на насос |  | 2h | 2026-05-28 09:00 A | 2026-05-28 11:00 A |  | 100% |  |  | start no earlier than 2026-05-28 09:00 | Бундин В | 2h | 2h |
| 350 | 1.160.2 | монаж на линию 1 |  | 2h | 2026-06-02 09:00 | 2026-06-02 11:00 | 349 |  |  | 208.34d | start no earlier than 2026-06-02 09:00 | Бундин В | 2h |  |
| 351 | 1.161 | **с тена печей осыпается оребрение, попадая в продукт** |  | 10.5d | 2026-05-27 09:00 A | 2026-06-10 13:00 A |  | 100% |  |  |  |  | 11h | 11h |
| 352 | 1.161.1 | осмотр тенов печей линия 1 и линия 2 на предмет отслоения оребрения. Очистка / замена |  | 3h | 2026-05-27 09:00 A | 2026-05-27 12:00 A |  | 100% |  |  | start no earlier than 2026-05-27 09:00 | Некрасов А | 3h | 3h |
| 353 | 1.161.2 | замена неисправных тенов линия 2, по диагностике Некрасова 27.05 (токи) 2 линия |  | 4h | 2026-06-02 09:00 A | 2026-06-02 13:00 A |  | 100% |  |  | start no earlier than 2026-06-02 09:00 | Некрасов А | 4h | 4h |
| 354 | 1.161.3 | замена прогнувшихся тен |  | 4h | 2026-06-10 09:00 A | 2026-06-10 13:00 A |  | 100% |  |  | start no earlier than 2026-06-10 09:00 | Некрасов А | 4h | 4h |
| 355 | 1.162 | перенести частотный привод ШУ печи 1л для доступа обслуживания |  | 2h | 2026-06-02 09:00 A | 2026-06-02 11:00 A |  | 100% |  |  | start no earlier than 2026-06-02 09:00 | Дедов В | 2h | 2h |
| 356 | 1.163 | нет фазы линия 2 печь оперативно |  | 1h | 2026-05-26 09:00 A | 2026-05-26 10:00 A |  | 100% |  |  | start no earlier than 2026-05-26 09:00 | Тимофеев В; Бундин В | 2h | 2h |
| 357 | 1.164 | замена твердотельное реле фаза В 2шт (найти пробитый) |  | 30min | 2026-05-27 09:00 A | 2026-05-27 09:30 A |  | 100% |  |  | start no earlier than 2026-05-27 09:00 | Бундин В | 0.5h | 0.5h |
| 358 | 1.165 | выравнивание потенциалов ШУ тв реле печей 1 и 2 |  | 1h | 2026-05-27 09:00 A | 2026-05-27 10:00 A |  | 100% |  |  | start no earlier than 2026-05-27 09:00 | Бундин В | 1h | 1h |
| 359 | 1.166 | **заменить фитинги с гайками (они на складе) на жирах 1 + 2 линия** |  | 28d | 2026-05-27 09:00 A | 2026-07-04 11:00 A |  | 100% |  |  |  |  | 6.08h | 6.08h |
| 360 | 1.166.1 | доставка шланг 8х12мм. Контроль |  | 5min | 2026-05-27 09:00 A | 2026-05-27 09:05 A |  | 100% |  |  | start no earlier than 2026-05-27 09:00 | Шуранов Ю | 0.08h | 0.08h |
| 361 | 1.166.2 | замена 2 линия |  | 2h | 2026-05-27 09:00 A | 2026-05-27 11:00 A |  | 100% |  |  | start no earlier than 2026-05-27 09:00 | Тимофеев В | 2h | 2h |
| 362 | 1.166.3 | замена 1 линия |  | 2h | 2026-06-15 09:00 A | 2026-06-15 11:00 A |  | 100% |  |  | start no earlier than 2026-06-15 09:00 | Тимофеев В | 2h | 2h |
| 363 | 1.166.4 | проверить где не поставлены фитинги с гайками- поменять | manual | 2h | 2026-07-04 09:00 A | 2026-07-04 11:00 A |  | 100% |  |  | start no earlier than 2026-07-04 09:00 | Тимофеев В | 2h | 2h |
| 364 | 1.167 | подключить Sаvema на теко 0,4 через ИБП (ибп на складе) |  | 1h | 2026-05-26 09:00 A | 2026-05-26 10:00 A |  | 100% |  |  | start no earlier than 2026-05-26 09:00 | Дедов В | 1h | 1h |
| 365 | 1.168 | найти и закрутить мотор-редукторы на транспортерах и отписаться на каких были не прикручены и не законтрогаек. |  | 1h | 2026-05-25 09:00 A | 2026-05-25 10:00 A |  | 100% |  |  | start no earlier than 2026-05-25 09:00 | Макаревич А | 1h | 1h |
| 366 | 1.169 | транспортер с жиров на виброохладитель- поменять кнопку стоп 2 линия | manual | 1h | 2026-05-27 09:00 A | 2026-05-27 10:00 A |  | 100% |  |  | start no earlier than 2026-05-27 09:00 | Дедов В | 1h | 1h |
| 367 | 1.170 | демонтировать на накопительном столе квадропака силиконовую резинку по диаметру | manual | 1h | 2026-05-24 09:00 A | 2026-05-24 10:00 A |  | 100% |  |  | start no earlier than 2026-05-24 09:00 | Макаревич А | 1h | 1h |

| ID | WBS | Task | Type | Duration | Start | Finish | Predecessors | Complete | Remaining | Total slack | Constraint | Resources | Work | Actual work |
| --- | --- | --- | --- | --- | --- | --- | --- | --- | --- | --- | --- | --- | --- | --- |
| 368 | 1.171 | **установка фосунок - подача жира 1 линия** |  | 22.12d? | 2026-06-05 09:00 A | 2026-07-07 10:00 |  | 17% | 18.44d? | 183.47d |  |  | 4h | 2h |
| 369 | 1.171.1 | сборка кронштейн для фильтров + счетчик/ покраска |  | 1h | 2026-06-05 09:00 A | 2026-06-05 10:00 A |  | 100% |  |  | start no earlier than 2026-06-05 09:00 | Тимофеев В | 1h | 1h |
| 370 | 1.171.2 | установка |  | 1d? | 2026-07-06 09:00 | 2026-07-06 18:00 |  |  |  | 183.59d | start no earlier than 2026-07-06 09:00 |  |  |  |
| 371 | 1.171.3 | монтаж в линию |  | 2h | 2026-07-06 09:00 | 2026-07-06 11:00 |  |  |  | 184.34d | start no earlier than 2026-07-06 09:00 | Тимофеев В | 2h |  |
| 372 | 1.171.4 | монтаж розетка для блок питания 5в для регистратора |  | 1h | 2026-07-07 09:00 A | 2026-07-07 10:00 A |  | 100% |  |  | start no earlier than 2026-07-07 09:00 | Тимофеев В | 1h | 1h |
| 373 | 1.172 | **конв №2 линия 2 нижний вал нет защиты подшипников (был фетр)** |  | 9.16d | 2026-08-19 09:00 A | 2026-09-01 10:15 A |  | 100% |  |  |  |  | 5.25h | 5.25h |
| 374 | 1.172.1 | разборка, ревизия, подбор / чертеж уплотнеия |  | 2h | 2026-08-26 09:00 A | 2026-08-26 11:00 A |  | 100% |  |  | start no earlier than 2026-08-26 09:00 | Тимофеев В | 2h | 2h |
| 375 | 1.172.2 | заявка уплотнение |  | 1h | 2026-08-19 09:00 A | 2026-08-19 10:00 A |  | 100% |  |  | start no earlier than 2026-08-19 09:00 | Шуранов Ю | 1h | 1h |
| 376 | 1.172.3 | контроль поставки |  | 15min | 2026-09-01 10:00 A | 2026-09-01 10:15 A | 375FS+10d | 100% |  |  | start no earlier than 2026-08-12 09:00 | Шуранов Ю | 0.25h | 0.25h |
| 377 | 1.172.4 | монтаж уплотнения |  | 2h | 2026-08-31 09:00 A | 2026-08-31 11:00 A | 376FS+1d | 100% |  |  | start no earlier than 2026-08-12 09:00 | Тимофеев В | 2h | 2h |
| 378 | 1.173 | вентилятор на охладителе верхний краний слишком большой - переделать крепление |  | 1h | 2026-08-26 09:00 A | 2026-08-26 10:00 A |  | 100% |  |  | start no earlier than 2026-08-26 09:00 | Тимофеев В | 1h | 1h |
| 379 | 1.174 | устанить утечку на мойке зона экструдера |  | 1h | 2023-03-10 09:00 A | 2023-03-10 10:00 A |  | 100% |  |  |  | Бобренок В | 1h | 1h |
| 380 | 1.175 | выдать шестигранные болты и шайбы на ножевой узел экструдерщикам (штук 20) |  | 1h | 2026-05-21 09:00 A | 2026-05-21 10:00 A |  | 100% |  |  | start no earlier than 2026-05-21 08:00 | Бундин В | 1h | 1h |
| 381 | 1.176 | приварить болты к заслонке подачи гранулы на квадропаке (остановить, с мастером согласовать) |  | 1h | 2026-05-26 09:00 A | 2026-05-26 10:00 A |  | 100% |  |  | start no earlier than 2026-05-26 09:00 | Бобренок В | 1h | 1h |
| 382 | 1.177 | увеличить диаметр отверстия, чтобы горловина подачи сух. Гидрализата проходила (жиротопка) |  | 1h | 2026-05-20 09:00 A | 2026-05-20 10:00 A |  | 100% |  |  | start no earlier than 2026-05-20 09:00 | Некрасов А | 1h | 1h |
| 383 | 1.178 | посмотреть приточку, выпадает часто в аварию по насосу |  | 2h | 2026-05-18 08:00 A | 2026-05-18 11:00 A |  | 100% |  |  | start no earlier than 2026-05-18 08:00 | Дедов В | 2h | 2h |
| 384 | 1.179 | замена светильника в зоне завоза навесок (работа на высоте) |  | 2h | 2026-05-15 09:00 A | 2026-05-15 11:00 A |  | 100% |  |  | start no earlier than 2026-05-15 09:00 | Некрасов А; Труфанов А | 4h | 4h |
| 385 | 1.180 | закрепить встиряхиватель полного пакета №1 квадропак |  | 1h | 2026-05-14 08:00 A | 2026-05-14 10:00 A |  | 100% |  |  | start no earlier than 2026-05-14 08:00 | Бобренок В | 1h | 1h |
| 386 | 1.181 | замена лампа светильник гардероб М = на короткий. |  | 1h | 2026-05-13 09:00 A | 2026-05-13 10:00 A |  | 100% |  |  | start no earlier than 2026-05-13 09:00 | Бундин В | 1h | 1h |
| 387 | 1.182 | устранить потерю мощности печи в 2х фазах |  | 2h | 2026-05-12 08:00 A | 2026-05-12 11:00 A |  | 100% |  |  | start no earlier than 2026-05-12 08:00 | Тимофеев В; Бобренок В | 4h | 4h |
| 388 | 1.183 | квадропак изготовить и заменить текстолит на термоноже |  | 2h | 2026-05-12 09:00 A | 2026-05-12 11:00 A |  | 100% |  |  | start no earlier than 2026-05-12 08:00 | Некрасов А | 2h | 2h |
| 389 | 1.184 | **бак стабилизации воды-утечка** |  | 0.25d | 2026-05-22 09:00 A | 2026-05-22 11:00 A |  | 100% |  |  |  | Тимофеев В | 4h | 4h |
| 390 | 1.184.1 | монтаж подачи воды 2 линия в прекондиционер |  | 2h | 2026-05-22 09:00 A | 2026-05-22 11:00 A |  | 100% |  |  | start no earlier than 2026-05-22 09:00 | Тимофеев В | 2h | 2h |
| 391 | 1.185 | **парогенератор 1ц ремонт по гарантии** |  | 30d? | 2026-04-27 09:00 A | 2026-06-05 18:00 A |  | 100% |  |  |  |  | 11.33h | 11.33h |
| 392 | 1.185.1 | отправить ПГ на ремонт орг курьера |  | 10min | 2026-04-27 09:00 A | 2026-04-27 09:10 A |  | 100% |  |  | start no earlier than 2026-04-27 08:00 | Шуранов Ю | 0.17h | 0.17h |
| 393 | 1.185.2 | контроль ремонт |  | 10min | 2026-05-04 09:10 A | 2026-05-04 09:20 A | 392FS+5d | 100% |  |  | start no earlier than 2026-04-27 08:00 | Шуранов Ю | 0.17h | 0.17h |
| 394 | 1.185.3 | нужно посмотреть парогенератор там релюха не щелкает- может разберешься, он находиться на складе у Веры |  | 2h | 2026-05-11 09:00 A | 2026-05-11 11:00 A |  | 100% |  |  | start no earlier than 2026-05-11 09:00 | Дедов В | 2h | 2h |
| 395 | 1.185.4 | орг ремонт по гарантии |  | 1h | 2026-05-13 09:00 A | 2026-05-13 10:00 A |  | 100% |  |  | start no earlier than 2026-05-13 09:00 | Шуранов Ю | 1h | 1h |
| 396 | 1.185.5 | контроль возврата |  | 1d? | 2026-06-05 09:00 A | 2026-06-05 18:00 A |  | 100% |  |  | start no earlier than 2026-06-05 09:00 | Шуранов Ю | 8h | 8h |
| 397 | 1.186 | проверить мотор-редуктор на накопительном столе фасовка и | manual | 4h | 2026-05-11 09:00 A | 2026-05-11 13:00 A |  | 100% |  |  | start no earlier than 2026-05-11 09:00 | Бундин В | 4h | 4h |
| 398 | 1.187 | прикрутить ножку на 2 столе (ножка у Луговских в кабинете) |  | 1h | 2026-05-12 09:00 A | 2026-05-12 10:00 A |  | 100% |  |  | start no earlier than 2026-05-12 08:00 | Бундин В | 1h | 1h |

| ID | WBS | Task | Duration | Start | Finish | Predecessors | Complete | Constraint | Resources | Work | Actual work |
| --- | --- | --- | --- | --- | --- | --- | --- | --- | --- | --- | --- |
| 399 | 1.188 | **отодвинуть миксер подачи сухого гидрализата, чтобы сыпал не на ребра барабана, а на обод выхода** | 0.38d | 2026-05-08 08:00 A | 2026-05-08 12:00 A |  | 100% |  |  | 3h | 3h |
| 400 | 1.188.1 | перекрутить платформу миксера подачи сухого гидрализата снизу, чтобы дуло не задевало барабан | 3h | 2026-05-08 08:00 A | 2026-05-08 12:00 A |  | 100% | start no earlier than 2026-05-08 08:00 | Макаревич А | 3h | 3h |
| 401 | 1.189 | монтаж светильник в районе ВРУ сверху (зона экструдера) | 2h | 2026-05-16 09:00 A | 2026-05-18 11:00 A |  | 100% | start no earlier than 2026-05-16 09:00 | Макаревич А | 2h | 2h |
| 402 | 1.190 | закрепить трубу п/п на фасовке в углу, где стеллаж на клипсы к стене | 1h | 2026-05-07 08:00 A | 2026-05-07 10:00 A |  | 100% | start no earlier than 2026-05-07 08:00 | Бобренок В | 1h | 1h |
| 403 | 1.191 | прикрутить пускатели запуска вытяжки перед лестницей на 2 этаж зона экструдера и розетки | 2h | 2026-05-06 08:00 A | 2026-05-06 11:00 A |  | 100% | start no earlier than 2026-05-06 08:00 | Бобренок В | 2h | 2h |
| 404 | 1.192 | нет напряжения в розетке для инсектицидного светильника, корридор где вывозят готовую продукцию | 1h | 2026-05-07 09:00 A | 2026-05-07 10:00 A |  | 100% | start no earlier than 2026-05-07 09:00 | Бобренок В | 1h | 1h |
| 405 | 1.193 | подключить через счетчик подачу жира | 2h | 2026-05-05 08:00 A | 2026-05-05 11:00 A |  | 100% | start no earlier than 2026-05-05 08:00 | Тимофеев В | 2h | 2h |
| 406 | 1.194 | **повесить на места светильники инсектицидные (замена ламп)** | 0.38d | 2026-05-05 09:00 A | 2026-05-05 12:00 A |  | 100% |  |  | 3h | 3h |
| 407 | 1.194.1 | заменить инсектицидные лампы в светильниках (количество, которое поменял -записать) | 3h | 2026-05-05 09:00 A | 2026-05-05 12:00 A |  | 100% | start no earlier than 2026-05-05 08:00 | Бундин В | 3h | 3h |
| 408 | 1.195 | на жиротопке установить газ лифты (они на складе) | 1h | 2026-05-05 08:00 A | 2026-05-05 10:00 A |  | 100% | start no earlier than 2026-05-05 08:00 | Бобренок В | 1h | 1h |
| 409 | 1.196 | **дверь вход в столовую вкрыть заглушки и установить личинку с ключами (взять на складе)** | 14.12d | 2026-05-13 09:00 A | 2026-06-02 10:00 A |  | 100% |  |  | 42.5h | 42.5h |
| 410 | 1.196.1 | заказать ручку / ответ | 30min | 2026-05-13 09:00 A | 2026-05-13 09:30 A |  | 100% | start no earlier than 2026-05-13 09:00 | Шуранов Ю | 0.5h | 0.5h |
| 411 | 1.196.2 | конроль | 5d | 2026-05-18 09:00 A | 2026-05-22 18:00 A | 410 | 100% | start no earlier than 2026-05-18 09:00 | Карабанов | 40h | 40h |
| 412 | 1.196.3 | замена | 1h | 2026-05-30 09:00 A | 2026-06-01 10:00 A | 411 | 100% | start no earlier than 2026-05-30 09:00 | Тимофеев В | 1h | 1h |
| 413 | 1.196.4 | перевернуть замок ручкой вверх, личика переворачивается в любую сторону | 1h | 2026-06-02 09:00 A | 2026-06-02 10:00 A |  | 100% | start no earlier than 2026-06-02 09:00 | Макаревич А | 1h | 1h |
| 414 | 1.197 | поставить шпонки на питатель в слесарке | 1h | 2026-05-04 09:00 A | 2026-05-04 10:00 A |  | 100% | start no earlier than 2026-05-04 08:00 | Тимофеев В | 1h | 1h |
| 415 | 1.198 | установить транспортер на 1 линии | 1h | 2026-05-04 08:00 A | 2026-05-04 10:00 A |  | 100% | start no earlier than 2026-05-04 08:00 | Дедов В | 1h | 1h |
| 416 | 1.199 | собрать транспортер ковшевой (валы приехали, фетр на складе) | 4h | 2026-04-30 08:00 A | 2026-04-30 13:00 A |  | 100% | start no earlier than 2026-04-30 08:00 | Дедов В | 4h | 4h |
| 417 | 1.200 | **со старой ленты снять ковши в слесарке** | 0.5d | 2026-05-05 09:00 A | 2026-05-05 13:00 A |  | 100% |  |  | 4h | 4h |
| 418 | 1.200.1 | подготовить ленту с ковшами (150 мм между ковшами) лента на складе 5120мм в кольце и унести на желтый склад | 4h | 2026-05-05 09:00 A | 2026-05-05 13:00 A |  | 100% | start no earlier than 2026-05-05 09:00 | Бундин В | 4h | 4h |
| 419 | 1.201 | **разбираем улитки циклон и печи, замена подшипников** | 1d? | 2026-06-03 09:00 A | 2026-06-03 18:00 A |  | 100% |  | Тимофеев В; Бундин В | 16h | 16h |
| 420 | 1.201.1 | проверка подшипников на улитках печей | 1d? | 2026-06-03 09:00 A | 2026-06-03 18:00 A |  | 100% | start no earlier than 2026-06-03 09:00 |  |  |  |
| 421 | 1.202 | ТО Теко 1,5 (чистка тен, смазка штоков пневмоцилиндров, подшипников) | 3h | 2026-04-28 09:00 A | 2026-04-28 12:00 A |  | 100% | start no earlier than 2026-04-28 09:00 | Дедов В | 3h | 3h |
| 422 | 1.203 | ТО Теко 0,4 (чистка тен, смазка штоков пневмоцилиндров, подшипников) | 3h | 2026-04-28 09:00 A | 2026-04-28 12:00 A |  | 100% | start no earlier than 2026-04-28 09:00 | Дедов В | 3h | 3h |
| 423 | 1.204 | полное ТО квадропака (чистка тен, смазка штоков пневмоцилиндров, шприцевание подшипников, протяжка болтовых соединений) | 3h | 2026-04-28 09:00 A | 2026-04-28 12:00 A |  | 100% | start no earlier than 2026-04-28 09:00 | Дедов В | 3h | 3h |

| ID | WBS | Task | Type | Duration | Start | Finish | Predecessors | Complete | Total slack | Free slack | Constraint | Resources | Work | Actual work |
| --- | --- | --- | --- | --- | --- | --- | --- | --- | --- | --- | --- | --- | --- | --- |
| 424 | 1.205 | **модернизация трассы слива зона мойки экструдеров** |  | 20d? | 2026-04-27 09:00 A | 2026-05-23 10:00 A |  | 100% |  |  |  |  | 15.5h | 15.5h |
| 425 | 1.205.1 | заявка соединения и гидрозатвор |  | 15min | 2026-04-27 09:00 A | 2026-04-27 09:15 A |  | 100% |  |  | start no earlier than 2026-04-27 08:00 | Шуранов Ю | 0.25h | 0.25h |
| 426 | 1.205.2 | контроль доставки |  | 15min | 2026-05-04 09:15 A | 2026-05-04 09:30 A | 425FS+5d | 100% |  |  | start no earlier than 2026-04-27 08:00 | Шуранов Ю | 0.25h | 0.25h |
| 427 | 1.205.3 | монтаж |  | 1d? | 2026-05-06 09:30 A | 2026-05-07 09:30 A | 426FS+2d | 100% |  |  | start no earlier than 2026-04-27 08:00 | Тимофеев В | 8h | 8h |
| 428 | 1.205.4 | заявка на бурить стену / получить счет |  | 1h | 2026-04-28 09:00 A | 2026-04-28 10:00 A |  | 100% |  |  | start no earlier than 2026-04-28 09:00 | Зорькин В | 1h | 1h |
| 429 | 1.205.5 | расчет угла бурения. Замер + зхарисовать схему |  | 4h | 2026-05-13 09:00 A | 2026-05-13 13:00 A | 428 | 100% |  |  | start no earlier than 2026-05-13 09:00 | Зорькин В | 4h | 4h |
| 430 | 1.205.6 | орг работу подрядчика по бурению |  | 1h | 2026-05-20 09:00 A | 2026-05-20 10:00 A | 429 | 100% |  |  | start no earlier than 2026-05-20 09:00 | Зорькин В | 1h | 1h |
| 431 | 1.205.7 | запенить стыки в месте бурения | manual | 1h | 2026-05-23 09:00 A | 2026-05-23 10:00 A |  | 100% |  |  | start no earlier than 2026-05-23 09:00 | Бобренок В | 1h | 1h |
| 432 | 1.206 | взять на складе 2 гофросифона и заменить на мойке экструдер |  | 1h | 2026-04-24 09:00 A | 2026-04-24 10:00 A |  | 100% |  |  | start no earlier than 2026-04-24 08:00 | Бундин В | 1h | 1h |
| 433 | 1.207 | заменить монтажную коробку на 150х200мм -она у них на стяжках. Коробка новая на складе | manual | 1h | 2026-04-26 09:00 A | 2026-04-26 10:00 A |  | 100% |  |  | start no earlier than 2026-04-26 09:00 | Бобренок В | 1h | 1h |
| 434 | 1.208 | под мойкой в зоне экструдера на слив 3 греющего кабеля, нужно разобраться |  | 1h | 2026-04-24 09:00 A | 2026-04-24 10:00 A |  | 100% |  |  | start no earlier than 2026-04-24 08:00 | Шуранов Ю | 1h | 1h |
| 435 | 1.209 | жиротопка течет сальник, проверить и устранить течи везде. Чистка фильтров. |  | 2h | 2026-04-28 09:00 A | 2026-04-28 11:00 A |  | 100% |  |  | start no earlier than 2026-04-28 09:00 | Тимофеев В | 2h | 2h |
| 436 | 1.210 | ТО печи линия 1 ( вскрыть, ревизия- замена перемычек и т.д.) |  | 4h | 2026-04-23 09:00 A | 2026-04-23 13:00 A |  | 100% |  |  | start no earlier than 2026-04-23 08:00 | Бундин В | 4h | 4h |
| 437 | 1.211 | протянуть кабель UTP от столя Луговских до шкафа серверного (расскажу как протянуть по звонку) |  | 4h | 2026-04-23 09:00 A | 2026-04-23 13:00 A |  | 100% |  |  | start no earlier than 2026-04-23 08:00 | Бундин В | 4h | 4h |
| 438 | 1.212 | **подключить приточку как было** |  | 0.25d | 2026-04-29 09:00 A | 2026-04-29 11:00 A |  | 100% |  |  |  | Дедов В | 4h | 4h |
| 439 | 1.212.1 | подключить сервопривод на шибер и подключить |  | 2h | 2026-04-29 09:00 A | 2026-04-29 11:00 A |  | 100% |  |  | start no earlier than 2026-04-29 09:00 | Дедов В | 2h | 2h |
| 440 | 1.213 | **замена ленты на транспортере тип 2 2 линия (дособрать)** |  | 1.5d | 2026-04-24 09:00 A | 2026-04-27 13:00 A |  | 100% |  |  |  |  | 6h | 6h |
| 441 | 1.213.1 | со снятой ленты транспортера тип 2 снять все ковши (готовим для замены на 1 линии) |  | 2h | 2026-04-24 09:00 A | 2026-04-24 11:00 A |  | 100% |  |  | start no earlier than 2026-04-24 09:00 | Бундин В | 2h | 2h |
| 442 | 1.213.2 | установка ковшей со старой ленты на новую со склада 400х 5120мм |  | 4h | 2026-04-25 09:00 A | 2026-04-27 13:00 A |  | 100% |  |  | start no earlier than 2026-04-25 09:00 | Макаревич А | 4h | 4h |
| 443 | 1.214 | **система угольной фильтрации вытяжных газов с печей и пневотранспорта** |  | 0.25d | 2026-04-21 09:00 A | 2026-04-21 11:00 A |  | 100% |  |  |  |  | 3h | 3h |
| 444 | 1.214.1 | подготовить пластины 200*200 5мм для анкерения колон к полу ф12 6шт |  | 2h | 2026-04-21 09:00 A | 2026-04-21 11:00 A |  | 100% |  |  | start no earlier than 2026-04-21 09:00 | Бундин В | 2h | 2h |
| 445 | 1.214.2 | подготовить пластины 100*100 5мм для анкерения колон к стене 8шт |  | 1h | 2026-04-21 09:00 A | 2026-04-21 10:00 A |  | 100% |  |  | start no earlier than 2026-04-21 09:00 | Бундин В | 1h | 1h |
| 446 | 1.215 | проверка фильтров воды с редуктором в прекондиционер на ТО |  | 1h | 2026-04-22 09:00 A | 2026-04-22 10:00 A |  | 100% |  |  | start no earlier than 2026-04-22 09:00 | Бундин В | 1h | 1h |
| 447 | 1.216 | **заменить фильтры на жиротопка** |  | 17.12d | 2026-09-14 09:00 | 2026-10-01 10:00 |  |  | 114.47d |  |  |  | 2.25h |  |
| 448 | 1.216.1 | выяснить тип фильтров, заказ катриджи |  | 1h | 2026-09-14 09:00 | 2026-09-14 10:00 |  |  | 121.31d | 0d | start no earlier than 2026-09-14 09:00 | Зорькин В | 1h |  |
| 449 | 1.216.2 | контроль |  | 15min | 2026-09-24 10:00 | 2026-09-24 10:15 | 448FS+10d |  | 121.31d | 6.84d | start no earlier than 2026-04-22 09:00 | Зорькин В | 0.25h |  |
| 450 | 1.216.3 | замена |  | 1h | 2026-10-01 09:00 | 2026-10-01 10:00 | 449 |  | 114.47d |  | start no earlier than 2026-10-01 09:00 | Бобренок В | 1h |  |
| 451 | 1.217 | проверить напряжение в розетке конатушка вывоза готовой продукции |  | 1h | 2026-04-19 09:00 A | 2026-04-20 10:00 A |  | 100% |  |  | start no earlier than 2026-04-19 09:00 | Дедов В | 1h | 1h |

| ID | WBS | Task | Duration | Start | Finish | Predecessors | Complete | Remaining | Total slack | Free slack | Constraint | Resources | Work | Actual work |
| --- | --- | --- | --- | --- | --- | --- | --- | --- | --- | --- | --- | --- | --- | --- |
| 452 | 1.218 | **обслуживание инсекьюеров, утлизация отработанных ламп** | 126.12d | 2026-04-21 08:00 A | 2026-10-05 10:00 |  | 98% | 2.82d | 112.47d |  |  |  | 89.5h | 87.5h |
| 453 | 1.218.1 | Составить список ламп по цехам и передать Зорькину | 2h | 2026-04-21 08:00 A | 2026-04-21 11:00 A |  | 100% |  |  |  | start no earlier than 2026-04-21 08:00 | Тимофеев В | 2h | 2h |
| 454 | 1.218.2 | Заказать новые лампы | 30min | 2026-04-21 10:00 A | 2026-04-21 10:30 A | 453 | 100% |  |  |  | start no earlier than 2026-04-21 08:00 | Зорькин В | 0.5h | 0.5h |
| 455 | 1.218.3 | доставка | 10d | 2026-04-21 10:30 A | 2026-05-05 10:30 A | 454 | 100% |  |  |  | start no earlier than 2026-04-21 08:00 | Карабанов | 80h | 80h |
| 456 | 1.218.4 | снять все светильники мухоловки, извлечь лампы, уложить аккуратно в коробку (оставить в слесарке отработанные) светильники снятые передать мастеру смены для мытья | 2h | 2026-05-05 10:30 A | 2026-05-05 12:30 A | 455 | 100% |  |  |  | start no earlier than 2026-05-01 09:00 | Бобренок В | 2h | 2h |
| 457 | 1.218.5 | после чистки установить лампы в светильники, тусклые замнеить | 2h | 2026-05-12 09:00 A | 2026-05-12 11:00 A | 456 | 100% |  |  |  | start no earlier than 2026-05-12 09:00 | Бундин В | 2h | 2h |
| 458 | 1.218.6 | сообщить кол-во замененных ламп нач цехов | 1h | 2026-05-12 11:00 A | 2026-05-12 12:00 A | 457 | 100% |  |  |  | start no earlier than 2026-05-01 09:00 | Шуранов Ю | 1h | 1h |
| 459 | 1.218.7 | запрос договор на утилизацию ламп | 1h | 2026-09-14 09:00 | 2026-09-14 10:00 |  |  |  | 131.34d | 18.88d | start no earlier than 2026-09-14 09:00 | Домоводов К | 1h |  |
| 460 | 1.218.8 | подготовить лампы к утилизации | 1h | 2026-10-05 09:00 | 2026-10-05 10:00 | 458, 459 |  |  | 112.47d |  | start no earlier than 2026-10-05 09:00 | Тимофеев В | 1h |  |
| 461 | 1.219 | **на 1 линии подготовить из оргстекла обратные крышки транспортера тип 2 (ковшевой), согласовать остановка с мастером и установить** | 0.12d | 2026-04-24 09:00 A | 2026-04-24 10:00 A |  | 100% |  |  |  |  | Бобренок В | 2h | 2h |
| 462 | 1.219.1 | перекрутить оргстекло (операторы подскажут в чем проблема) | 1h | 2026-04-24 09:00 A | 2026-04-24 10:00 A |  | 100% |  |  |  | start no earlier than 2026-04-24 09:00 | Бобренок В | 1h | 1h |
| 463 | 1.220 | проверить гидроаккумуляторы парогенераторов 1 и 2 линия и 100литровый в комнате стабилизации воды, если нужно качаем 2 очка. | 2h | 2026-04-19 09:00 A | 2026-04-20 11:00 A |  | 100% |  |  |  | start no earlier than 2026-04-19 09:00 | Макаревич А | 2h | 2h |
| 464 | 1.221 | проверка фильтров на редукторы экструдеров | 1h | 2026-04-24 09:00 A | 2026-04-24 10:00 A |  | 100% |  |  |  | start no earlier than 2026-04-24 09:00 | Тимофеев В | 1h | 1h |
| 465 | 1.222 | проверка токов, всех перемычек, шприцевание всех подшипников печи №2 | 3h | 2026-04-23 09:00 A | 2026-04-23 12:00 A |  | 100% |  |  |  | start no earlier than 2026-04-24 09:00 | Бобренок В | 3h | 3h |
| 466 | 1.223 | на питателе заменить втулки линия 1 и 2 | 2h | 2026-04-15 08:00 A | 2026-04-15 11:00 A |  | 100% |  |  |  | start no earlier than 2026-04-15 08:00 | Бобренок В | 2h | 2h |
| 467 | 1.224 | проверить радиатор приточки (протечки, есть ли подача горячей воды), если нет - выключить приточку, чтобы не разморозить! | 1h | 2026-04-14 09:00 A | 2026-04-14 10:00 A |  | 100% |  |  |  | start no earlier than 2026-04-14 08:00 | Труфанов А | 1h | 1h |
| 468 | 1.225 | приварить левую ногу мезонина на фасовке (штабелером сместили) | 1h | 2026-04-15 09:00 A | 2026-04-15 10:00 A |  | 100% |  |  |  | start no earlier than 2026-04-15 09:00 | Бобренок В | 1h | 1h |
| 469 | 1.226 | на печи №1 прошприцевать подшипники, проверить токи, если нужно вскрываем на ревизию перемычек | 3h | 2026-04-14 09:00 A | 2026-04-14 12:00 A |  | 100% |  |  |  | start no earlier than 2026-04-14 08:00 | Труфанов А | 3h | 3h |
| 470 | 1.227 | замена электродной группы на парогенераторе линия №1 (электроды подготовили в слесарке) | 4h | 2026-04-14 09:00 A | 2026-04-14 13:00 A |  | 100% |  |  |  | start no earlier than 2026-04-14 08:00 | Труфанов А | 4h | 4h |
| 471 | 1.228 | на квадропаке тена выставить в параллель | 1h | 2026-04-13 09:00 A | 2026-04-13 10:00 A |  | 100% |  |  |  | start no earlier than 2026-04-13 08:00 | Труфанов А | 1h | 1h |
| 472 | 1.229 | покрасить подиум под циклонами линия 1 и 2 | 2h | 2026-04-22 09:00 A | 2026-04-22 11:00 A |  | 100% |  |  |  | start no earlier than 2026-04-22 09:00 | Бундин В | 2h | 2h |
| 473 | 1.230 | подготовить лекало на приемный лоток транспортера тип 2 (у них в работе картонка, можно по ней и сделать), если будет остановка приварить | 1h | 2026-04-27 09:00 A | 2026-04-27 10:00 A |  | 100% |  |  |  | start no earlier than 2026-04-27 09:00 | Тимофеев В | 1h | 1h |
| 474 | 1.231 | на пнемоулитку поставить пистолет (зона экструдера) | 1h | 2026-04-11 09:00 A | 2026-04-13 10:00 A |  | 100% |  |  |  | start no earlier than 2026-04-11 09:00 | Макаревич А | 1h | 1h |
| 475 | 1.232 | установить фильтр на кондиционер между печками (фильтр у Луговских) | 1h | 2026-04-22 09:00 A | 2026-04-22 10:00 A |  | 100% |  |  |  | start no earlier than 2026-04-22 09:00 | Труфанов А | 1h | 1h |

| ID | WBS | Task | Type | Duration | Start | Finish | Predecessors | Complete | Actual start | Actual finish | Total slack | Constraint | Resources | Work | Actual work |
| --- | --- | --- | --- | --- | --- | --- | --- | --- | --- | --- | --- | --- | --- | --- | --- |
| 476 | 1.233 | **зафиксировать ручку в туалет (закрутить)** |  | 856.12d | 2023-03-22 09:00 A | 2026-04-22 10:00 |  | 100% |  | 2026-05-05 10:00 |  |  |  | 2h | 2h |
| 477 | 1.233.1 | заказать ручки |  | 1h | 2023-03-22 09:00 A | 2023-03-22 10:00 A |  | 100% |  |  |  |  | Шуранов Ю | 1h | 1h |
| 478 | 1.233.2 | установка (заменить ручку, взять на складе) |  | 1h | 2026-05-05 09:00 A | 2026-05-05 10:00 A |  | 100% |  |  |  | start no earlier than 2026-05-05 09:00 | Бобренок В | 1h | 1h |
| 479 | 1.234 | ТО теко 1,5 (чистка тен, смазка штоков пневмоцилиндров, подшипников) | manual | 3h | 2026-04-25 09:00 A | 2026-04-25 12:00 A |  | 100% |  |  |  | start no earlier than 2026-04-25 09:00 | Труфанов А | 3h | 3h |
| 480 | 1.235 | слить конденсат с компрессора, чистка фильтров и радиаторов | manual | 2h | 2026-04-12 09:00 A | 2026-04-12 11:00 A |  | 100% |  |  |  | start no earlier than 2026-04-12 09:00 | Макаревич А | 2h | 2h |
| 481 | 1.236 | **заказать газлифт жиротопка** |  | 11.12d? | 2026-04-22 09:00 A | 2026-05-06 10:00 |  | 100% |  | 2026-08-18 09:20 |  |  |  | 84.08h | 84.08h |
| 482 | 1.236.1 | доставка |  | 10d | 2026-04-22 09:00 A | 2026-05-05 18:00 A |  | 100% |  |  |  | start no earlier than 2026-04-22 09:00 | Карабанов | 80h | 80h |
| 483 | 1.236.2 | **установка газ лифт** |  | 69.04d | 2026-05-13 09:00 A | 2026-08-18 09:20 A |  | 100% |  |  |  |  |  | 4.08h | 4.08h |
| 484 | 1.236.2.1 | контроль поставки / размер |  | 20min | 2026-08-18 09:00 A | 2026-08-18 09:20 A |  | 100% |  |  |  | start no earlier than 2026-08-18 09:00 | Шуранов Ю | 0.33h | 0.33h |
| 485 | 1.236.2.2 | наварить уголок для площадки упора газлифта |  | 1h | 2026-05-13 09:00 A | 2026-05-13 10:00 A |  | 100% |  |  |  | start no earlier than 2026-05-13 09:00 | Труфанов А; Некрасов А | 2h | 2h |
| 486 | 1.236.2.3 | заявка газлифт с меньшей усилием/ выяснить координата |  | 30min | 2026-05-27 09:00 A | 2026-05-27 09:30 A |  | 100% |  |  |  | start no earlier than 2026-05-27 09:00 | Зорькин В | 0.5h | 0.5h |
| 487 | 1.236.2.4 | доставка контроль |  | 15min | 2026-08-12 09:00 A | 2026-08-12 09:15 A | 486FS+10d | 100% |  |  |  | start no earlier than 2026-05-13 09:00 | Зорькин В | 0.25h | 0.25h |
| 488 | 1.236.2.5 | замена |  | 1h | 2026-08-12 09:00 A | 2026-08-12 10:00 A |  | 100% |  |  |  | start no earlier than 2026-08-12 09:00 | Бобренок В | 1h | 1h |
| 489 | 1.237 | убрать диммер за еврокубом, где завозят навески (провода заизолировать и спрятать в кабель-канал) |  | 1h | 2026-04-10 08:00 A | 2026-04-10 10:00 A |  | 100% |  |  |  | start no earlier than 2026-04-10 08:00 | Бобренок В | 1h | 1h |
| 490 | 1.238 | закрыть монтажную коробку над дверью зона жиров выход |  | 1h | 2026-04-09 08:00 A | 2026-04-09 10:00 A |  | 100% |  |  |  | start no earlier than 2026-04-09 08:00 | Бобренок В | 1h | 1h |
| 491 | 1.239 | **на аппликаторе установить принтер (взять на складе)** |  | 3h? | 2026-04-10 09:00 | 2026-04-10 12:00 |  | 100% | 2026-04-09 08:00 | 2026-05-14 10:00 |  |  |  | 5h | 5h |
| 492 | 1.239.1 | монтаж витой пары от аппликатора до шкафа где вывозят ГП справа |  | 4h | 2026-04-09 08:00 A | 2026-04-09 13:00 A |  | 100% |  |  |  | start no earlier than 2026-04-09 08:00 | Бобренок В | 4h | 4h |
| 493 | 1.239.2 | тест принтера |  | 1h | 2026-05-14 09:00 A | 2026-05-14 10:00 A |  | 100% |  |  |  | start no earlier than 2026-05-14 09:00 | Зорькин В | 1h | 1h |
| 494 | 1.240 | замена шнек+гильзы (б/у) на 2 линии |  | 4h | 2026-04-09 08:00 A | 2026-04-09 13:00 A |  | 100% |  |  |  | start no earlier than 2026-04-09 08:00 | Тимофеев В | 4h | 4h |
| 495 | 1.241 | закрепить светильник в комнатке перед выходом, где вывозят готовую продукцию справа, оторвался | manual | 1h | 2026-04-08 09:00 A | 2026-04-08 10:00 A |  | 100% |  |  |  | start no earlier than 2026-04-08 08:00 | Бундин В | 1h | 1h |
| 496 | 1.242 | **замена лент на аппликаторе, подумать какой сделать отражатель для фотометки, чтобы не цепляло пакеты в работе** |  | 0.5d | 2026-05-27 09:00 | 2026-05-27 13:00 |  |  |  |  |  |  |  | 4h |  |
| 497 | 1.242.1 | замена ленеты |  | 4h | 2026-10-12 09:00 | 2026-10-12 13:00 |  |  |  |  | 107.09d | start no earlier than 2026-10-12 09:00 | Тимофеев В | 4h |  |
| 498 | 1.243 | подготовить электродную группу для парогенератора (собрать) |  | 2h | 2026-04-08 09:00 A | 2026-04-08 11:00 A |  | 100% |  |  |  | start no earlier than 2026-04-08 08:00 | Бундин В | 2h | 2h |
| 499 | 1.244 | **просыпается гранула на пересыпке с барабана в конвейер** |  | 0.5d | 2026-04-08 09:00 A | 2026-04-08 13:00 A |  | 100% |  |  |  |  |  | 6h | 6h |
| 500 | 1.244.1 | пододвинуть ближе к барабану конвейер + охладитель + вентилятор |  | 2h | 2026-04-08 09:00 A | 2026-04-08 11:00 A |  | 100% |  |  |  | start no earlier than 2026-04-08 09:00 | Бобренок В | 2h | 2h |
| 501 | 1.244.2 | доработка приемного лотка конвейера |  | 4h | 2026-04-08 09:00 A | 2026-04-08 13:00 A |  | 100% |  |  |  | start no earlier than 2026-04-08 09:00 | Некрасов А | 4h | 4h |
| 502 | 1.245 | забрать 2 рохли с пандуса, снять колеса в зип (зад- перед), а сами рохли в контейнер |  | 3h | 2026-04-04 09:00 A | 2026-04-06 12:00 A |  | 100% |  |  |  | start no earlier than 2026-04-04 09:00 | Труфанов А | 3h | 3h |

| ID | WBS | Task | Type | Duration | Start | Finish | Predecessors | Complete | Constraint | Resources | Work | Actual work |
| --- | --- | --- | --- | --- | --- | --- | --- | --- | --- | --- | --- | --- |
| 503 | 1.246 | **квадропак модернизация регулировки пластины нажима роликов для захвата пакета** |  | 2.12d | 2026-04-15 09:00 A | 2026-04-17 10:00 A |  | 100% |  |  | 3h | 3h |
| 504 | 1.246.1 | регулировочной тягой отвезти нажимную площадку на 5мм (остановить работу на 10 минут, согласовать с мастером) |  | 1h | 2026-04-17 09:00 A | 2026-04-17 10:00 A |  | 100% | start no earlier than 2026-04-17 09:00 | Бобренок В | 1h | 1h |
| 505 | 1.246.2 | изготовление пластины на ногу по аналогии как на первой ноге |  | 1h | 2026-04-15 09:00 A | 2026-04-15 10:00 A | 504 | 100% | start no earlier than 2026-04-15 09:00 | Бобренок В | 1h | 1h |
| 506 | 1.246.3 | монтаж |  | 1h | 2026-04-15 10:00 A | 2026-04-15 11:00 A | 505 | 100% | start no earlier than 2026-04-10 09:00 | Бобренок В | 1h | 1h |
| 507 | 1.247 | изготовить крышку на приямок слива канализации под раковинами зона экструдер. Из нерж, с ручкой. |  | 4h | 2026-04-02 08:00 A | 2026-04-02 13:00 A |  | 100% | start no earlier than 2026-04-02 08:00 | Бобренок В | 4h | 4h |
| 508 | 1.248 | выпрямить погнутые роль-ворота на рампе - в сторону слесарки (нужно откутить левую направляшку и вставить воротину на место) |  | 1h | 2026-04-02 08:00 A | 2026-04-02 10:00 A |  | 100% | start no earlier than 2026-04-02 08:00 | Бобренок В | 1h | 1h |
| 509 | 1.249 | **выключатель света на входе в гидролизатную закрепить сам рычаг переключения, проскальзывает** |  | 15.12d | 2026-04-06 09:00 A | 2026-04-27 10:00 A |  | 100% |  | Макаревич А | 123h | 123h |
| 510 | 1.249.1 | заказать выключатель |  | 1h | 2026-04-06 09:00 A | 2026-04-06 10:00 A |  | 100% | start no earlier than 2026-04-06 08:00 | Шуранов Ю | 1h | 1h |
| 511 | 1.249.2 | замена выключателя (выключатель в слесарке тебе показывал) |  | 1h | 2026-04-25 09:00 A | 2026-04-27 10:00 A |  | 100% | start no earlier than 2026-04-25 09:00 | Бобренок В | 1h | 1h |
| 512 | 1.250 | на пандусе 1 цеха справа - пометить шнеки и гильзы что они рабочие и вывести в контейнер |  | 2h | 2026-04-01 08:00 A | 2026-04-01 11:00 A |  | 100% | start no earlier than 2026-04-01 08:00 | Бобренок В | 2h | 2h |
| 513 | 1.251 | взять с контейнера пысос- проверить рабочий или нет (если работает выдать в 1 цех) |  | 2h | 2026-04-01 08:00 A | 2026-04-01 11:00 A |  | 100% | start no earlier than 2026-04-01 08:00 | Бобренок В | 2h | 2h |
| 514 | 1.252 | заменить плату интерфейса RS485 |  | 1h | 2026-04-04 09:00 A | 2026-04-06 10:00 A |  | 100% | start no earlier than 2026-04-04 09:00 | Труфанов А | 1h | 1h |
| 515 | 1.253 | замена шнеки 1 линия |  | 4h | 2026-03-31 08:00 A | 2026-03-31 13:00 A |  | 100% | start no earlier than 2026-03-31 08:00 | Тимофеев В; Бобренок В | 8h | 8h |
| 516 | 1.254 | замер износ шнеков |  | 1h | 2026-03-31 08:00 A | 2026-03-31 10:00 A |  | 100% | start no earlier than 2026-03-31 08:00 | Тимофеев В; Бобренок В; Зорькин В | 3h | 3h |
| 517 | 1.255 | почистить канальные вентиляторы вытяжки в курилке |  | 2h | 2026-03-28 09:00 A | 2026-03-30 11:00 A |  | 100% | start no earlier than 2026-03-28 09:00 | Бундин В | 2h | 2h |
| 518 | 1.256 | монтаж розетки на ногу нотис справа для подключения весов |  | 2h | 2026-03-27 09:00 A | 2026-03-27 11:00 A |  | 100% | start no earlier than 2026-03-27 09:00 | Труфанов А | 2h | 2h |
| 519 | 1.257 | добавить вибрации на виброохладителе линия 2 (согласовать с мастером, если будет остановка) |  | 2h | 2026-04-30 09:00 A | 2026-04-30 11:00 A | 528 | 100% |  | Бундин В | 2h | 2h |
| 520 | 1.258 | **замена ленты конвейер 2 линия 2** |  | 12.38d | 2026-04-07 09:00 A | 2026-04-23 12:00 A |  | 100% |  |  | 15h | 15h |
| 521 | 1.258.1 | взять ленту 400мм и начать крепить ковши для транспортера тип 2 (посчитать количество на транспортере) | manual | 9h | 2026-04-07 09:00 A | 2026-04-08 10:00 A |  | 100% | start no earlier than 2026-04-07 09:00 | Тимофеев В | 9h | 9h |
| 522 | 1.258.2 | замена ленты |  | 3h | 2026-04-23 09:00 A | 2026-04-23 12:00 A |  | 100% | start no earlier than 2026-04-23 09:00 | Тимофеев В; Бундин В | 6h | 6h |
| 523 | 1.259 | заменить на штабелере второй АКБ в зоне экструдера |  | 1h | 2026-03-28 09:00 A | 2026-03-30 10:00 A |  | 100% | start no earlier than 2026-03-28 09:00 | Дедов В | 1h | 1h |
| 524 | 1.260 | на кпп №1 опустить на 10см кабель в гофре для камер видеонаблюдения | manual | 2h | 2026-03-28 09:00 A | 2026-03-28 11:00 A |  | 100% | start no earlier than 2026-03-28 09:00 | Бундин В | 2h | 2h |
| 525 | 1.261 | вход охладителя 1 линии - нужно на среднем лотке между уровнями сделать сбоков шторки (фото скину) |  | 2h | 2026-03-28 09:00 A | 2026-03-30 11:00 A |  | 100% | start no earlier than 2026-03-28 09:00 | Бундин В | 2h | 2h |
| 526 | 1.262 | на первой линии под выходом из печи прикрутить на стенку оргстекло (Слава готовил по размерам оргстекло) |  | 1h | 2026-03-28 09:00 A | 2026-03-30 10:00 A |  | 100% | start no earlier than 2026-03-28 09:00 | Труфанов А | 1h | 1h |
| 527 | 1.263 | На пробниках оторвали разъем питания, нужно припаять |  | 2h | 2026-03-27 09:00 A | 2026-03-27 11:00 A |  | 100% | start no earlier than 2026-03-27 09:00 | Дедов В | 2h | 2h |
| 528 | 1.264 | подготовить 1 ленты с ковшами для транспортера тип 2 (зип) |  | 1d? | 2026-04-29 09:00 A | 2026-04-29 18:00 A |  | 100% | start no earlier than 2026-04-29 09:00 | Шуранов Ю | 8h | 8h |
| 529 | 1.265 | замена на старые капролонновые втулки в питателе линия 1 |  | 1h | 2026-03-26 09:00 A | 2026-03-26 10:00 A |  | 100% | start no earlier than 2026-03-26 09:00 | Тимофеев В | 1h | 1h |
| 530 | 1.266 | сделать на 2 линии вставыш на ленту транспортера тип 2 и установить на транспортер |  | 4h | 2026-03-25 09:00 A | 2026-03-25 13:00 A |  | 100% | start no earlier than 2026-03-25 09:00 | Некрасов А; Бобренок В | 8h | 8h |
| 531 | 1.267 | герметизация мезонина подачи навесок по шву |  | 1h | 2026-04-15 09:00 A | 2026-04-15 10:00 A |  | 100% | start no earlier than 2026-04-15 09:00 | Бобренок В | 1h | 1h |

| ID | WBS | Task | Type | Duration | Start | Finish | Complete | Remaining | Actual start | Actual finish | Constraint | Resources | Work | Actual work |
| --- | --- | --- | --- | --- | --- | --- | --- | --- | --- | --- | --- | --- | --- | --- |
| 532 | 1.268 | **на 2 линии на хомуты закрепить горловину к бункеру подачи сухого гидрализата (все расскажу)** |  | 0.25d | 2026-04-27 09:00 A | 2026-04-27 11:00 A | 100% |  |  |  |  | Некрасов А | 4h | 4h |
| 533 | 1.268.1 | на горловине подачи сухого гидрализата приварить выход под углом 45 градусов (углы из нерж есть в 3 цехе) |  | 2h | 2026-04-27 09:00 A | 2026-04-27 11:00 A | 100% |  |  |  | start no earlier than 2026-04-27 09:00 | Макаревич А | 2h | 2h |
| 534 | 1.269 | **разобрать с двух сторон питатель 2 линия - ревизия шестеренок и втулок спереди (оставить все разобранное)** |  | 2h | 2026-03-24 09:00 | 2026-03-24 11:00 | 100% |  | 2026-03-26 09:00 | 2026-03-26 11:00 |  |  | 2h | 2h |
| 535 | 1.269.1 | собрать питатель, ревизия втулок, подшипников, шнеков, шестеренок. Подогнать капролонновые втулки |  | 2h | 2026-03-26 09:00 A | 2026-03-26 11:00 A | 100% |  |  |  | start no earlier than 2026-03-26 09:00 | Тимофеев В | 2h | 2h |
| 536 | 1.270 | пульт управления кондиционером в зоне экструдера- закрепить гофру и заизолировать разрыв гофры, закрепить к стенке |  | 1h | 2026-03-24 08:00 A | 2026-03-24 10:00 A | 100% |  |  |  | start no earlier than 2026-03-24 08:00 | Бобренок В | 1h | 1h |
| 537 | 1.271 | блок питания для весов на жирах развалился, стянуть изолентой |  | 1h | 2026-03-24 08:00 A | 2026-03-24 10:00 A | 100% |  |  |  | start no earlier than 2026-03-24 08:00 | Бобренок В | 1h | 1h |
| 538 | 1.272 | **ремонт /отключить 2 вентилятора охладитель 1 линия** |  | 801d | 2023-06-21 09:00 A | 2026-07-15 18:00 A | 100% |  |  |  |  | Тимофеев В | 12801h | 12801h |
| 539 | 1.272.1 | заказать в зип |  | 6392h | 2023-06-21 09:00 A | 2026-07-15 18:00 A | 100% |  |  |  |  | Шуранов Ю | 6392h | 6392h |
| 540 | 1.272.2 | заменить 2 вентилятора |  | 1h | 2026-04-04 09:00 A | 2026-04-06 10:00 A | 100% |  |  |  |  | Макаревич А | 1h | 1h |
| 541 | 1.273 | демонтаж крышка лотка в проеме между краем площадки вентиляции приточной и проемом ворот вход в кооридор завода навесок |  | 383520min | 2023-06-21 09:00 A | 2026-07-15 18:00 A | 100% |  |  |  |  | Труфанов А | 6392h | 6392h |
| 542 | 1.274 | стук шнек 2 линия - проверить, при необходимости разобрать |  | 3h | 2026-04-27 09:00 A | 2026-04-27 12:00 A | 100% |  |  |  | start no earlier than 2026-04-27 09:00 | Тимофеев В; Бобренок В | 6h | 6h |
| 543 | 1.275 | слить конденсат и продуть все радиаторы компрессор |  | 1h | 2026-03-21 09:00 A | 2026-03-23 10:00 A | 100% |  |  |  | start no earlier than 2026-03-21 09:00 | Дедов В | 1h | 1h |
| 544 | 1.276 | закрепить аварийную кнопку в гидролизатной (фото в чате будет) / пожарный выключатель |  | 1h | 2026-03-22 09:00 A | 2026-03-23 10:00 A | 100% |  |  |  | start no earlier than 2026-03-22 09:00 | Бобренок В | 1h | 1h |
| 545 | 1.277 | кнопки на управление ворот зона жиров поднять и закпепить выше |  | 2h | 2026-03-18 08:00 A | 2026-03-18 11:00 A | 100% |  |  |  | start no earlier than 2026-03-18 08:00 | Макаревич А | 2h | 2h |
| 546 | 1.278 | закрепить все отбойники где завозят навески экструдерщики |  | 2h | 2026-03-18 08:00 A | 2026-03-18 11:00 A | 100% |  |  |  | start no earlier than 2026-03-18 08:00 | Макаревич А | 2h | 2h |
| 547 | 1.279 | закрыить все электро шкафы |  | 30min | 2026-03-17 08:00 A | 2026-03-17 09:30 A | 100% |  |  |  | start no earlier than 2026-03-17 08:00 | Бобренок В | 0.5h | 0.5h |
| 548 | 1.280 | поломоечная машинка устранить течь |  | 1h | 2026-03-17 08:00 A | 2026-03-17 10:00 A | 100% |  |  |  | start no earlier than 2026-03-17 08:00 | Бобренок В | 1h | 1h |
| 549 | 1.281 | закрыить крышку на пробниках, задняя стенка прикрутить |  | 30min | 2026-03-17 08:00 A | 2026-03-17 09:30 A | 100% |  |  |  | start no earlier than 2026-03-17 08:00 | Бобренок В | 0.5h | 0.5h |
| 550 | 1.282 | продувка кабельного лотка |  | 2h | 2026-03-18 09:00 A | 2026-03-18 11:00 A | 100% |  |  |  | start no earlier than 2026-03-18 09:00 | Труфанов А; Некрасов А | 4h | 4h |
| 551 | 1.283 | монтаж крючков под халаты. Получить у мастера |  | 1h | 2026-03-17 08:00 A | 2026-03-17 10:00 A | 100% |  |  |  | start no earlier than 2026-03-17 08:00 | Бобренок В | 1h | 1h |
| 552 | 1.284 | **установить расходомеры пара на ПГ** |  | 0.38d | 2026-04-01 09:00 | 2026-04-01 12:00 |  | 0.38d | 2026-10-07 09:00 |  |  |  | 3h |  |
| 553 | 1.284.1 | монтаж 1 линия расходомер / кабель / блок питания | manual | 3h | 2026-10-07 09:00 A | 2026-10-07 12:00 |  | 3h |  |  | start no earlier than 2026-10-07 09:00 | Некрасов А | 3h |  |
| 554 | 1.285 | **монтаж регистратор данных линия 1 и 2:** |  | 0.25d | 2026-03-18 09:00 A | 2026-03-18 11:00 A | 100% |  |  |  |  |  | 2h | 2h |
| 555 | 1.285.1 | подключение линия 1 |  | 2h | 2026-03-18 09:00 A | 2026-03-18 11:00 A | 100% |  |  |  | start no earlier than 2026-03-18 09:00 | Домоводов К | 2h | 2h |

| ID | WBS | Task | Type | Duration | Start | Finish | Predecessors | Complete | Remaining | Total slack | Free slack | Constraint | Resources | Work | Actual work |
| --- | --- | --- | --- | --- | --- | --- | --- | --- | --- | --- | --- | --- | --- | --- | --- |
| 556 | 1.286 | **разделить воду в экструдер и парогенераторы** |  | 119.44d | 2026-03-19 09:00 A | 2026-09-02 12:30 |  | 90% | 11.69d | 142.16d |  |  |  | 117.5h | 106h |
| 557 | 1.286.1 | заявка поплавкой клапан вертикальный, подводка с боку по аналогии с 4ц |  | 1h | 2026-03-19 09:00 A | 2026-03-19 10:00 A |  | 100% |  |  |  | start no earlier than 2026-03-19 08:00 | Зорькин В | 1h | 1h |
| 558 | 1.286.2 | доставка |  | 10d | 2026-03-19 10:00 A | 2026-04-02 10:00 A | 557 | 100% |  |  |  | start no earlier than 2026-03-19 08:00 | Карабанов | 80h | 80h |
| 559 | 1.286.3 | испытать производсительность маленького черн насоса с "медленным" счетким |  | 2h | 2026-05-20 09:00 A | 2026-05-20 11:00 A |  | 100% |  |  |  | start no earlier than 2026-05-20 09:00 | Тимофеев В | 2h | 2h |
| 560 | 1.286.4 | изготовить емкость для поплавкой камеры и насоса из нерж |  | 4h | 2026-04-27 09:00 A | 2026-04-27 13:00 A |  | 100% |  |  |  | start no earlier than 2026-04-27 09:00 | Макаревич А | 4h | 4h |
| 561 | 1.286.5 | доставка частотный 220 контроль | milestone | 0d | 2026-04-24 09:00 A | 2026-04-24 09:00 A |  | 100% |  |  |  | start no earlier than 2026-04-24 09:00 | Зорькин В |  |  |
| 562 | 1.286.6 | испытать регулирование насоса на частотнике |  | 1h | 2026-05-26 09:00 A | 2026-05-26 10:00 A |  | 100% |  |  |  | start no earlier than 2026-05-26 09:00 | Дедов В | 1h | 1h |
| 563 | 1.286.7 | монтаж насоса + бак нерж на линия 2 |  | 1h | 2026-05-27 09:00 A | 2026-05-27 10:00 A |  | 100% |  |  |  | start no earlier than 2026-05-27 09:00 | Тимофеев В | 1h | 1h |
| 564 | 1.286.8 | монтаж розетка, кабель до насаса, подключение двигатель насоса |  | 1h | 2026-05-27 09:00 A | 2026-05-27 10:00 A |  | 100% |  |  |  | start no earlier than 2026-05-27 09:00 | Бундин В | 1h | 1h |
| 565 | 1.286.9 | подключение насос + счетчик + кран + частотник - сборка схема с байпасом на мал насосе |  | 2h | 2026-08-11 09:00 A | 2026-08-11 11:00 A |  | 100% |  |  |  | start no earlier than 2026-08-11 09:00 | Тимофеев В | 2h | 2h |
| 566 | 1.286.10 | установить счетчик в линию |  | 1h | 2026-08-12 09:00 A | 2026-08-12 10:00 A |  | 100% |  |  |  | start no earlier than 2026-08-12 09:00 | Тимофеев В | 1h | 1h |
| 567 | 1.286.11 | испытания производительности и регулировки |  | 1h | 2026-08-12 09:00 A | 2026-08-12 10:00 A |  | 100% |  |  |  | start no earlier than 2026-08-12 09:00 | Тимофеев В | 1h | 1h |
| 568 | 1.286.12 | тестирование работы при обновленном SSID |  | 1h | 2026-08-19 09:00 A | 2026-08-19 10:00 A |  | 100% |  |  |  | start no earlier than 2026-08-19 09:00 | Домоводов К | 1h | 1h |
| 569 | 1.286.13 | **монтаж на линия 1** |  | 18.44d | 2026-08-07 09:00 | 2026-09-02 12:30 |  |  |  | 142.16d |  |  |  | 11.5h |  |
| 570 | 1.286.13.1 | заявка на счетчик, насос, 3х ход клапан, фитинги, канистра |  | 1h | 2026-08-07 09:00 | 2026-08-07 10:00 |  |  |  | 142.16d | 0d | start no earlier than 2026-08-07 09:00 | Зорькин В | 1h |  |
| 571 | 1.286.13.2 | контроль поставки |  | 30min | 2026-08-28 10:00 | 2026-08-28 10:30 | 570FS+15d |  |  | 142.16d | 0d | start no earlier than 2026-08-12 09:00 | Зорькин В | 0.5h |  |
| 572 | 1.286.13.3 | сборка корпус |  | 4h | 2026-08-31 10:30 | 2026-08-31 15:30 | 571FS+1d |  |  | 142.16d | 0d | start no earlier than 2026-08-12 09:00 | Тимофеев В | 4h |  |
| 573 | 1.286.13.4 | монтаж линия 1 |  | 6h | 2026-09-01 15:30 | 2026-09-02 12:30 | 572FS+1d |  |  | 142.16d |  | start no earlier than 2026-08-12 09:00 | Тимофеев В | 6h |  |
| 574 | 1.286.14 | подключть конденсатор к насосу, запуск системы |  | 1h | 2026-05-27 08:00 A | 2026-05-27 10:00 A |  | 100% |  |  |  | start no earlier than 2026-05-27 08:00 | Дедов В | 1h | 1h |
| 575 | 1.286.15 | подготовить емкость нерж (попловок, сгон) для подключения к насосу |  | 4h | 2026-05-26 09:00 A | 2026-05-26 13:00 A |  | 100% |  |  |  | start no earlier than 2026-05-26 09:00 | Бундин В | 4h | 4h |
| 576 | 1.286.16 | испытать насос на часотоном приводе |  | 2h | 2026-05-19 09:00 A | 2026-05-19 11:00 A | 561 | 100% |  |  |  | start no earlier than 2026-05-20 09:00 | Тимофеев В | 2h | 2h |
| 577 | 1.286.17 | перенос с 3й линии бак с насосом, установка на линия 2 |  | 4h | 2026-04-08 09:00 A | 2026-04-08 13:00 A | 560 | 100% |  |  |  | start no earlier than 2026-04-08 09:00 | Некрасов А | 4h | 4h |
| 578 | 1.287 | бойлер на экструдере - установить трубку на клапан сброса и смонтировать её ы раковину |  | 1h | 2026-03-14 09:00 A | 2026-03-16 10:00 A |  | 100% |  |  |  | start no earlier than 2026-03-14 09:00 | Бундин В | 1h | 1h |
| 579 | 1.288 | смазать дверную ручку (входную) |  | 1h | 2026-03-15 09:00 A | 2026-03-16 10:00 A |  | 100% |  |  |  | start no earlier than 2026-03-15 09:00 | Бундин В | 1h | 1h |
| 580 | 1.289 | сделать ручку дверную (вход на упаковку) |  | 1h | 2026-03-15 09:00 A | 2026-03-16 10:00 A |  | 100% |  |  |  | start no earlier than 2026-03-15 09:00 | Бундин В | 1h | 1h |
| 581 | 1.290 | дверная ручка в туалет (подкрутить) |  | 1h | 2026-03-15 09:00 A | 2026-03-16 10:00 A |  | 100% |  |  |  | start no earlier than 2026-03-15 09:00 | Бундин В | 1h | 1h |
| 582 | 1.291 | штабелер экструдера натянуть цепь |  | 1h | 2026-03-13 08:00 A | 2026-03-13 10:00 A |  | 100% |  |  |  | start no earlier than 2026-03-13 08:00 | Дедов В | 1h | 1h |
| 583 | 1.292 | установить розетку возле роутера. Место монтажа фото от Шуранова |  | 2h | 2026-03-14 09:00 A | 2026-03-16 11:00 A |  | 100% |  |  |  | start no earlier than 2026-03-14 09:00 | Бундин В | 2h | 2h |
| 584 | 1.293 | линия 1 лоток охладителя под конвейером (по фото) - поднять на 3см, что бы не цеплял сетку. Снять / пересверлить крепеж |  | 2h | 2026-03-14 09:00 A | 2026-03-16 11:00 A |  | 100% |  |  |  | start no earlier than 2026-03-14 09:00 | Бундин В | 2h | 2h |
| 585 | 1.294 | изготовтиь полочку для роутера с "крышей. Двух скатная". |  | 4h | 2026-03-14 09:00 A | 2026-03-16 13:00 A |  | 100% |  |  |  | start no earlier than 2026-03-14 09:00 | Бундин В | 4h | 4h |

| ID | WBS | Task | Type | Duration | Start | Finish | Predecessors | Complete | Remaining | Actual start | Total slack | Constraint | Resources | Work | Actual work |
| --- | --- | --- | --- | --- | --- | --- | --- | --- | --- | --- | --- | --- | --- | --- | --- |
| 586 | 1.295 | **АКБ штабелер на навесках** |  | 43d | 2026-03-13 08:00 A | 2026-05-12 18:00 A |  | 100% |  |  |  |  |  | 2h | 2h |
| 587 | 1.295.1 | заявка на новые АКБ, отправить | milestone | 0d | 2026-03-13 08:00 A | 2026-03-13 08:00 A |  | 100% |  |  |  | start no earlier than 2026-03-13 08:00 | Шуранов Ю |  |  |
| 588 | 1.295.2 | получить счет | milestone | 0d | 2026-03-16 09:00 A | 2026-03-16 09:00 A | 587 | 100% |  |  |  | start no earlier than 2026-03-16 09:00 | Шуранов Ю |  |  |
| 589 | 1.295.3 | доставыка\ |  | 40d | 2026-03-16 09:00 A | 2026-05-12 18:00 A | 588 | 100% |  |  |  | start no earlier than 2026-03-13 08:00 |  |  |  |
| 590 | 1.295.4 | замена (получить на складе 2 АКБ и поменять на штабелере) |  | 2h | 2026-03-25 09:00 A | 2026-03-25 11:00 A |  | 100% |  |  |  | start no earlier than 2026-03-25 09:00 | Бобренок В | 2h | 2h |
| 591 | 1.296 | замена шнеков на 1 линии по команде. Подготовить / старые увезти |  | 1h | 2026-03-14 09:00 A | 2026-03-16 10:00 A |  | 100% |  |  |  | start no earlier than 2026-03-14 09:00 | Бобренок В; Некрасов А | 2h | 2h |
| 592 | 1.297 | **установить принтер датаматрикс на пролистыватель** |  | 151d? | 2026-03-13 09:00 A | 2026-09-30 18:00 |  | 20% | 120.8d? |  | 114.59d |  |  | 11h | 3h |
| 593 | 1.297.1 | разработка крепления принтера |  | 1h | 2026-03-13 09:00 A | 2026-03-13 10:00 A |  | 100% |  |  |  | start no earlier than 2026-03-13 08:00 | Зорькин В; Шуранов Ю | 2h | 2h |
| 594 | 1.297.2 | настройка ПО с агрегатором |  | 1d? | 2026-09-30 09:00 | 2026-09-30 18:00 |  |  |  |  | 114.59d | start no earlier than 2026-09-30 09:00 | Домоводов К | 8h |  |
| 595 | 1.297.3 | изучение документации |  | 1h | 2026-05-28 09:00 A | 2026-05-28 10:00 A |  | 100% |  |  |  | start no earlier than 2026-05-28 09:00 | Домоводов К | 1h | 1h |
| 596 | 1.298 | **заменить мятый профлист коррдиор подачи навесок** |  | 32.25d | 2026-03-13 09:00 A | 2026-04-28 11:00 A |  | 100% |  |  |  |  |  | 85h | 85h |
| 597 | 1.298.1 | расчет материал / заявка |  | 1h | 2026-03-13 09:00 A | 2026-03-13 10:00 A |  | 100% |  |  |  | start no earlier than 2026-03-13 09:00 | Шуранов Ю | 1h | 1h |
| 598 | 1.298.2 | доставка |  | 10d | 2026-03-13 10:00 A | 2026-03-27 10:00 A | 597 | 100% |  |  |  | start no earlier than 2026-03-12 08:00 | Карабанов | 80h | 80h |
| 599 | 1.298.3 | замена |  | 2h | 2026-04-28 09:00 A | 2026-04-28 11:00 A | 598 | 100% |  |  |  | start no earlier than 2026-04-28 09:00 | Некрасов А; Труфанов А | 4h | 4h |
| 600 | 1.299 | **заменить плинтус стена вдольпечи 2** |  | 11.06d? | 2026-03-26 09:00 | 2026-04-10 09:30 |  | 91% | 1d? | 2026-03-13 09:00 |  |  |  | 96.5h | 80.5h |
| 601 | 1.299.1 | заявка |  | 30min | 2026-03-13 09:00 A | 2026-03-13 09:30 A |  | 100% |  |  |  | start no earlier than 2026-03-13 09:00 | Шуранов Ю | 0.5h | 0.5h |
| 602 | 1.299.2 | доставка |  | 10d | 2026-03-13 09:30 A | 2026-03-27 09:30 A | 601 | 100% |  |  |  | start no earlier than 2026-03-12 08:00 | Карабанов | 80h | 80h |
| 603 | 1.299.3 | замена |  | 1d? | 2026-10-06 09:00 | 2026-10-06 18:00 | 602 |  |  |  | 110.59d | start no earlier than 2026-10-06 09:00 | Некрасов А; Олег | 16h |  |
| 604 | 1.300 | **заменить аллюминевый скотч на швах вентиляции** |  | 18.25d | 2026-03-12 09:00 A | 2026-04-07 11:00 A |  | 100% |  |  |  |  |  | 82.33h | 82.33h |
| 605 | 1.300.1 | заявка |  | 20min | 2026-03-12 09:00 A | 2026-03-12 09:20 A |  | 100% |  |  |  | start no earlier than 2026-03-12 08:00 | Зорькин В | 0.33h | 0.33h |
| 606 | 1.300.2 | доставка |  | 10d | 2026-03-12 09:20 A | 2026-03-26 09:20 A | 605 | 100% |  |  |  | start no earlier than 2026-03-12 08:00 | Карабанов | 80h | 80h |
| 607 | 1.300.3 | замена (также на улитках печей, циклона, стык регулировки шибера улитки) | manual | 2h | 2026-04-07 09:00 A | 2026-04-07 11:00 A | 606 | 100% |  |  |  | start no earlier than 2026-04-07 09:00 | Бундин В | 2h | 2h |
| 608 | 1.301 | **замена скорлупа утеплитель горячих труб печи** |  | 16d | 2026-03-13 09:00 A | 2026-04-05 11:00 A |  | 100% |  |  |  |  |  | 83h | 83h |
| 609 | 1.301.1 | заявка |  | 1h | 2026-03-13 09:00 A | 2026-03-13 10:00 A |  | 100% |  |  |  | start no earlier than 2026-03-13 09:00 | Зорькин В | 1h | 1h |
| 610 | 1.301.2 | доставка |  | 10d | 2026-03-13 10:00 A | 2026-03-27 10:00 A | 609 | 100% |  |  |  | start no earlier than 2026-03-12 08:00 | Карабанов | 80h | 80h |
| 611 | 1.301.3 | замена | manual | 2h | 2026-04-05 09:00 A | 2026-04-05 11:00 A | 610 | 100% |  |  |  | start no earlier than 2026-04-05 09:00 | Бундин В | 2h | 2h |

| ID | WBS | Task | Type | Duration | Start | Finish | Predecessors | Complete | Actual start | Actual finish | Constraint | Resources | Work | Actual work |
| --- | --- | --- | --- | --- | --- | --- | --- | --- | --- | --- | --- | --- | --- | --- |
| 612 | 1.302 | **купить прокатный запайщик** |  | 85.12d? | 2026-03-16 09:00 A | 2026-07-13 10:00 A |  | 100% |  |  |  |  | 11h | 11h |
| 613 | 1.302.1 | поиск / заявка |  | 2h | 2026-03-16 09:00 A | 2026-03-16 11:00 A |  | 100% |  |  | start no earlier than 2026-03-16 09:00 | Зорькин В | 2h | 2h |
| 614 | 1.302.2 | получить счет + договор |  | 1h | 2026-05-12 09:00 A | 2026-05-12 10:00 A | 613 | 100% |  |  | start no earlier than 2026-05-12 09:00 | Зорькин В | 1h | 1h |
| 615 | 1.302.3 | оплата | milestone | 0d | 2026-05-12 10:00 A | 2026-05-12 10:00 A | 614 | 100% |  |  | start no earlier than 2026-03-12 08:00 | Домоводов К |  |  |
| 616 | 1.302.4 | доставка |  | 40d | 2026-05-12 10:00 A | 2026-07-13 10:00 A | 615 | 100% |  |  | start no earlier than 2026-03-12 08:00 |  |  |  |
| 617 | 1.302.5 | приемка / сборка |  | 1d? | 2026-06-29 09:00 A | 2026-06-29 18:00 A | 616 | 100% |  |  | start no earlier than 2026-03-12 08:00 | Тимофеев В | 8h | 8h |
| 618 | 1.303 | сборка рохли 2шт |  | 1h | 2026-03-13 09:00 A | 2026-03-13 10:00 A |  | 100% |  |  | start no earlier than 2026-03-13 09:00 | Тимофеев В | 1h | 1h |
| 619 | 1.304 | изготовить герметичную крышку на подачку гидролизата |  | 2h | 2026-05-20 09:00 A | 2026-05-20 11:00 A |  | 100% |  |  | start no earlier than 2026-05-20 09:00 | Дедов В; Шуранов Ю | 4h | 4h |
| 620 | 1.305 | **установить крышку печи торцевую с стороны экструдера на шарниры** |  | 12.5d | 2026-03-25 09:00 | 2026-04-10 13:00 |  | 100% | 2026-03-06 09:00 | 2026-09-11 13:00 |  |  | 88.08h | 88.08h |
| 621 | 1.305.1 | заказ шарниры |  | 5min | 2026-03-06 09:00 A | 2026-03-06 09:05 A |  | 100% |  |  | start no earlier than 2026-03-06 08:00 | Шуранов Ю | 0.08h | 0.08h |
| 622 | 1.305.2 | доставка |  | 10d | 2026-03-06 09:05 A | 2026-03-20 09:05 A | 621 | 100% |  |  | start no earlier than 2026-03-06 08:00 | Карабанов | 80h | 80h |
| 623 | 1.305.3 | монтаж линия 1 |  | 4h | 2026-05-13 09:00 A | 2026-05-13 13:00 A | 622 | 100% |  |  | start no earlier than 2026-05-13 09:00 | Бобренок В | 4h | 4h |
| 624 | 1.305.4 | монтаж линия 1 и 2 печи (чтобы открывалась и не мешала открыванию лотку сверху) | manual | 4h | 2026-09-11 09:00 A | 2026-09-11 13:00 A | 622 | 100% |  |  | start no earlier than 2026-09-11 09:00 | Макаревич А | 4h | 4h |
| 625 | 1.306 | **квадропак заменить пружины на лапках** |  | 10.12d | 2026-03-18 09:00 A | 2026-04-01 10:00 A |  | 100% |  |  |  |  | 3h | 3h |
| 626 | 1.306.1 | попытка заменить |  | 1h | 2026-03-18 09:00 A | 2026-03-18 10:00 A |  | 100% |  |  | start no earlier than 2026-03-18 09:00 | Дедов В | 1h | 1h |
| 627 | 1.306.2 | проврить ролики на износ / заказать |  | 1h | 2026-03-19 09:00 A | 2026-03-19 10:00 A |  | 100% |  |  | start no earlier than 2026-03-19 08:00 | Зорькин В | 1h | 1h |
| 628 | 1.306.3 | проверить / разрабоать полпн прижимная пластина регулировка |  | 1h | 2026-04-01 09:00 A | 2026-04-01 10:00 A |  | 100% |  |  | start no earlier than 2026-04-01 09:00 | Шуранов Ю | 1h | 1h |
| 629 | 1.307 | **звонок на ворота по привозу навесок** |  | 37.25d | 2026-03-05 09:00 A | 2026-04-27 11:00 A |  | 100% |  |  |  |  | 82.5h | 82.5h |
| 630 | 1.307.1 | заявка на сирену / звонок |  | 30min | 2026-03-05 09:00 A | 2026-03-05 09:30 A |  | 100% |  |  | start no earlier than 2026-03-05 09:00 | Шуранов Ю | 0.5h | 0.5h |
| 631 | 1.307.2 | доставка |  | 10d | 2026-03-12 09:00 A | 2026-03-25 18:00 A | 630 | 100% |  |  | start no earlier than 2026-03-12 08:00 | Карабанов | 80h | 80h |
| 632 | 1.307.3 | монтаж кнопка и звонок на складе (кнопку устанавливаем справа от ворот- звонок возле ВРУ слева |  | 2h | 2026-04-25 09:00 A | 2026-04-27 11:00 A | 631 | 100% |  |  | start no earlier than 2026-04-25 09:00 | Бобренок В | 2h | 2h |
| 633 | 1.308 | **установить профлист на левую стену** |  | 47d? | 2026-03-12 09:00 A | 2026-05-15 18:00 A |  | 100% |  |  |  |  | 185.5h | 185.5h |
| 634 | 1.308.1 | расчет материал с Олегом |  | 1h | 2026-03-12 09:00 A | 2026-03-12 10:00 A |  | 100% |  |  | start no earlier than 2026-03-12 09:00 | Шуранов Ю | 1h | 1h |
| 635 | 1.308.2 | заявка |  | 30min | 2026-03-19 09:00 A | 2026-03-19 09:30 A | 634 | 100% |  |  | start no earlier than 2026-03-19 09:00 | Шуранов Ю | 0.5h | 0.5h |
| 636 | 1.308.3 | доставка |  | 10d | 2026-03-19 09:30 A | 2026-04-02 09:30 A | 635 | 100% |  |  | start no earlier than 2026-03-04 08:00 | Карабанов | 80h | 80h |
| 637 | 1.308.4 | монтаж пробный ряд |  | 4h | 2026-04-22 09:00 A | 2026-04-22 13:00 A |  | 100% |  |  | start no earlier than 2026-04-22 09:00 | Некрасов А; Олег; Труфанов А | 12h | 12h |
| 638 | 1.308.5 | монтаж каркас |  | 1d? | 2026-04-23 14:00 A | 2026-04-24 13:00 A | 636, 637FS+1d | 100% |  |  | start no earlier than 2026-04-22 09:00 | Некрасов А; Труфанов А | 16h | 16h |
| 639 | 1.308.6 | монтаж лист |  | 6h | 2026-04-28 09:00 A | 2026-04-28 16:00 A | 638 | 100% |  |  | start no earlier than 2026-04-28 09:00 | Некрасов А; Труфанов А | 12h | 12h |
| 640 | 1.308.7 | монтаж уровень 2 |  | 4d | 2026-05-12 09:00 A | 2026-05-15 18:00 A |  | 100% |  |  | start no earlier than 2026-05-12 08:00 | Некрасов А; Труфанов А | 64h | 64h |

| ID | WBS | Task | Type | Duration | Start | Finish | Predecessors | Complete | Remaining | Total slack | Constraint | Resources | Work | Actual work |
| --- | --- | --- | --- | --- | --- | --- | --- | --- | --- | --- | --- | --- | --- | --- |
| 641 | 1.309 | **модернизация вентиляции** |  | 135.5d | 2026-03-13 09:00 A | 2026-09-15 13:00 |  | 62% | 51.62d | 130.09d |  |  | 14.5h | 10.5h |
| 642 | 1.309.1 | заявка врезки для отбора проб |  | 15min | 2026-08-21 09:00 A | 2026-08-21 09:15 A |  | 100% |  |  | start no earlier than 2026-08-21 09:00 | Зорькин В | 0.25h | 0.25h |
| 643 | 1.309.2 | контроль доставки врезки для отбора проб |  | 15min | 2026-09-09 09:00 A | 2026-09-09 09:15 A | 642FS+7d | 100% |  |  | start no earlier than 2026-09-09 09:00 | Зорькин В | 0.25h | 0.25h |
| 644 | 1.309.3 | монтаж врезки для отбора проб |  | 4h | 2026-09-15 09:00 A | 2026-09-15 13:00 A | 643FS+1d | 100% |  |  | start no earlier than 2026-09-15 09:00 | Некрасов А; Труфанов А | 8h | 8h |
| 645 | 1.309.4 | составить схему, расчет |  | 2h | 2026-03-13 09:00 A | 2026-03-13 11:00 A |  | 100% |  |  | start no earlier than 2026-03-13 09:00 | Домоводов К | 2h | 2h |
| 646 | 1.309.5 | монтаж вентиляторов |  | 4h | 2026-05-12 09:00 | 2026-05-12 13:00 |  |  |  | 223.09d | start no earlier than 2026-05-12 08:00 | оплот | 4h |  |
| 647 | 1.310 | **заменаить фитинги на жирах** |  | 44.12d | 2026-02-19 09:00 A | 2026-04-22 10:00 A |  | 100% |  |  |  |  | 81.5h | 81.5h |
| 648 | 1.310.1 | заявка |  | 30min | 2026-02-19 09:00 A | 2026-02-19 09:30 A |  | 100% |  |  | start no earlier than 2026-02-19 09:00 | Шуранов Ю | 0.5h | 0.5h |
| 649 | 1.310.2 | доставка |  | 10d | 2026-02-19 09:30 A | 2026-03-05 09:30 A | 648 | 100% |  |  |  | Карабанов | 80h | 80h |
| 650 | 1.310.3 | контроль поставки | milestone | 0d | 2026-03-12 08:00 A | 2026-03-12 08:00 A | 649 | 100% |  |  | start no earlier than 2026-03-12 08:00 | Шуранов Ю |  |  |
| 651 | 1.310.4 | контроль. Пришли опять не те | milestone | 0min | 2026-03-12 09:00 A | 2026-03-12 09:00 A | 649, 650 | 100% |  |  | start no earlier than 2026-03-12 09:00 | Зорькин В |  |  |
| 652 | 1.310.5 | контроль | milestone | 0d | 2026-04-01 09:00 A | 2026-04-01 09:00 A |  | 100% |  |  | start no earlier than 2026-04-01 09:00 | Зорькин В |  |  |
| 653 | 1.310.6 | замена |  | 1h | 2026-04-22 09:00 A | 2026-04-22 10:00 A | 651FS+2d | 100% |  |  | start no earlier than 2026-04-22 09:00 | Бобренок В | 1h | 1h |
| 654 | 1.311 | **жиротопка замена воздухоотводчиков** |  | 24.12d | 2026-03-04 09:00 A | 2026-04-07 10:00 A |  | 100% |  |  |  |  | 41.25h | 41.25h |
| 655 | 1.311.1 | заявка |  | 15min | 2026-03-04 09:00 A | 2026-03-04 09:15 A |  | 100% |  |  | start no earlier than 2026-03-04 09:00 | Зорькин В | 0.25h | 0.25h |
| 656 | 1.311.2 | доставка |  | 5d | 2026-03-04 09:15 A | 2026-03-11 09:15 A | 655 | 100% |  |  | start no earlier than 2026-02-27 08:00 | Карабанов | 40h | 40h |
| 657 | 1.311.3 | замена |  | 1h | 2026-04-07 09:00 A | 2026-04-07 10:00 A | 656 | 100% |  |  | start no earlier than 2026-04-07 09:00 | Бундин В | 1h | 1h |
| 658 | 1.312 | **увеличить освещение в зоне квадропака** |  | 11.12d | 2026-03-04 09:00 A | 2026-03-19 10:00 A |  | 100% |  |  |  |  | 83.5h | 83.5h |
| 659 | 1.312.1 | составить список мматериал для монтажа |  | 30min | 2026-03-04 09:00 A | 2026-03-04 09:30 A |  | 100% |  |  | start no earlier than 2026-03-04 09:00 | Зорькин В; Шуранов Ю | 1h | 1h |
| 660 | 1.312.2 | заявка трос, светильники |  | 30min | 2026-03-04 09:30 A | 2026-03-04 10:00 A | 659 | 100% |  |  | start no earlier than 2026-02-27 08:00 | Шуранов Ю | 0.5h | 0.5h |
| 661 | 1.312.3 | доставка |  | 10d | 2026-03-05 10:00 A | 2026-03-19 10:00 A | 660FS+1d | 100% |  |  | start no earlier than 2026-02-27 08:00 | Карабанов | 80h | 80h |
| 662 | 1.312.4 | монтаж |  | 2h | 2026-03-06 09:00 A | 2026-03-06 11:00 A |  | 100% |  |  | start no earlier than 2026-03-06 09:00 | Бобренок В | 2h | 2h |
| 663 | 1.313 | **установить орг стекло/нерж на обратный ход ленты на раму конвейера** |  | 38.25d | 2026-03-03 09:00 A | 2026-04-24 11:00 A |  | 100% |  |  |  |  | 83.5h | 83.5h |
| 664 | 1.313.1 | заявка нерж |  | 30min | 2026-03-03 09:00 A | 2026-03-03 09:30 A |  | 100% |  |  | start no earlier than 2026-03-03 09:00 | Зорькин В | 0.5h | 0.5h |
| 665 | 1.313.2 | доставка |  | 10d | 2026-03-03 09:30 A | 2026-03-17 09:30 A | 664 | 100% |  |  | start no earlier than 2026-03-02 09:00 | Карабанов | 80h | 80h |
| 666 | 1.313.3 | подготовка материала в размер по аналогии 2 линии |  | 1h | 2026-04-15 09:00 A | 2026-04-15 10:00 A | 665 | 100% |  |  | start no earlier than 2026-04-15 09:00 | Бундин В | 1h | 1h |
| 667 | 1.313.4 | установка на остановке 1 линии (переустановить) |  | 2h | 2026-04-24 09:00 A | 2026-04-24 11:00 A |  | 100% |  |  | start no earlier than 2026-04-24 09:00 | Бобренок В | 2h | 2h |

| ID | WBS | Task | Duration | Start | Finish | Predecessors | Complete | Constraint | Resources | Work | Actual work |
| --- | --- | --- | --- | --- | --- | --- | --- | --- | --- | --- | --- |
| 668 | 1.314 | **установить роутер в зону экструдера для регистрации данных** | 2.12d | 2026-03-02 09:00 A | 2026-03-04 10:00 A |  | 100% |  |  | 10.17h | 10.17h |
| 669 | 1.314.1 | монтаж кабель / розетка, роутер | 4h | 2026-03-02 09:00 A | 2026-03-02 13:00 A |  | 100% | start no earlier than 2026-03-02 09:00 | Некрасов А; Труфанов А | 8h | 8h |
| 670 | 1.314.2 | Монтаж розетки для роутера | 1h | 2026-03-03 09:00 A | 2026-03-03 10:00 A |  | 100% | start no earlier than 2026-03-03 09:00 | Тимофеев В | 1h | 1h |
| 671 | 1.314.3 | Заявка Айтишнику на монтаж наконечников | 10min | 2026-03-03 09:00 A | 2026-03-03 09:10 A |  | 100% | start no earlier than 2026-03-03 09:00 | Зорькин В | 0.17h | 0.17h |
| 672 | 1.314.4 | Монтаж штекеров на кабель | 1h | 2026-03-04 09:00 A | 2026-03-04 10:00 A |  | 100% | start no earlier than 2026-03-04 09:00 | Коленкоров | 1h | 1h |
| 673 | 1.315 | **ремонт приточной вентиляции** | 47.25d | 2026-02-26 09:00 A | 2026-05-04 11:00 A |  | 100% |  |  | 334.5h | 334.5h |
| 674 | 1.315.1 | заявка калорифер | 30min | 2026-03-04 09:00 A | 2026-03-04 09:30 A |  | 100% | start no earlier than 2026-03-04 09:00 | Зорькин В | 0.5h | 0.5h |
| 675 | 1.315.2 | доставка | 10d | 2026-03-04 09:30 A | 2026-03-20 09:30 A | 674 | 100% |  | Карабанов | 80h | 80h |
| 676 | 1.315.3 | замена калорифер | 4h | 2026-03-11 09:00 A | 2026-03-11 13:00 A |  | 100% | start no earlier than 2026-03-11 09:00 | Некрасов А; Труфанов А | 8h | 8h |
| 677 | 1.315.4 | дать фото насоса | 20min | 2026-02-26 09:00 A | 2026-02-26 09:20 A |  | 100% | start no earlier than 2026-02-26 08:00 | Бундин В | 0.33h | 0.33h |
| 678 | 1.315.5 | заявка насос вода | 30min | 2026-03-02 09:30 A | 2026-03-02 10:00 A | 674, 677 | 100% | start no earlier than 2026-02-26 08:00 | Зорькин В | 0.5h | 0.5h |
| 679 | 1.315.6 | доставка | 10d | 2026-03-02 10:00 A | 2026-03-16 10:00 A | 678 | 100% | start no earlier than 2026-02-26 08:00 | Карабанов | 80h | 80h |
| 680 | 1.315.7 | контроль доставки насос и заслонка | 10min | 2026-03-24 09:00 A | 2026-03-24 09:10 A |  | 100% | start no earlier than 2026-03-24 08:00 | Зорькин В | 0.17h | 0.17h |
| 681 | 1.315.8 | замена насоса | 1h | 2026-03-25 09:10 A | 2026-03-25 10:10 A | 680FS+1d | 100% | start no earlier than 2026-03-24 09:00 | Труфанов А | 1h | 1h |
| 682 | 1.315.9 | заявка привод заслонки | 30min | 2026-03-04 09:00 A | 2026-03-04 09:30 A | 678 | 100% | start no earlier than 2026-03-04 09:00 | Зорькин В | 0.5h | 0.5h |
| 683 | 1.315.10 | доставка | 10d | 2026-03-04 09:30 A | 2026-03-18 09:30 A | 682 | 100% | start no earlier than 2026-02-26 08:00 | Карабанов | 80h | 80h |
| 684 | 1.315.11 | замена привода заслонки | 1h | 2026-05-04 09:00 A | 2026-05-04 10:00 A | 680FS+1d | 100% | start no earlier than 2026-05-04 09:00 | Бобренок В | 1h | 1h |
| 685 | 1.315.12 | заявка фильтры на приточная вентиляция | 30min | 2026-03-04 09:00 A | 2026-03-04 09:30 A |  | 100% | start no earlier than 2026-03-04 09:00 | Зорькин В | 0.5h | 0.5h |
| 686 | 1.315.13 | доставка | 10d | 2026-03-04 09:30 A | 2026-03-18 09:30 A | 685 | 100% | start no earlier than 2026-02-27 08:00 | Карабанов | 80h | 80h |
| 687 | 1.315.14 | замена | 2h | 2026-05-04 09:00 A | 2026-05-04 11:00 A | 686 | 100% | start no earlier than 2026-05-04 09:00 | Некрасов А | 2h | 2h |
| 688 | 1.316 | **монтаж регистратор данных линия 1 и 2:** | 1.12d | 2026-02-24 09:00 A | 2026-02-25 10:00 A |  | 100% |  |  | 5h | 5h |
| 689 | 1.316.1 | установить розетку и автомат для для блока питания в ШУ экструдера, без подключения | 2h | 2026-02-24 09:00 A | 2026-02-24 11:00 A |  | 100% | start no earlier than 2026-02-24 09:00 | Дедов В | 2h | 2h |
| 690 | 1.316.2 | монтаж безподключения кабель RS485 по аналогии с линия 3 - только часотный привод. На складе. | 1h | 2026-02-24 09:00 A | 2026-02-24 10:00 A |  | 100% | start no earlier than 2026-02-24 09:00 | Дедов В | 1h | 1h |
| 691 | 1.316.3 | подключение розеток для блока питания в ШУ | 1h | 2026-02-25 09:00 A | 2026-02-25 10:00 A |  | 100% | start no earlier than 2026-02-25 09:00 | Некрасов А | 1h | 1h |
| 692 | 1.316.4 | монтаж пультов управления и индикации регистратор, по аналогии с линия 3 | 1h | 2026-02-25 09:00 A | 2026-02-25 10:00 A |  | 100% | start no earlier than 2026-02-25 09:00 | Некрасов А | 1h | 1h |
| 693 | 1.317 | заменить пластик втулку на металл деталь уплотнение вала прекондицинера 2 линия | 1d? | 2025-09-08 09:00 A | 2025-09-08 18:00 A |  | 100% | start no earlier than 2025-09-08 09:00 |  |  |  |

| ID | WBS | Task | Duration | Start | Finish | Predecessors | Complete | Actual finish | Total slack | Constraint | Resources | Work | Actual work |
| --- | --- | --- | --- | --- | --- | --- | --- | --- | --- | --- | --- | --- | --- |
| 694 | 1.318 | **баки жир 2 линия устноавить наконечники. От 23.05.25** | 265.25d | 2025-04-16 09:00 A | 2026-04-22 11:00 A |  | 100% |  |  |  |  | 42.5h | 42.5h |
| 695 | 1.318.1 | заявка на наконечнки | 30min | 2025-04-16 09:00 A | 2025-04-16 09:30 A |  | 100% |  |  | start no earlier than 2025-04-16 09:00 | Зорькин В | 0.5h | 0.5h |
| 696 | 1.318.2 | доставка | 5d | 2025-04-16 09:30 A | 2025-04-23 09:30 A | 695 | 100% |  |  | start no earlier than 2025-04-14 09:00 | Мультан | 40h | 40h |
| 697 | 1.318.3 | ТО каблей, клемников | 2h | 2026-04-22 09:00 A | 2026-04-22 11:00 A | 696 | 100% |  |  | start no earlier than 2026-04-22 09:00 | Труфанов А | 2h | 2h |
| 698 | 1.319 | **установить фильтры на жир** | 89.12d? | 2025-05-14 09:00 A | 2025-09-16 10:00 A |  | 100% |  |  |  |  | 50h | 50h |
| 699 | 1.319.1 | изготовить переходники токарь разместить | 1h | 2025-09-08 09:00 A | 2025-09-08 10:00 A |  | 100% |  |  | start no earlier than 2025-09-08 09:00 | Зорькин В | 1h | 1h |
| 700 | 1.319.2 | контроль доставки | 5d | 2025-09-08 10:00 A | 2025-09-15 10:00 A | 699 | 100% |  |  | start no earlier than 2025-09-08 09:00 | Зорькин В | 40h | 40h |
| 701 | 1.319.3 | замена | 1d? | 2025-09-15 10:00 A | 2025-09-16 10:00 A | 700 | 100% |  |  | start no earlier than 2025-09-08 09:00 | Тимофеев В | 8h | 8h |
| 702 | 1.319.4 | установить фильтры на жир 2шт через краны на тройник | 1h | 2025-05-14 09:00 A | 2025-05-14 10:00 A |  | 100% |  |  | start no earlier than 2025-05-14 09:00 | Тимофеев В | 1h | 1h |
| 703 | 1.320 | **палетные ворота подача навесок + подача жир** | 14d? | 2025-07-17 09:00 A | 2025-08-05 18:00 A |  | 100% |  |  |  |  | 32h | 32h |
| 704 | 1.320.1 | подготовить чертеж | 1d? | 2025-07-17 09:00 A | 2025-07-17 18:00 A |  | 100% |  |  | start no earlier than 2025-07-17 09:00 | Зорькин В | 8h | 8h |
| 705 | 1.320.2 | сборка рамы | 2d | 2025-07-25 09:00 A | 2025-07-28 18:00 A | 704 | 100% |  |  | start no earlier than 2025-07-25 09:00 | Некрасов А | 16h | 16h |
| 706 | 1.320.3 | монтаж | 1d? | 2025-08-05 09:00 A | 2025-08-05 18:00 A | 705 | 100% |  |  | start no earlier than 2025-08-05 09:00 | Некрасов А | 8h | 8h |
| 707 | 1.321 | защита подшипников паронтом + подготовка | 4h | 2025-06-18 09:00 A | 2025-06-18 13:00 A |  | 100% |  |  | start no earlier than 2025-06-18 09:00 | Тимофеев В | 4h | 4h |
| 708 | 1.322 | **квадропак ТО + составить карту смазки и ТО + составить список ЗИП** | 0.5d | 2025-04-02 09:00 A | 2025-04-02 13:00 A |  | 100% |  |  |  |  | 4h | 4h |
| 709 | 1.322.1 | оформить карту ТО | 4h | 2025-04-02 09:00 A | 2025-04-02 13:00 A |  | 100% |  |  | start no earlier than 2025-04-02 09:00 | Зорькин В | 4h | 4h |
| 710 | 1.323 | **квадропак некрасивый шов - золотинка** | 104.25d | 2025-01-13 09:00 A | 2025-06-06 11:00 |  | 100% | 2025-04-17 16:30 |  |  |  | 8h | 8h |
| 711 | 1.323.1 | **изготовление термоножа с вставкойвставкой** | 0.12d | 2025-01-13 09:00 A | 2025-01-13 10:00 A |  | 100% |  |  |  |  | 1h | 1h |
| 712 | 1.323.1.1 | чертеж | 1h | 2025-01-13 09:00 A | 2025-01-13 10:00 A |  | 100% |  |  | start no earlier than 2025-01-13 09:00 | Зорькин В | 1h | 1h |
| 713 | 1.323.2 | **установка тефлона на термонож** | 42.25d | 2025-04-17 09:00 A | 2025-06-06 11:00 |  | 100% | 2025-04-17 16:30 |  |  |  | 7h | 7h |
| 714 | 1.323.2.1 | разработать метод крепления | 30min | 2025-04-17 09:00 A | 2025-04-17 09:30 A |  | 100% |  |  | start no earlier than 2025-04-17 09:00 | Зорькин В; Шуранов Ю | 1h | 1h |
| 715 | 1.323.2.2 | чертеж | 4h | 2025-04-17 09:30 A | 2025-04-17 14:30 A | 714 | 100% |  |  | start no earlier than 2025-01-17 09:00 | Зорькин В | 4h | 4h |
| 716 | 1.323.2.3 | орг изготовление деталей | 2h | 2025-04-17 14:30 A | 2025-04-17 16:30 A | 715 | 100% |  |  | start no earlier than 2025-04-16 09:00 | Шуранов Ю | 2h | 2h |
| 717 | 1.324 | **режет кабель ЛУКАС силовой в лотке эстакада у КПП** | 444.5d | 2024-08-02 09:00 | 2026-04-16 13:00 |  |  |  | 241.09d |  |  | 4.5h |  |
| 718 | 1.324.1 | решение о переговорах ГП | 30min | 2024-08-02 09:00 | 2024-08-02 09:30 |  |  |  | 685.53d | start no earlier than 2024-08-02 09:00 | Домоводов К | 0.5h |  |
| 719 | 1.324.2 | перекладка кабель | 4h | 2026-04-16 09:00 | 2026-04-16 13:00 |  |  |  | 241.09d | start no earlier than 2026-04-16 08:00 | Олег | 4h |  |

| ID | WBS | Task | Duration | Start | Finish | Predecessors | Complete | Total slack | Constraint | Resources | Work | Actual work |
| --- | --- | --- | --- | --- | --- | --- | --- | --- | --- | --- | --- | --- |
| 720 | 1.325 | **ШР2.2 замена автомат на циклон на номинальный** | 5.06d | 2026-04-10 09:00 A | 2026-04-17 09:30 A |  | 100% |  |  |  | 41.5h | 41.5h |
| 721 | 1.325.1 | прорверить какой стоит / заявка по мощности мотора | 30min | 2026-04-10 09:00 A | 2026-04-10 09:30 A |  | 100% |  | start no earlier than 2026-04-10 09:00 | Тимофеев В | 0.5h | 0.5h |
| 722 | 1.325.2 | достьавка | 5d | 2026-04-10 09:30 A | 2026-04-17 09:30 A | 721 | 100% |  | start no earlier than 2024-03-04 09:00 | Малинина М | 40h | 40h |
| 723 | 1.325.3 | замена | 1h | 2026-04-16 09:30 A | 2026-04-16 10:30 A | 722 | 100% |  | start no earlier than 2026-04-06 09:00 | Шуранов Ю | 1h | 1h |
| 724 | 1.326 | **кронштейн фотометки ТЕКО усилить** | 10.12d | 2024-09-11 09:00 A | 2024-09-25 10:00 A |  | 100% |  |  |  | 82h | 82h |
| 725 | 1.326.1 | поиск заявка кронштейна для датчика с регулировкой в3 плоскостях | 1h | 2024-09-11 09:00 A | 2024-09-11 10:00 A |  | 100% |  | start no earlier than 2024-09-11 09:00 | Зорькин В | 1h | 1h |
| 726 | 1.326.2 | доставка | 10d | 2024-09-11 10:00 A | 2024-09-25 10:00 A | 725 | 100% |  | start no earlier than 2024-09-11 09:00 | Мультан | 80h | 80h |
| 727 | 1.326.3 | замена | 1h | 2024-09-21 10:00 A | 2024-09-23 10:00 A | 726 | 100% |  | start no earlier than 2024-09-11 09:00 | Тимофеев В | 1h | 1h |
| 728 | 1.327 | **квадропак греет пневмоцилиндр термоножа** | 14.5d | 2024-09-12 09:00 A | 2024-10-02 13:00 A |  | 100% |  |  |  | 85h | 85h |
| 729 | 1.327.1 | решение о применении теплоизоляц пластины / заявка | 1h | 2024-09-12 09:00 A | 2024-09-12 10:00 A |  | 100% |  | start no earlier than 2024-09-12 09:00 | Зорькин В | 1h | 1h |
| 730 | 1.327.2 | доставка | 10d | 2024-09-12 10:00 A | 2024-09-26 10:00 A | 729 | 100% |  | start no earlier than 2024-09-11 09:00 | Мультан | 80h | 80h |
| 731 | 1.327.3 | замена | 4h | 2024-10-02 09:00 A | 2024-10-02 13:00 A | 730 | 100% |  | start no earlier than 2024-10-02 09:00 | Тимофеев В | 4h | 4h |
| 732 | 1.328 | **ремонт комппрессора - сдать по гарантии** | 739.12d | 2023-10-31 09:00 A | 2026-08-31 10:00 A |  | 100% |  |  |  | 2h | 2h |
| 733 | 1.328.1 | контроль снабжения - отправитьт поставщику | 1h | 2023-10-31 09:00 A | 2023-10-31 10:00 A |  | 100% |  | start no earlier than 2023-10-31 09:00 | Лобанов И | 1h | 1h |
| 734 | 1.328.2 | контроль возврата | 1h | 2026-08-31 09:00 A | 2026-08-31 10:00 A | 733 | 100% |  | start no earlier than 2026-08-31 09:00 | Зорькин В | 1h | 1h |
| 735 | 1.329 | **убрать кабеля с пола на упаковке 1 цех** | 0.02d | 2026-09-01 09:00 | 2026-09-01 09:10 |  |  | 143.57d |  |  | 0.17h |  |
| 736 | 1.329.1 | проверить на актуальность | 10min | 2026-09-01 09:00 | 2026-09-01 09:10 |  |  | 143.57d | start no earlier than 2026-09-01 09:00 | Зорькин В | 0.17h |  |
| 737 | 1.330 | режет металлом изоляцию кабеля в прорходе стены в 1 цех угол комппрессора - обезвредить | 1h | 2023-12-28 09:00 A | 2023-12-28 10:00 A |  | 100% |  | start no earlier than 2023-12-28 09:00 | Бобренок В; Дедов В | 2h | 2h |
| 738 | 1.331 | **убрать кабеля с пола и заменить переноски штатными розетками - участок жира 1 цех** | 0.01d | 2026-09-01 09:00 | 2026-09-01 09:05 |  |  | 143.58d |  |  | 0.08h |  |
| 739 | 1.331.1 | проверить на актуальность | 5min | 2026-09-01 09:00 | 2026-09-01 09:05 |  |  | 143.58d | start no earlier than 2026-09-01 09:00 | Зорькин В | 0.08h |  |
| 740 | 1.332 | изготовить ключь для ТП | 2h | 2023-06-21 09:00 A | 2023-06-21 11:00 A |  | 100% |  | start no earlier than 2023-06-21 09:00 | Домоводов К | 2h | 2h |
| 741 | 1.333 | заменитьт автомат 63С кондиционер 1 цех | 1h | 2023-06-22 09:00 A | 2023-06-22 10:00 A |  | 100% |  | start no earlier than 2023-06-22 09:00 | Тимофеев В | 1h | 1h |
| 742 | 1.334 | **Барабаны 2 линия дражжировка** | 18d | 2026-04-21 09:00 A | 2026-05-14 18:00 A |  | 100% |  |  |  | 94.5h | 94.5h |
| 743 | 1.334.1 | Проработать модернизацию форсунок | 3h | 2026-04-22 09:00 A | 2026-04-22 12:00 A |  | 100% |  | start no earlier than 2026-04-22 09:00 | Зорькин В; Домоводов К | 6h | 6h |
| 744 | 1.334.2 | сделать заявку на доп форсунки, расходники | 30min | 2026-04-22 09:00 A | 2026-04-22 09:30 A |  | 100% |  | start no earlier than 2026-04-22 09:00 | Зорькин В | 0.5h | 0.5h |
| 745 | 1.334.3 | доставка | 10d | 2026-04-30 09:00 A | 2026-05-14 18:00 A |  | 100% |  | start no earlier than 2026-04-30 09:00 | Карабанов | 80h | 80h |
| 746 | 1.334.4 | Внедрение и монтаж | 2h | 2026-05-08 09:00 A | 2026-05-08 11:00 A |  | 100% |  | start no earlier than 2026-05-08 09:00 | Зорькин В; Тимофеев В | 4h | 4h |

| ID | WBS | Task | Type | Duration | Start | Finish | Predecessors | Complete | Remaining | Actual start | Actual finish | Total slack | Constraint | Resources | Work | Actual work |
| --- | --- | --- | --- | --- | --- | --- | --- | --- | --- | --- | --- | --- | --- | --- | --- | --- |
| 747 | 1.334.5 | **Парогенератор** |  | 0.25d | 2026-04-21 09:00 A | 2026-04-21 11:00 A |  | 100% |  |  |  |  |  |  | 4h | 4h |
| 748 | 1.334.5.1 | Проверить термадатчик (панельтемпературы) TC4R на корректность работы, скачет температура, по необходимости заменить |  | 2h | 2026-04-21 09:00 A | 2026-04-21 11:00 A |  | 100% |  |  |  |  | start no earlier than 2026-04-21 08:00 | Бундин В; Зорькин В | 4h | 4h |
| 749 | 1.335 | **Звонок на экструдер** |  | 14.12d | 2026-04-07 09:00 A | 2026-04-27 10:00 A |  | 100% |  |  |  |  |  |  | 6h | 6h |
| 750 | 1.335.1 | Протяжка кабеля от ворот к экструдерщикам |  | 4h | 2026-04-07 09:00 A | 2026-04-07 13:00 A |  | 100% |  |  |  |  | start no earlier than 2026-04-22 09:00 | Дедов В | 4h | 4h |
| 751 | 1.335.2 | монтаж звонка |  | 1h | 2026-04-25 09:00 A | 2026-04-27 10:00 A | 750 | 100% |  |  |  |  | start no earlier than 2026-04-25 09:00 | Дедов В | 1h | 1h |
| 752 | 1.335.3 | монтаж кнопки за воротами |  | 1h | 2026-04-25 10:00 A | 2026-04-27 10:00 A | 751 | 100% |  |  |  |  | start no earlier than 2026-04-21 08:00 | Дедов В | 1h | 1h |
| 753 | 1.336 | **Насос гидролизата** |  | 28.01d | 2026-08-04 09:00 A | 2026-09-10 09:05 |  | 80% | 5.6d |  |  | 135.58d |  |  | 0.42h | 0.33h |
| 754 | 1.336.1 | Заказать ремкомплект шнек, резинка, трубка, связаться с производителем |  | 20min | 2026-08-04 09:00 A | 2026-08-04 09:20 A |  | 100% |  |  |  |  | start no earlier than 2026-08-04 09:00 | Зорькин В | 0.33h | 0.33h |
| 755 | 1.336.2 | Доставка контроль сам насос шетсрен |  | 5min | 2026-09-10 09:00 | 2026-09-10 09:05 |  |  |  |  |  | 135.58d | start no earlier than 2026-09-10 09:00 | Зорькин В | 0.08h |  |
| 756 | 1.337 | **Дражжировка конвейер №1 после печки** |  | 122.12d | 2026-04-22 08:00 A | 2026-09-30 10:00 |  | 92% | 9.33d |  |  | 115.47d |  |  | 13.08h | 12.08h |
| 757 | 1.337.1 | Поставить резьбовые клепки на боковой кожух, где кончается лента |  | 1h | 2026-09-30 09:00 | 2026-09-30 10:00 |  |  |  |  |  | 115.47d | start no earlier than 2026-09-30 09:00 | Тимофеев В | 1h |  |
| 758 | 1.337.2 | Ремонт насоса от 2 линии 1 цех, статор взять на складе |  | 2h | 2026-09-10 09:00 A | 2026-09-10 11:00 A |  | 100% |  |  |  |  | start no earlier than 2026-09-10 09:00 | Некрасов А | 2h | 2h |
| 759 | 1.337.3 | контроль героторная пара оплата |  | 5min | 2026-08-21 09:00 A | 2026-08-21 09:05 A |  | 100% |  |  |  |  | start no earlier than 2026-08-21 09:00 | Зорькин В | 0.08h | 0.08h |
| 760 | 1.337.4 | Замена сальника на поворотном столе/проверить |  | 1h | 2026-07-23 09:00 A | 2026-07-23 10:00 A |  | 100% |  |  |  |  | start no earlier than 2026-07-23 08:00 | Бундин В | 1h | 1h |
| 761 | 1.337.5 | **дражжировка** |  | 0.62d | 2026-04-22 08:00 A | 2026-04-22 15:00 A |  | 100% |  |  |  |  |  |  | 9h | 9h |
| 762 | 1.337.5.1 | Установка рамы для фильтров |  | 3h | 2026-04-22 08:00 A | 2026-04-22 12:00 A |  | 100% |  |  |  |  | start no earlier than 2026-04-22 08:00 | Тимофеев В | 3h | 3h |
| 763 | 1.337.5.2 | установка счетчика |  | 1h | 2026-04-22 11:00 A | 2026-04-22 12:00 A | 762 | 100% |  |  |  |  | start no earlier than 2026-04-22 08:00 | Тимофеев В | 1h | 1h |
| 764 | 1.337.5.3 | кронштейн под пульт расходомера |  | 2h | 2026-04-22 12:00 A | 2026-04-22 15:00 A | 763 | 100% |  |  |  |  | start no earlier than 2026-04-22 08:00 | Тимофеев В | 2h | 2h |
| 765 | 1.337.5.4 | **Парогенератор** |  | 0.38d | 2026-04-22 09:00 A | 2026-04-22 12:00 A |  | 100% |  |  |  |  |  |  | 3h | 3h |
| 766 | 1.337.5.4.1 | чистка парогенераторов 1 и 2 линия |  | 3h | 2026-04-22 09:00 A | 2026-04-22 12:00 A |  | 100% |  |  |  |  | start no earlier than 2026-04-22 08:00 | Бундин В | 3h | 3h |
| 767 | 1.338 | **отмена** |  | 70.75d? | 2026-04-22 09:00 | 2026-07-29 16:00 A |  | 100% |  | 2026-07-08 09:00 |  |  |  |  | 12.33h | 12.33h |
| 768 | 1.338.1 | **Парогенератор** |  | 27.5d? | 2026-04-22 09:00 | 2026-05-25 13:00 |  | 100% |  | 2026-07-08 09:00 | 2026-07-29 16:00 |  |  |  | 12.33h | 12.33h |
| 769 | 1.338.1.1 | Замена говротрубы 1 линия |  | 1h | 2026-07-08 09:00 A | 2026-07-08 10:00 A |  | 100% |  |  |  |  | start no earlier than 2026-07-08 09:00 | Бобренок В | 1h | 1h |
| 770 | 1.338.1.2 | Осмотр стоек где стоит реле давления до расширительного бачка |  | 30min | 2026-07-27 09:00 A | 2026-07-27 09:30 A |  | 100% |  |  |  |  | start no earlier than 2026-07-27 09:00 | Тимофеев В | 0.5h | 0.5h |
| 771 | 1.338.1.3 | Составить список материала для ремонта и изготовления стоек |  | 30min | 2026-07-27 09:30 A | 2026-07-27 10:00 A | 770 | 100% |  |  |  |  | start no earlier than 2026-05-27 09:00 | Тимофеев В | 0.5h | 0.5h |
| 772 | 1.338.1.4 | Заказать недостающий материал |  | 20min | 2026-07-27 09:00 A | 2026-07-27 09:20 A |  | 100% |  |  |  |  | start no earlier than 2026-07-27 09:00 | Зорькин В | 0.33h | 0.33h |
| 773 | 1.338.1.5 | Изготовление стоек |  | 3h | 2026-07-29 09:00 A | 2026-07-29 12:00 A | 771 | 100% |  |  |  |  | start no earlier than 2026-07-29 09:00 | Некрасов А | 3h | 3h |
| 774 | 1.338.1.6 | Замена стойки под реле давления |  | 3h | 2026-07-29 12:00 A | 2026-07-29 16:00 A | 773 | 100% |  |  |  |  | start no earlier than 2026-05-27 09:00 | Некрасов А | 3h | 3h |
| 775 | 1.338.1.7 | Составить список материалов или заключение по 2-м частотникам из 1 цеха от теко 0,4 (поворотный стол и конвейер) |  | 1h | 2026-07-27 08:00 A | 2026-07-27 10:00 A |  | 100% |  |  |  |  | start no earlier than 2026-07-27 08:00 | Дедов В | 1h | 1h |
| 776 | 1.338.1.8 | Взять трубку в нашем кабинете и насверлить по всей длине симметрично отверстия самым маленьким сверлом которое у нас есть (по этому заданию позвонить) |  | 3h | 2026-07-28 08:00 A | 2026-07-28 12:00 A |  | 100% |  |  |  |  | start no earlier than 2026-07-28 08:00 | Макаревич А | 3h | 3h |
| 777 | 1.339 | Демонтаж разборка/сборка редукторы шлюз. Питателей циклона 1 и 2 линия | manual | 3h | 2026-04-24 09:00 A | 2026-04-24 12:00 A |  | 100% |  |  |  |  | start no earlier than 2026-04-24 09:00 | Бундин В | 3h | 3h |

| ID | WBS | Task | Type | Duration | Start | Finish | Complete | Remaining | Actual start | Total slack | Constraint | Resources | Work | Actual work |
| --- | --- | --- | --- | --- | --- | --- | --- | --- | --- | --- | --- | --- | --- | --- |
| 778 | 1.340 | **Теко 0,4** |  | 0.38d | 2026-04-03 09:00 A | 2026-04-03 12:00 A | 100% |  |  |  |  |  | 3h | 3h |
| 779 | 1.340.1 | замена ковшей | manual | 3h | 2026-04-03 09:00 A | 2026-04-03 12:00 A | 100% |  |  |  | start no earlier than 2026-04-03 09:00 | Макаревич А | 3h | 3h |
| 780 | 2 | **2 цех** |  | 249d? | 2023-11-16 09:00 | 2024-10-29 18:00 | 89% | 27.72d? | 2024-01-08 09:00 |  |  |  | 2903.42h | 2593.75h |
| 781 | 2.1 | Повесить полочки с образцами в места отмеченные крестиком (фото у зорькина), связаться с мастером, он покажет |  | 1h | 2026-09-29 09:00 | 2026-09-29 10:00 |  |  |  | 116.47d | start no earlier than 2026-09-29 08:00 | Бундин В | 1h |  |
| 782 | 2.2 | Продуть всю вентиляшку на жирах с люльки |  | 2h | 2026-09-29 09:00 | 2026-09-29 11:00 |  |  |  | 116.34d | start no earlier than 2026-09-29 08:00 | Бундин В | 2h |  |
| 784 | 2.3 | Изготовить носик на подаче сухого гидролизата под уклоном ближе к барабану |  | 3h | 2026-09-29 09:00 | 2026-09-29 12:00 |  |  |  | 116.22d | start no earlier than 2026-09-29 09:00 | Тимофеев В | 3h |  |
| 785 | 2.4 | Изготовление рамы на ножках для переноса всего барабана с сухим гидролизатом к нижнему барабану |  | 4h | 2026-09-29 09:00 | 2026-09-29 13:00 |  |  |  | 116.09d | start no earlier than 2026-09-29 09:00 | Тимофеев В | 4h |  |
| 786 | 2.5 | изготовить ножки на бункер нории БЕСТРОМ |  | 3h | 2026-09-26 09:00 A | 2026-09-26 12:00 A | 100% |  |  |  | start no earlier than 2026-09-26 09:00 | Бобренок В | 3h | 3h |
| 787 | 2.6 | **установить 4 трубки с быстросъемами в барабаны жиров** |  | 3.5d | 2026-09-25 09:00 A | 2026-09-28 13:00 | 33% | 2.33d |  | 117.09d |  |  | 6h | 2h |
| 788 | 2.6.1 | подготовить сменную трубку для подачи жира, насверлить резьбу, отверстия |  | 2h | 2026-09-25 09:00 A | 2026-09-25 11:00 A | 100% |  |  |  | start no earlier than 2026-09-25 09:00 | Тимофеев В | 2h | 2h |
| 789 | 2.6.2 | подготовить трубку 3 и 4 |  | 4h | 2026-09-28 09:00 | 2026-09-28 13:00 |  |  |  | 117.09d | start no earlier than 2026-09-28 09:00 | Тимофеев В | 4h |  |
| 790 | 2.7 | кран на жирах нет стопора - вращение на 360 устранить, найти этот кран. |  | 30min | 2026-09-24 09:00 A | 2026-09-24 09:30 A | 100% |  |  |  | start no earlier than 2026-09-24 09:00 | Тимофеев В | 0.5h | 0.5h |
| 791 | 2.8 | Проверить весы на смесителе прыгают в диапазаоне 40кг |  | 1h | 2026-09-23 09:00 | 2026-09-23 10:00 |  |  |  | 122.47d | start no earlier than 2026-09-23 09:00 | Дедов В | 1h |  |
| 792 | 2.9 | **лаборатория** |  | 0.12d | 2026-09-22 09:00 A | 2026-09-22 10:00 A | 100% |  |  |  |  |  | 1.5h | 1.5h |
| 793 | 2.9.1 | Перегорел тэн на дигистре |  | 30min | 2026-09-22 09:00 A | 2026-09-22 09:30 A | 100% |  |  |  | start no earlier than 2026-09-22 09:00 | Тимофеев В | 0.5h | 0.5h |
| 794 | 2.9.2 | Поставить колбу в лаборотории на бульбуляторе, колба в лаборатории |  | 1h | 2026-09-22 09:00 A | 2026-09-22 10:00 A | 100% |  |  |  | start no earlier than 2026-09-22 09:00 | Тимофеев В | 1h | 1h |
| 795 | 2.10 | Сделать ручки и щеколду для мусорки на улице |  | 1h | 2026-09-25 09:00 A | 2026-09-25 10:00 A | 100% |  |  |  | start no earlier than 2026-09-25 09:00 | Бундин В | 1h | 1h |
| 796 | 2.11 | установить трубку жир ф12 - нарезать резьбу под фитинг / сверлить под "струйки" |  | 2h | 2026-09-24 09:00 A | 2026-09-24 11:00 A | 100% |  |  |  | start no earlier than 2026-09-24 09:00 | Тимофеев В | 2h | 2h |
| 797 | 2.12 | **система сброса муки с прекондиционера в мешки** |  | 2d? | 2026-09-18 09:00 A | 2026-09-19 18:00 A | 100% |  |  |  |  |  | 11h | 11h |
| 798 | 2.12.1 | Продумать варианты предложить, согласовать с Домоводовым и смонтировать, чтоб можно было вешать мешок на экструдере, под рассекатель потока муки выходящий из прекондиционера, который сделал Макаревич |  | 3h | 2026-09-18 09:00 A | 2026-09-18 12:00 A | 100% |  |  |  | start no earlier than 2026-09-18 09:00 | Бобренок В | 3h | 3h |
| 799 | 2.12.2 | изготовление тележки с креплением для 2х мешков. Покрасить |  | 1d? | 2026-09-19 09:00 A | 2026-09-19 18:00 A | 100% |  |  |  | start no earlier than 2026-09-19 09:00 | Бобренок В | 8h | 8h |
| 800 | 2.13 | Промывка дистилятора в лаборатории |  | 3h | 2026-09-18 09:00 A | 2026-09-18 12:00 A | 100% |  |  |  | start no earlier than 2026-09-18 09:00 | Бобренок В | 3h | 3h |
| 801 | 2.14 | Изготовить стопор для пленки на бестром (Обратиться к пацанам на фасовке или к мастеру, должны подсказать) |  | 2h | 2026-09-16 09:00 A | 2026-09-16 11:00 A | 100% |  |  |  | start no earlier than 2026-09-16 08:00 | Бундин В | 2h | 2h |
| 802 | 2.15 | ремонт лампа бактерициодная (это не инсекюьтер) на ГП (не горит табло). Ревизия. |  | 2h | 2026-09-13 09:00 A | 2026-09-13 11:00 A | 100% |  |  |  | start no earlier than 2026-09-13 09:00 | Дедов В | 2h | 2h |
| 803 | 2.16 | ремонт ворот ГП слетели тросы |  | 2h | 2026-09-11 09:00 A | 2026-09-11 11:00 A | 100% |  |  |  | start no earlier than 2026-09-11 08:00 | Бобренок В | 2h | 2h |
| 804 | 2.17 | ремонт светильник корридор у отк |  | 1h | 2026-09-14 09:00 A | 2026-09-14 10:00 A | 100% |  |  |  | start no earlier than 2026-09-14 09:00 | Макаревич А | 1h | 1h |
| 805 | 2.18 | замена квадрат ручка дверь экструдер |  | 1h | 2026-09-14 09:00 A | 2026-09-14 10:00 A | 100% |  |  |  | start no earlier than 2026-09-14 09:00 | Макаревич А | 1h | 1h |

| ID | WBS | Task | Type | Duration | Start | Finish | Predecessors | Complete | Remaining | Total slack | Free slack | Constraint | Resources | Work | Actual work |
| --- | --- | --- | --- | --- | --- | --- | --- | --- | --- | --- | --- | --- | --- | --- | --- |
| 806 | 2.19 | **ревизия сливной шланг моечная машинка** |  | 18.25d | 2026-09-14 09:00 A | 2026-10-02 11:00 |  | 36% | 11.73d | 113.34d |  |  |  | 3.5h | 1.25h |
| 807 | 2.19.1 | ревизия / удлинить |  | 1h | 2026-09-14 09:00 A | 2026-09-14 10:00 A |  | 100% |  |  |  | start no earlier than 2026-09-14 09:00 | Тимофеев В | 1h | 1h |
| 808 | 2.19.2 | заявка |  | 15min | 2026-09-18 09:00 A | 2026-09-18 09:15 A |  | 100% |  |  |  | start no earlier than 2026-09-18 09:00 | Зорькин В | 0.25h | 0.25h |
| 809 | 2.19.3 | контроль доставки |  | 15min | 2026-09-25 09:00 | 2026-09-25 09:15 | 808FS+5d |  |  | 119.31d | 5.97d | start no earlier than 2026-09-25 09:00 | Зорькин В | 0.25h |  |
| 810 | 2.19.4 | монтаж |  | 2h | 2026-10-02 09:00 | 2026-10-02 11:00 | 809FS+1d |  |  | 113.34d |  | start no earlier than 2026-10-02 09:00 | Тимофеев В | 2h |  |
| 811 | 2.20 | Проверка системы под давлением, при необходимости заменить шланги на пневматические?? |  | 1h | 2026-09-21 09:00 A | 2026-09-21 10:00 A |  | 100% |  |  |  | start no earlier than 2026-09-22 09:00 | Тимофеев В | 1h | 1h |
| 812 | 2.21 | Установить трубку на жирах, которую сделал викторович |  | 30min | 2026-09-09 09:00 A | 2026-09-09 09:30 A |  | 100% |  |  |  | start no earlier than 2026-09-09 08:00 | Тимофеев В | 0.5h | 0.5h |
| 813 | 2.22 | **реверс теплоносителя в приточном калорифере** |  | 28.25d | 2026-08-24 09:00 A | 2026-09-24 11:00 A |  | 100% |  |  |  |  |  | 2.5h | 2.5h |
| 814 | 2.22.1 | заявка |  | 15min | 2026-08-24 09:00 A | 2026-08-24 09:15 A |  | 100% |  |  |  | start no earlier than 2026-08-24 09:00 | Зорькин В | 0.25h | 0.25h |
| 815 | 2.22.2 | контроль доставки |  | 15min | 2026-09-14 09:05 A | 2026-09-14 09:20 A | 1027FS+5d | 100% |  |  |  | start no earlier than 2026-09-09 09:00 | Зорькин В | 0.25h | 0.25h |
| 816 | 2.22.3 | монтаж |  | 2h | 2026-09-24 09:00 A | 2026-09-24 11:00 A | 1028FS+1d | 100% |  |  |  | start no earlier than 2026-09-24 09:00 | Дедов В | 2h | 2h |
| 817 | 2.23 | востановить потерю токов в печи / ревизия . Замена тенов |  | 4h | 2026-09-09 09:00 A | 2026-09-09 13:00 A |  | 100% |  |  |  | start no earlier than 2026-09-09 09:00 | Бобренок В | 4h | 4h |
| 818 | 2.24 | Смазка подшипников привода охладителя | manual | 1h | 2026-09-09 09:00 A | 2026-09-09 10:00 A |  | 100% |  |  |  |  | Бобренок В | 1h | 1h |
| 819 | 2.25 | Обрезать пенку пвх на двери в охладителе ,сделать ее ровной |  | 1h | 2026-09-07 09:00 A | 2026-09-07 10:00 A |  | 100% |  |  |  | start no earlier than 2026-09-05 09:00 | Макаревич А | 1h | 1h |
| 820 | 2.26 | Переборка парогенератора, поиск неисправности (подключили перемычку между реле времени) |  | 4h | 2026-09-02 09:00 A | 2026-09-02 13:00 A |  | 100% |  |  |  | start no earlier than 2026-09-02 09:00 | Бобренок В | 4h | 4h |
| 821 | 2.27 | **Подготовить электрическую часть для подключения второго насоса без частотника (продолжаем эту задачу)** |  | 13.25d | 2026-09-03 09:00 A | 2026-09-17 11:00 A |  | 100% |  |  |  |  |  | 4.17h | 4.17h |
| 822 | 2.27.1 | установить на линию доп насос (резервный) |  | 1h | 2026-09-10 09:00 A | 2026-09-10 10:00 A |  | 100% |  |  |  | start no earlier than 2026-09-10 09:00 | Тимофеев В | 1h | 1h |
| 823 | 2.27.2 | монтаж |  | 1h | 2026-09-09 09:00 A | 2026-09-09 10:00 A |  | 100% |  |  |  | start no earlier than 2026-09-09 09:00 | Тимофеев В | 1h | 1h |
| 824 | 2.27.3 | Переместить розетки со стола, смонтировать площадку к раме и закрепить на эту раму |  | 2h | 2026-09-17 09:00 A | 2026-09-17 11:00 A |  | 100% |  |  |  | start no earlier than 2026-09-17 09:00 | Тимофеев В | 2h | 2h |
| 825 | 2.27.4 | Подумать место установки автомата |  | 10min | 2026-09-03 09:00 A | 2026-09-03 09:10 A |  | 100% |  |  |  | start no earlier than 2026-09-03 09:00 | Тимофеев В | 0.17h | 0.17h |
| 826 | 2.28 | Ремонт парогенератора, замена реле давления + отвалился контакт + замена мембраны |  | 1h | 2026-09-02 09:00 A | 2026-09-02 10:00 A |  | 100% |  |  |  | start no earlier than 2026-09-02 08:00 | Труфанов А | 1h | 1h |
| 827 | 2.29 | Замена редуктора на печи |  | 2h | 2026-09-01 09:00 A | 2026-09-01 11:00 A |  | 100% |  |  |  | start no earlier than 2026-09-01 09:00 | Бундин В | 2h | 2h |
| 828 | 2.30 | проверка котлов на приточку (замена клапана и тена на большую мощность) | manual | 2h | 2026-09-07 09:00 A | 2026-09-07 11:00 A |  | 100% |  |  |  | start no earlier than 2026-09-07 09:00 | Дедов В | 2h | 2h |
| 829 | 2.31 | проверка всех котлов на отопление по цеху | manual | 4h | 2026-08-30 09:00 A | 2026-08-30 13:00 A |  | 100% |  |  |  | start no earlier than 2026-08-30 09:00 | Дедов В | 4h | 4h |
| 830 | 2.32 | закрепить коробку двери снизу (возле ШУ приточка 2 этаж) |  | 2h | 2026-08-28 09:00 A | 2026-08-28 11:00 A |  | 100% |  |  |  | start no earlier than 2026-08-28 09:00 | Макаревич А | 2h | 2h |

| ID | WBS | Task | Type | Duration | Start | Finish | Predecessors | Complete | Remaining | Total slack | Free slack | Constraint | Resources | Work | Actual work |
| --- | --- | --- | --- | --- | --- | --- | --- | --- | --- | --- | --- | --- | --- | --- | --- |
| 831 | 2.33 | **заменить фильтры на воду в цехе (проверить мембрану на гидроаккумуляторе)** |  | 1d? | 2026-08-28 09:00 A | 2026-08-28 18:00 A |  | 100% |  |  |  |  | Бобренок В | 16h | 16h |
| 832 | 2.33.1 | заказать фильтры |  | 1d? | 2026-08-28 09:00 A | 2026-08-28 18:00 A |  | 100% |  |  |  | start no earlier than 2026-08-28 09:00 | Шуранов Ю | 8h | 8h |
| 833 | 2.34 | монтаж и подключение розетки для кондиционера в кабинет ОТК |  | 2h | 2026-08-26 08:00 A | 2026-08-26 11:00 A |  | 100% |  |  |  | start no earlier than 2026-08-26 08:00 | Бобренок В | 2h | 2h |
| 834 | 2.35 | сливной шланг от кондиционеров наш кабинет и Шелепова спрятать в кабель канал 30х25 (он на складе) |  | 2h | 2026-08-26 08:00 A | 2026-08-26 11:00 A |  | 100% |  |  |  | start no earlier than 2026-08-26 08:00 | Бобренок В | 2h | 2h |
| 835 | 2.36 | сливной шланг от кондиционеров кабинет Сапелина спрятать в кабель канал 30х25 (он на складе) с 10 до 11ч |  | 1h | 2026-08-31 09:00 A | 2026-08-31 10:00 A |  | 100% |  |  |  | start no earlier than 2026-08-31 09:00 | Тимофеев В | 1h | 1h |
| 836 | 2.37 | замерить токи на оборудование (таблица в слесарке) |  | 3h | 2026-08-27 09:00 A | 2026-08-27 12:00 A |  | 100% |  |  |  | start no earlier than 2026-08-27 09:00 | Бобренок В | 3h | 3h |
| 837 | 2.38 | **дренаж кондиционеров жир и упаковка установить отдельный насос от жиров** |  | 28.06d | 2026-08-24 09:00 A | 2026-09-24 09:30 A |  | 100% |  |  |  |  |  | 122.5h | 122.5h |
| 838 | 2.38.1 | заявка насос |  | 30min | 2026-08-24 09:00 A | 2026-08-24 09:30 A |  | 100% |  |  |  | start no earlier than 2026-08-24 09:00 | Шуранов Ю | 0.5h | 0.5h |
| 839 | 2.38.2 | контроль доставка |  | 15d | 2026-09-02 09:30 A | 2026-09-24 09:30 A | 838FS+7d | 100% |  |  |  | start no earlier than 2026-08-20 09:00 | Зорькин В | 120h | 120h |
| 840 | 2.38.3 | Разорвать контур от насоса и сделать слив в раковину | manual | 1h | 2026-09-01 09:00 A | 2026-09-01 10:00 A | 839FS+1d | 100% |  |  |  | start no earlier than 2026-09-01 09:00 | Некрасов А; Тимофеев В | 2h | 2h |
| 841 | 2.39 | **бетонирование крыльцо вход в 2ц** |  | 0.02d | 2026-08-31 09:00 | 2026-08-31 09:10 |  |  |  | 144.57d |  |  |  | 0.17h |  |
| 842 | 2.39.1 | заявка Олегу |  | 10min | 2026-08-31 09:00 | 2026-08-31 09:10 |  |  |  | 144.57d |  | start no earlier than 2026-08-31 09:00 | Шуранов Ю | 0.17h |  |
| 843 | 2.40 | течь кондиционер жиры - контроль работы слива |  | 30min | 2026-08-31 09:00 A | 2026-08-31 09:30 A |  | 100% |  |  |  | start no earlier than 2026-08-31 09:00 | Тимофеев В | 0.5h | 0.5h |
| 844 | 2.41 | контроль замена фитинги или трубки жир, устранить возможность произвольного срыва |  | 30min | 2026-09-01 09:00 A | 2026-09-01 09:30 A |  | 100% |  |  |  | start no earlier than 2026-09-03 09:00 | Некрасов А; Шуранов Ю | 1h | 1h |
| 845 | 2.42 | **разгрузка синего накопителя, в реверс шнек + окно** |  | 5.12d | 2026-08-20 09:00 A | 2026-08-27 10:00 A |  | 100% |  |  |  |  |  | 4h | 4h |
| 846 | 2.42.1 | выполнить люк в шнеке: вырезать окно, крепеж на шарнир + притвор с уплотнением + застежка | milestone | 0h | 2026-08-20 09:00 A | 2026-08-20 09:00 A |  | 100% |  |  |  | start no earlier than 2026-08-20 09:00 | Некрасов А; Тимофеев В |  |  |
| 847 | 2.42.2 | быстросъемное крепление |  | 1h | 2026-08-27 09:00 A | 2026-08-27 10:00 A |  | 100% |  |  |  | start no earlier than 2026-08-27 09:00 | Тимофеев В | 1h | 1h |
| 848 | 2.42.3 | изготовление фланца + труба для крепления гофротрубы ф250 |  | 3h | 2026-08-24 09:00 A | 2026-08-24 12:00 A |  | 100% |  |  |  | start no earlier than 2026-08-24 09:00 | Некрасов А | 3h | 3h |
| 849 | 2.43 | перенос розетка на стену инсекютер корридор у ОТК |  | 1h | 2026-08-15 09:00 A | 2026-08-17 10:00 A |  | 100% |  |  |  | start no earlier than 2026-08-15 09:00 | Бундин В | 1h | 1h |
| 850 | 2.44 | перенос инсекютер ниже на фасовке, для возможности доступа операторами |  | 1h | 2026-09-24 09:00 A | 2026-09-24 10:00 A |  | 100% |  |  |  | start no earlier than 2026-09-24 09:00 | Бундин В | 1h | 1h |
| 851 | 2.45 | изготовить лопатку для датчика сырья, что бы было 2-4 лопасти и ниже на 5-10см |  | 2h | 2026-08-13 09:00 A | 2026-08-13 11:00 A |  | 100% |  |  |  | start no earlier than 2026-08-13 09:00 | Макаревич А | 2h | 2h |
| 852 | 2.46 | прикрепить план увакуации на место (зона отстоя навесок, стенка мойки) |  | 30min | 2026-08-12 09:00 A | 2026-08-12 09:30 A |  | 100% |  |  |  | start no earlier than 2026-08-12 09:00 | Макаревич А | 0.5h | 0.5h |
| 853 | 2.47 | ремонт ручка в экструдер 2ц |  | 1h | 2026-08-14 09:00 A | 2026-08-14 10:00 A |  | 100% |  |  |  | start no earlier than 2026-08-14 09:00 | Труфанов А | 1h | 1h |
| 854 | 2.48 | **установить сифон ф110 в линию слива жиров** |  | 46.31d | 2026-08-12 09:00 A | 2026-10-06 11:30 |  | 29% | 33.08d | 111.28d |  |  |  | 3.5h | 1h |
| 855 | 2.48.1 | заявка на сифон, планирование монтаж |  | 1h | 2026-08-12 09:00 A | 2026-08-12 10:00 A |  | 100% |  |  |  | start no earlier than 2026-08-12 09:00 | Зорькин В | 1h | 1h |
| 856 | 2.48.2 | возможно ли убрать сифоны ф50, достаточно ли заслонки без гидрозатвора? Как сделать гидрозатвор ф100 |  | 15min | 2026-10-05 09:00 | 2026-10-05 09:15 |  |  |  | 111.28d | 0d | start no earlier than 2026-10-05 09:00 | Труфанов А | 0.25h |  |
| 857 | 2.48.3 | решение | milestone | 0d | 2026-10-06 09:15 | 2026-10-06 09:15 | 856FS+1d |  |  | 111.28d | 0d | start no earlier than 2026-09-08 08:00 | Зорькин В |  |  |
| 858 | 2.48.4 | контроль доставка |  | 15min | 2026-10-06 09:15 | 2026-10-06 09:30 | 855FS+7d, 857 |  |  | 111.28d | 0d | start no earlier than 2026-08-31 09:00 | Зорькин В | 0.25h |  |
| 859 | 2.48.5 | монтаж |  | 2h | 2026-10-06 09:30 | 2026-10-06 11:30 | 858 |  |  | 111.28d |  | start no earlier than 2026-09-07 09:00 | Бобренок В | 2h |  |

| ID | WBS | Task | Duration | Start | Finish | Predecessors | Complete | Remaining | Total slack | Free slack | Constraint | Resources | Work | Actual work |
| --- | --- | --- | --- | --- | --- | --- | --- | --- | --- | --- | --- | --- | --- | --- |
| 860 | 2.49 | **установить инсекютер дополнительный на экструдер** | 22.25d | 2026-08-21 09:00 A | 2026-09-17 11:00 A |  | 100% |  |  |  |  |  | 2.5h | 2.5h |
| 861 | 2.49.1 | заявка инстекютер | 15min | 2026-08-21 09:00 A | 2026-08-21 09:15 A |  | 100% |  |  |  | start no earlier than 2026-08-21 09:00 | Зорькин В | 0.25h | 0.25h |
| 862 | 2.49.2 | контроль доставки | 15min | 2026-09-09 09:00 A | 2026-09-09 09:15 A | 861FS+7d | 100% |  |  |  | start no earlier than 2026-09-09 09:00 | Зорькин В | 0.25h | 0.25h |
| 863 | 2.49.3 | монтаж розетка / кабель | 2h | 2026-09-17 09:00 A | 2026-09-17 11:00 A | 862FS+1d | 100% |  |  |  | start no earlier than 2026-09-17 09:00 | Труфанов А | 2h | 2h |
| 864 | 2.50 | маркировка канистры гидролизата - передать на время гровер нач цеха 2 | 20min | 2026-08-11 09:00 A | 2026-08-11 09:20 A |  | 100% |  |  |  | start no earlier than 2026-08-11 09:00 | Бобренок В | 0.33h | 0.33h |
| 865 | 2.51 | **ограждение мусорного контейнера у 2ц** | 15d | 2026-08-31 09:00 A | 2026-09-15 18:00 A |  | 100% |  |  |  |  |  | 34.75h | 34.75h |
| 866 | 2.51.1 | схема размещения | 1h | 2026-08-31 09:00 A | 2026-08-31 10:00 A |  | 100% |  |  |  | start no earlier than 2026-08-31 09:00 | Зорькин В | 1h | 1h |
| 867 | 2.51.2 | контроль остатков материала - каркас + обшивка стен | 30min | 2026-08-31 10:00 A | 2026-08-31 10:30 A | 866 | 100% |  |  |  | start no earlier than 2026-08-14 09:00 | Зорькин В | 0.5h | 0.5h |
| 868 | 2.51.3 | заявка материал / лист | 1h | 2026-09-01 10:30 A | 2026-09-01 11:30 A | 867FS+1d | 100% |  |  |  | start no earlier than 2026-08-10 08:00 | Зорькин В | 1h | 1h |
| 869 | 2.51.4 | контроль поставка | 15min | 2026-09-14 11:30 A | 2026-09-14 11:45 A | 868FS+10d | 100% |  |  |  | start no earlier than 2026-08-10 08:00 | Зорькин В | 0.25h | 0.25h |
| 870 | 2.51.5 | монтаж каркас + обшивка | 2d | 2026-09-14 09:00 A | 2026-09-15 18:00 A | 869FS+1d | 100% |  |  |  | start no earlier than 2026-08-10 08:00 | Некрасов А; Тимофеев В | 32h | 32h |
| 871 | 2.52 | **установить кондиционер контролерам ОТК в 2ц** | 7.38d | 2026-08-19 09:00 A | 2026-08-28 12:00 A |  | 100% |  |  |  |  |  | 7.5h | 7.5h |
| 872 | 2.52.1 | оапата счет контроль | 15min | 2026-08-19 09:00 A | 2026-08-19 09:15 A |  | 100% |  |  |  | start no earlier than 2026-08-19 09:00 | Домоводов К | 0.25h | 0.25h |
| 873 | 2.52.2 | длоставка контроль | 15min | 2026-08-24 09:15 A | 2026-08-24 09:30 A | 872FS+4d | 100% |  |  |  | start no earlier than 2026-08-17 09:00 | Домоводов К | 0.25h | 0.25h |
| 874 | 2.52.3 | монтаж | 4h | 2026-08-24 09:30 A | 2026-08-24 14:30 A | 873 | 100% |  |  |  | start no earlier than 2026-08-10 08:00 | оплот | 4h | 4h |
| 875 | 2.52.4 | монтаж крозетка | 3h | 2026-08-28 09:00 A | 2026-08-28 12:00 A | 874FS-1d | 100% |  |  |  | start no earlier than 2026-08-28 09:00 | Бобренок В | 3h | 3h |
| 876 | 2.53 | **усиление подогрев приточной вентиляции** | 42d? | 2026-08-17 09:00 A | 2026-10-02 18:00 |  | 33% | 28.19d? | 112.59d |  |  |  | 18.25h | 6h |
| 877 | 2.53.1 | планирование мощности для приточная вент до 200 квт + тепл завесы | 4h | 2026-08-17 09:00 A | 2026-08-17 13:00 A |  | 100% |  |  |  | start no earlier than 2026-08-17 09:00 | Домоводов К | 4h | 4h |
| 878 | 2.53.2 | Подключить колорифер в противоток, гибкую подводку получить на складе | 2h | 2026-09-24 09:00 A | 2026-09-24 11:00 A |  | 100% |  |  |  | start no earlier than 2026-09-24 08:00 | Дедов В | 2h | 2h |
| 879 | 2.53.3 | заявка доп котлы + автоматика | 4h | 2026-09-16 09:00 | 2026-09-16 13:00 | 877FS+1d |  |  | 118.06d | 0d | start no earlier than 2026-09-16 09:00 | Домоводов К | 4h |  |
| 880 | 2.53.4 | контроль поствки | 15min | 2026-09-26 14:00 | 2026-09-26 14:15 | 879FS+10d |  |  | 118.06d | 5.47d | start no earlier than 2026-08-10 08:00 | Зорькин В | 0.25h |  |
| 881 | 2.53.5 | монтаж | 1d? | 2026-10-02 09:00 | 2026-10-02 18:00 | 880 |  |  | 112.59d |  | start no earlier than 2026-10-02 09:00 | Некрасов А | 8h |  |
| 882 | 2.54 | собрать 4 стула и тумбочку. Находятся у мастера | 4h | 2026-08-10 08:00 A | 2026-08-10 13:00 A |  | 100% |  |  |  | start no earlier than 2026-08-10 08:00 | Бобренок В | 4h | 4h |
| 883 | 2.55 | кабель к вентилятору печи примыкание гофры к трубе выполнить без пустот фото Фадеевой | 1h | 2026-08-11 09:00 A | 2026-08-11 10:00 A |  | 100% |  |  |  | start no earlier than 2026-08-11 09:00 | Бобренок В | 1h | 1h |
| 884 | 2.56 | закрыить все эл щщитки на ключь | 1h | 2026-08-10 08:00 A | 2026-08-10 10:00 A |  | 100% |  |  |  | start no earlier than 2026-08-10 08:00 | Бобренок В | 1h | 1h |
| 885 | 2.57 | установить отбойник склад навесок, стена мойки | 1h | 2026-08-10 08:00 A | 2026-08-10 10:00 A |  | 100% |  |  |  | start no earlier than 2026-08-10 08:00 | Бобренок В | 1h | 1h |

| ID | WBS | Task | Type | Duration | Start | Finish | Predecessors | Complete | Remaining | Total slack | Free slack | Constraint | Resources | Work | Actual work |
| --- | --- | --- | --- | --- | --- | --- | --- | --- | --- | --- | --- | --- | --- | --- | --- |
| 886 | 2.58 | **обеспечить не менее +15 зимой в зоне хранения навесок** |  | 66.34d? | 2026-08-04 09:00 A | 2026-10-26 11:45 |  | 22% | 52.03d? | 97.25d |  |  |  | 38.25h | 8.25h |
| 887 | 2.58.1 | **утепление стены** |  | 31d? | 2026-09-01 09:00 A | 2026-10-02 18:00 |  | 11% | 27.65d? | 112.59d |  |  |  | 9.25h | 1h |
| 888 | 2.58.1.1 | расчет количство утеплителя + профлист/саморезы. Заявка |  | 1h | 2026-09-09 09:00 A | 2026-09-09 10:00 A |  | 100% |  |  |  | start no earlier than 2026-09-09 09:00 | Зорькин В | 1h | 1h |
| 889 | 2.58.1.2 | получить цену / решение о тепловой завесе | milestone | 0d | 2026-09-01 09:00 A | 2026-09-01 09:00 A |  | 100% |  |  |  | start no earlier than 2026-09-01 09:00 | Домоводов К |  |  |
| 890 | 2.58.1.3 | контроль даты доставки |  | 15min | 2026-09-14 10:00 | 2026-09-14 10:15 | 888FS+5d |  |  | 129.44d | 14.84d | start no earlier than 2026-08-27 08:00 | Зорькин В | 0.25h |  |
| 891 | 2.58.1.4 | монтаж утеплитель и листы |  | 1d? | 2026-10-02 09:00 | 2026-10-02 18:00 | 890FS+1d |  |  | 112.59d |  | start no earlier than 2026-10-02 09:00 | Некрасов А | 8h |  |
| 892 | 2.58.1.5 | решение об утеплении стены сравнить с затратами на тепловые завесы | milestone | 0h | 2026-09-01 09:00 | 2026-09-01 09:00 | 889, 908 |  |  | 122.25d | 25d | start no earlier than 2026-08-24 09:00 | Домоводов К |  |  |
| 893 | 2.58.2 | **кап ремонт стен зона хранения навесок. Промерзают** |  | 5.12d | 2026-08-04 09:00 A | 2026-08-11 10:00 A |  | 100% |  |  |  |  |  | 5h | 5h |
| 894 | 2.58.2.1 | установить листы на место склад навесо стена с эл щитком |  | 1h | 2026-08-11 09:00 A | 2026-08-11 10:00 A |  | 100% |  |  |  | start no earlier than 2026-08-11 09:00 | Тимофеев В | 1h | 1h |
| 895 | 2.58.2.2 | вскрытие стен дя составления плана работ. Демонтировать несколько листов в зоне промерзания (гдещиток) |  | 4h | 2026-08-04 09:00 A | 2026-08-04 13:00 A |  | 100% |  |  |  | start no earlier than 2026-08-04 09:00 | Тимофеев В | 4h | 4h |
| 896 | 2.58.3 | **тепловые завесы в 2ц зона подачи навесок** |  | 57.34d? | 2026-08-17 09:00 A | 2026-10-26 11:45 |  | 8% | 52.51d? | 97.25d |  |  |  | 23.75h | 2h |
| 897 | 2.58.3.1 | **монтаж теплокалориферов** |  | 20.34d? | 2026-09-28 09:00 | 2026-10-26 11:45 |  |  |  | 97.25d |  |  |  | 10.75h |  |
| 898 | 2.58.3.1.1 | заявка |  | 2h | 2026-09-28 09:00 | 2026-09-28 11:00 | 892FS+1d |  |  | 97.25d | 0d | start no earlier than 2026-09-28 09:00 | Домоводов К | 2h |  |
| 899 | 2.58.3.1.2 | контроль оплаты\ |  | 15min | 2026-09-30 11:00 | 2026-09-30 11:15 | 898FS+2d |  |  | 97.25d | 0d | start no earlier than 2026-09-07 09:00 | Зорькин В | 0.25h |  |
| 900 | 2.58.3.1.3 | контроль доставки |  | 15min | 2026-10-21 11:15 | 2026-10-21 11:30 | 899FS+15d |  |  | 97.25d | 0d | start no earlier than 2026-08-10 08:00 | Зорькин В | 0.25h |  |
| 901 | 2.58.3.1.4 | приемка |  | 15min | 2026-10-22 11:30 | 2026-10-22 11:45 | 900FS+1d |  |  | 97.25d | 0d | start no earlier than 2026-08-10 08:00 | Зорькин В | 0.25h |  |
| 902 | 2.58.3.1.5 | монтаж калориферов |  | 1d? | 2026-10-23 11:45 | 2026-10-26 11:45 | 901FS+1d |  |  | 97.25d |  | start no earlier than 2026-08-10 08:00 | Некрасов А | 8h |  |
| 903 | 2.58.3.2 | **монтаж кабель** |  | 44.38d? | 2026-08-17 09:00 A | 2026-10-07 12:00 |  | 15% | 37.55d? | 110.22d |  |  |  | 13h | 2h |
| 904 | 2.58.3.2.1 | планирование мощности |  | 2h | 2026-08-17 09:00 A | 2026-08-17 11:00 A |  | 100% |  |  |  | start no earlier than 2026-08-17 09:00 | Домоводов К | 2h | 2h |
| 905 | 2.58.3.2.2 | заявка кабель /щиток |  | 2h | 2026-09-28 09:00 | 2026-09-28 11:00 | 904 |  |  | 110.22d | 0d | start no earlier than 2026-09-28 09:00 | Домоводов К | 2h |  |
| 906 | 2.58.3.2.3 | контроль доставка |  | 1h | 2026-10-05 11:00 | 2026-10-05 12:00 | 905FS+5d |  |  | 110.22d | 0d | start no earlier than 2026-08-10 08:00 | Зорькин В | 1h |  |
| 907 | 2.58.3.2.4 | монтаж |  | 1d? | 2026-10-06 12:00 | 2026-10-07 12:00 | 906FS+1d |  |  | 110.22d |  | start no earlier than 2026-08-10 08:00 | Некрасов А | 8h |  |
| 908 | 2.58.4 | контроль достаточности если не крепить верхние саморезы |  | 15min | 2026-08-13 09:00 A | 2026-08-13 09:15 A |  | 100% |  |  |  | start no earlier than 2026-08-13 09:00 | Домоводов К | 0.25h | 0.25h |
| 909 | 2.59 | **дверь в мойку сделать герметичный притвор** |  | 1.25d | 2026-08-14 09:00 A | 2026-08-17 11:00 A |  | 100% |  |  |  |  |  | 2.33h | 2.33h |
| 910 | 2.59.1 | подбор уплотнителя / заказать |  | 20min | 2026-08-14 09:00 A | 2026-08-14 09:20 A |  | 100% |  |  |  | start no earlier than 2026-08-14 09:00 | Домоводов К | 0.33h | 0.33h |
| 911 | 2.59.2 | монтаж резинки на клей |  | 2h | 2026-08-16 09:00 A | 2026-08-17 11:00 A |  | 100% |  |  |  | start no earlier than 2026-08-16 09:00 | Бобренок В | 2h | 2h |

| ID | WBS | Task | Type | Duration | Start | Finish | Predecessors | Complete | Remaining | Total slack | Free slack | Constraint | Resources | Work | Actual work |
| --- | --- | --- | --- | --- | --- | --- | --- | --- | --- | --- | --- | --- | --- | --- | --- |
| 912 | 2.60 | **пролистыватель с апликтором заказ** |  | 48d? | 2026-08-10 09:00 A | 2026-10-05 18:00 |  | 12% | 42.05d? | 111.59d |  |  |  | 9.42h | 1.17h |
| 913 | 2.60.1 | получить договор + счет |  | 1h | 2026-08-10 09:00 A | 2026-08-10 10:00 A |  | 100% |  |  |  | start no earlier than 2026-08-10 08:00 | Зорькин В | 1h | 1h |
| 914 | 2.60.2 | **согласвоание договор** |  | 3.02d | 2026-08-12 09:00 A | 2026-08-17 09:10 A |  | 100% |  |  |  |  |  | 0.17h | 0.17h |
| 915 | 2.60.2.1 | подать договор |  | 5min | 2026-08-12 09:00 A | 2026-08-12 09:05 A |  | 100% |  |  |  | start no earlier than 2026-08-12 09:00 | Домоводов К | 0.08h | 0.08h |
| 916 | 2.60.2.2 | контроль |  | 5min | 2026-08-17 09:05 A | 2026-08-17 09:10 A | 915FS+5d | 100% |  |  |  | start no earlier than 2026-08-12 09:00 | Домоводов К | 0.08h | 0.08h |
| 917 | 2.60.3 | оплата подать счет | milestone | 0d | 2026-08-12 09:00 A | 2026-08-12 09:00 A |  | 100% |  |  |  | start no earlier than 2026-08-12 09:00 | Домоводов К |  |  |
| 918 | 2.60.4 | доставка конетроль |  | 15min | 2026-09-18 09:00 | 2026-09-18 09:15 | 917FS+30d |  |  | 125.56d | 13.97d | start no earlier than 2026-08-10 08:00 | Зорькин В | 0.25h |  |
| 919 | 2.60.5 | монтаж |  | 1d? | 2026-10-05 09:00 | 2026-10-05 18:00 | 918FS+1d |  |  | 111.59d |  | start no earlier than 2026-10-05 09:00 | Тимофеев В | 8h |  |
| 920 | 2.61 | **вентиляция мойка приточно-вытяжная 1ц 2 линия** |  | 9.19d | 2026-08-13 09:00 A | 2026-08-26 10:30 A |  | 100% |  |  |  |  |  | 20h | 20h |
| 921 | 2.61.1 | монтаж вытяжной трубы в колектор. После переноса вентиляторов отключен |  | 4h | 2026-08-17 09:00 A | 2026-08-17 13:00 A |  | 100% |  |  |  | start no earlier than 2026-08-16 09:00 | Бобренок В | 4h | 4h |
| 922 | 2.61.2 | составить проект |  | 4h | 2026-08-13 09:00 A | 2026-08-13 13:00 A |  | 100% |  |  |  | start no earlier than 2026-08-13 09:00 | Домоводов К | 4h | 4h |
| 923 | 2.61.3 | заявка материалы |  | 1h | 2026-08-24 09:00 A | 2026-08-24 10:00 A | 922FS+7d | 100% |  |  |  | start no earlier than 2026-08-24 09:00 | Зорькин В | 1h | 1h |
| 924 | 2.61.4 | контроль поставки |  | 30min | 2026-08-25 10:00 A | 2026-08-25 10:30 A | 923FS+1d | 100% |  |  |  | start no earlier than 2026-08-10 08:00 | Зорькин В | 0.5h | 0.5h |
| 925 | 2.61.5 | монтаж |  | 1d | 2026-08-25 10:30 A | 2026-08-26 10:30 A | 924 | 100% |  |  |  | start no earlier than 2026-08-10 08:00 | Некрасов А; Тимофеев В | 10.5h | 10.5h |
| 926 | 2.62 | **выполнить обрамление двери в охладитель, что бы скрыть поверхность** |  | 27.25d | 2026-08-14 09:00 A | 2026-09-17 11:00 A |  | 100% |  |  |  |  |  | 4.5h | 4.5h |
| 927 | 2.62.1 | заказ декоративный уголок |  | 15min | 2026-08-14 09:00 A | 2026-08-14 09:15 A |  | 100% |  |  |  | start no earlier than 2026-08-14 09:00 | Домоводов К | 0.25h | 0.25h |
| 928 | 2.62.2 | контроль доставки |  | 15min | 2026-09-09 09:00 A | 2026-09-09 09:15 A | 927FS+5d | 100% |  |  |  | start no earlier than 2026-09-09 09:00 | Зорькин В | 0.25h | 0.25h |
| 929 | 2.62.3 | обить дверь в охладитель профлистом оцнк |  | 2h | 2026-09-17 09:00 A | 2026-09-17 11:00 A |  | 100% |  |  |  | start no earlier than 2026-09-17 09:00 | Некрасов А | 2h | 2h |
| 930 | 2.62.4 | монтаж |  | 2h | 2026-09-03 09:00 A | 2026-09-03 11:00 A | 928FS+1d | 100% |  |  |  | start no earlier than 2026-09-03 09:00 | Труфанов А | 2h | 2h |
| 931 | 2.63 | **ремонт осушителя компрессора 2ц** |  | 47.31d | 2026-08-09 09:00 A | 2026-10-05 11:30 |  | 80% | 9.59d | 112.28d |  |  |  | 13.58h | 11.08h |
| 932 | 2.63.1 | проверка давления фреона |  | 1h | 2026-09-17 09:00 A | 2026-09-17 10:00 A |  | 100% |  |  |  | start no earlier than 2026-09-17 09:00 | Труфанов А; Некрасов А | 2h | 2h |
| 933 | 2.63.2 | заявка фреон 134а |  | 15min | 2026-09-25 09:00 | 2026-09-25 09:15 | 932 |  |  | 112.28d | 0d | start no earlier than 2026-09-25 09:00 | Зорькин В | 0.25h |  |
| 934 | 2.63.3 | доставка контроль |  | 15min | 2026-10-02 09:15 | 2026-10-02 09:30 | 933FS+7d |  |  | 112.28d | 0d | start no earlier than 2026-09-18 08:00 | Зорькин В | 0.25h |  |
| 935 | 2.63.4 | заправить хладогент |  | 2h | 2026-10-05 09:30 | 2026-10-05 11:30 | 934FS+1d |  |  | 112.28d |  | start no earlier than 2026-10-01 09:00 | Некрасов А | 2h |  |
| 936 | 2.63.5 | фото шильдик для поиск в продаже |  | 10min | 2026-08-11 09:00 A | 2026-08-11 09:10 A |  | 100% |  |  |  | start no earlier than 2026-08-11 09:00 | Некрасов А | 0.17h | 0.17h |
| 937 | 2.63.6 | связь с сервисным отделом получить дату |  | 1h | 2026-08-12 09:00 A | 2026-08-12 10:00 A |  | 100% |  |  |  | start no earlier than 2026-08-12 09:00 | Зорькин В | 1h | 1h |
| 938 | 2.63.7 | фото шильдик для поиск в продаже |  | 1h | 2026-08-12 09:00 A | 2026-08-12 10:00 A |  | 100% |  |  |  | start no earlier than 2026-08-12 09:00 | Зорькин В | 1h | 1h |
| 939 | 2.63.8 | слить конденсат с компрессора, чистка фильтров | manual | 3h | 2026-08-09 09:00 A | 2026-08-09 12:00 A |  | 100% |  |  |  | start no earlier than 2026-08-09 09:00 | Бобренок В | 3h | 3h |
| 940 | 2.63.9 | попробовать смазать подшипники вентилятора осушителя |  | 15min | 2026-08-18 09:00 A | 2026-08-18 09:15 A |  | 100% |  |  |  | start no earlier than 2026-08-18 09:00 | Некрасов А | 0.25h | 0.25h |
| 941 | 2.63.10 | замер размеров вентилятора |  | 15min | 2026-08-18 09:00 A | 2026-08-18 09:15 A |  | 100% |  |  |  | start no earlier than 2026-08-18 09:00 | Зорькин В; Некрасов А | 0.5h | 0.5h |
| 942 | 2.63.11 | подбор аналога вентилятора погабариту |  | 1h | 2026-08-18 09:15 A | 2026-08-18 10:15 A | 941 | 100% |  |  |  | start no earlier than 2026-08-14 09:00 | Зорькин В | 1h | 1h |
| 943 | 2.63.12 | заменить вентилятор на осушителе (от охладителя, лежит на компрессоре). В 6 утра остановка |  | 2h | 2026-08-19 09:00 A | 2026-08-19 11:00 A |  | 100% |  |  |  | start no earlier than 2026-08-19 09:00 | Бобренок В | 2h | 2h |
| 944 | 2.63.13 | Заявка в сервис не работает осушитель |  | 10min | 2026-08-31 09:00 A | 2026-08-31 09:10 A |  | 100% |  |  |  | start no earlier than 2026-08-31 09:00 | Зорькин В | 0.17h | 0.17h |
| 945 | 2.64 | установить защитные крышки на клемник вентиляторов охладителя. От 3д печать | manual | 4h | 2026-09-16 09:00 A | 2026-09-16 13:00 A |  | 100% |  |  |  | start no earlier than 2026-09-16 09:00 | Труфанов А | 4h | 4h |
| 946 | 2.65 | заменить резинки на красном баке (выдать, если будет остановка, поменять) | manual | 1h | 2026-08-31 09:00 A | 2026-08-31 10:00 A |  | 100% |  |  |  | start no earlier than 2026-08-31 09:00 | Бобренок В | 1h | 1h |
| 947 | 2.66 | на приемной горловине красного смесителя закрутить второй ленточный хомут, чтобы не выпадала мука |  | 1h | 2026-08-06 09:00 A | 2026-08-06 10:00 A |  | 100% |  |  |  | start no earlier than 2026-08-06 08:00 | Труфанов А | 1h | 1h |

| ID | WBS | Task | Type | Duration | Start | Finish | Predecessors | Complete | Actual start | Actual finish | Constraint | Resources | Work | Actual work |
| --- | --- | --- | --- | --- | --- | --- | --- | --- | --- | --- | --- | --- | --- | --- |
| 948 | 2.67 | **закрутить болты на петлях двери печи** |  | 0.12d | 2026-09-02 09:00 A | 2026-09-02 10:00 A |  | 100% |  |  |  |  | 1h | 1h |
| 949 | 2.67.1 | попробовать закрутить на винтовые заклепки |  | 1h | 2026-09-02 09:00 A | 2026-09-02 10:00 A |  | 100% |  |  | start no earlier than 2026-09-04 09:00 | Некрасов А | 1h | 1h |
| 950 | 2.68 | установка фильтров на подачу жира (осн. + резерв) |  | 2h | 2026-08-06 08:00 A | 2026-08-06 11:00 A |  | 100% |  |  | start no earlier than 2026-08-06 08:00 | Тимофеев В | 2h | 2h |
| 951 | 2.69 | эксперимент с лейкой подача жиров |  | 1h | 2026-08-06 08:00 A | 2026-08-06 10:00 A |  | 100% |  |  | start no earlier than 2026-08-06 08:00 | Тимофеев В | 1h | 1h |
| 952 | 2.70 | **по аналогии второй линии насверлить сверлом 1 мм отверстия в трубке для жиров** |  | 0.12d | 2026-08-06 09:00 A | 2026-08-06 10:00 A |  | 100% |  |  |  | Макаревич А | 2h | 2h |
| 953 | 2.70.1 | установка трубки на жиры |  | 1h | 2026-08-06 09:00 A | 2026-08-06 10:00 A |  | 100% |  |  | start no earlier than 2026-08-06 09:00 | Тимофеев В | 1h | 1h |
| 954 | 2.71 | поломоечная машинка вырезать из силикона шторку захвата воды |  | 2h | 2026-08-03 08:00 A | 2026-08-03 11:00 A |  | 100% |  |  | start no earlier than 2026-08-03 08:00 | Бобренок В | 2h | 2h |
| 955 | 2.72 | **втулка фторопласт заказать 26х44х5** |  | 1d? | 2026-08-04 09:00 A | 2026-08-04 18:00 A |  | 100% |  |  |  | Шуранов Ю | 8h | 8h |
| 956 | 2.72.1 | счет доставка |  | 1d? | 2026-08-04 09:00 A | 2026-08-04 18:00 A |  | 100% |  |  | start no earlier than 2026-08-04 08:00 |  |  |  |
| 957 | 2.73 | **посмотреть вентилятор Сапелина у нас в кабинете (не работает)** |  | 1d? | 2026-08-04 09:00 A | 2026-08-04 18:00 A |  | 100% |  |  |  | Бобренок В | 8h | 8h |
| 958 | 2.73.1 | сгорел двигатель |  | 1d? | 2026-08-04 09:00 A | 2026-08-04 18:00 A |  | 100% |  |  | start no earlier than 2026-08-04 08:00 |  |  |  |
| 959 | 2.74 | слить конденсат с компрессора |  | 0.5h | 2026-08-02 09:00 A | 2026-08-03 09:30 A |  | 100% |  |  | start no earlier than 2026-08-02 09:00 | Бобренок В | 0.5h | 0.5h |
| 960 | 2.75 | **продолжить изготовление приемной горловины по аналогии 3 ц.** |  | 4h? | 2026-08-10 09:00 | 2026-08-10 13:00 |  | 100% | 2026-07-29 09:00 | 2026-09-04 11:00 |  |  | 14.08h | 14.08h |
| 961 | 2.75.1 | заказать прут нерж. |  | 1d? | 2026-07-29 09:00 A | 2026-07-29 18:00 A |  | 100% |  |  | start no earlier than 2026-07-29 09:00 | Зорькин В | 8h | 8h |
| 962 | 2.75.2 | контроль доставка |  | 5min | 2026-08-18 09:00 A | 2026-08-18 09:05 A |  | 100% |  |  | start no earlier than 2026-08-18 09:00 | Зорькин В | 0.08h | 0.08h |
| 963 | 2.75.3 | изготовление / установка |  | 4h | 2026-08-20 09:00 A | 2026-08-20 13:00 A | 962 | 100% |  |  | start no earlier than 2026-08-20 09:00 | Макаревич А | 4h | 4h |
| 964 | 2.75.4 | Корректировка горловины, сделать более плотные зазоры, посмотреть по месту |  | 2h | 2026-09-04 09:00 A | 2026-09-04 11:00 A |  | 100% |  |  | start no earlier than 2026-09-04 09:00 | Макаревич А | 2h | 2h |
| 965 | 2.76 | прикрутить лотки охладителя, чтобы не задевали сетку (лишние отверстия заварить) | manual | 2h | 2026-08-03 09:00 A | 2026-08-03 11:00 A |  | 100% |  |  | start no earlier than 2026-08-03 09:00 | Бобренок В | 2h | 2h |
| 966 | 2.77 | чистка фильтров кондиционеров | manual | 1h | 2026-08-01 09:00 A | 2026-08-01 10:00 A |  | 100% |  |  | start no earlier than 2026-08-01 09:00 | Бундин В | 1h | 1h |
| 967 | 2.78 | слить конденсат с компрессора |  | 1h | 2026-07-30 08:00 A | 2026-07-30 10:00 A |  | 100% |  |  | start no earlier than 2026-07-30 08:00 | Дедов В | 1h | 1h |
| 968 | 2.79 | слив конденсата с кондиционеров прочистить трубу | manual | 2h | 2026-08-01 09:00 A | 2026-08-01 11:00 A |  | 100% |  |  | start no earlier than 2026-08-01 09:00 | Бундин В | 2h | 2h |
| 969 | 2.80 | Настройка частотника питателя (созвон с Валентином) |  | 1h | 2026-07-31 09:00 A | 2026-07-31 10:00 A |  | 100% |  |  | start no earlier than 2026-07-31 09:00 | Бундин В | 1h | 1h |
| 970 | 2.81 | дверь металлическая зона выдачи ГП ревизия, плоход закрывается |  | 1h | 2026-07-15 09:00 A | 2026-07-15 10:00 A |  | 100% |  |  | start no earlier than 2026-07-15 09:00 | Бундин В | 1h | 1h |
| 971 | 2.82 | крепление доводчик дверь входная |  | 1h | 2026-07-15 09:00 A | 2026-07-15 10:00 A |  | 100% |  |  | start no earlier than 2026-07-15 09:00 | Бундин В | 1h | 1h |
| 972 | 2.83 | снять меющийся, установить новый прайсчекер (лежит у мастеров) |  | 1h | 2026-07-15 09:00 A | 2026-07-15 10:00 A |  | 100% |  |  | start no earlier than 2026-07-15 09:00 | Бундин В | 1h | 1h |
| 973 | 2.84 | ремонт кронштейна датчик давления |  | 30min | 2026-07-10 09:00 A | 2026-07-10 09:30 A |  | 100% |  |  | start no earlier than 2026-07-10 09:00 | Бобренок В | 0.5h | 0.5h |
| 974 | 2.85 | замерить демонтированные шнеки, заполнить ьабличку Зорькина |  | 1h | 2026-07-11 09:00 A | 2026-07-13 10:00 A |  | 100% |  |  | start no earlier than 2026-07-11 09:00 | Макаревич А | 1h | 1h |
| 975 | 2.86 | обшить входной проем п-образным профилем (на складе лежит) | manual | 3h | 2026-07-08 09:00 A | 2026-07-08 12:00 A |  | 100% |  |  | start no earlier than 2026-07-08 09:00 | Некрасов А; Тимофеев В | 6h | 6h |
| 976 | 2.87 | чистка воздушных клапанов на септике |  | 1d? | 2026-07-02 09:00 A | 2026-07-02 18:00 A |  | 100% |  |  | start no earlier than 2026-07-02 09:00 | Олег | 8h | 8h |
| 977 | 2.88 | закрепить щиток транспортера у стены на фасовке, малый дозатор) | manual | 1h | 2026-07-04 09:00 A | 2026-07-04 10:00 A |  | 100% |  |  | start no earlier than 2026-07-04 09:00 | Дедов В | 1h | 1h |

| ID | WBS | Task | Type | Duration | Start | Finish | Complete | Remaining | Total slack | Constraint | Resources | Work | Actual work |
| --- | --- | --- | --- | --- | --- | --- | --- | --- | --- | --- | --- | --- | --- |
| 978 | 2.89 | **под экструдером масло- ревизия откуда** |  | 0.12d | 2026-07-03 09:00 A | 2026-07-03 10:00 A | 100% |  |  |  |  | 1h | 1h |
| 979 | 2.89.1 | заменить шланг 20мм (лежит черный на стеллаже справа, где кабель) при остановке- согласовать с мастером |  | 1h | 2026-07-03 09:00 A | 2026-07-03 10:00 A | 100% |  |  | start no earlier than 2026-07-03 09:00 | Макаревич А | 1h | 1h |
| 980 | 2.90 | чистка труб сброса конденсата с кондиционеров |  | 2h | 2026-06-30 09:00 A | 2026-06-30 11:00 A | 100% |  |  | start no earlier than 2026-06-30 09:00 | Некрасов А; Тимофеев В | 2h | 2h |
| 981 | 2.91 | чистка всех фильтров на кондиционеры, разобраться с питанием внутреннего блока |  | 1d? | 2026-06-29 09:00 A | 2026-06-29 18:00 A | 100% |  |  | start no earlier than 2026-06-29 09:00 |  |  |  |
| 982 | 2.92 | ТО бестром |  | 2h | 2026-06-30 09:00 A | 2026-06-30 11:00 A | 100% |  |  | start no earlier than 2026-06-30 09:00 | Бундин В | 2h | 2h |
| 983 | 2.93 | промыть внешние блоки кондиционеров |  | 3h | 2026-06-26 09:00 A | 2026-06-26 12:00 A | 100% |  |  | start no earlier than 2026-06-26 09:00 | Тимофеев В; Дедов В | 6h | 6h |
| 984 | 2.94 | вернуть кожух защиты на прекондиционер (подогнать в размер) на остановке линии |  | 2h | 2026-06-24 09:00 A | 2026-06-24 11:00 A | 100% |  |  | start no earlier than 2026-06-24 09:00 | Труфанов А | 2h | 2h |
| 985 | 2.95 | подключение тепловой защиты на приточке и вытяжке |  | 2h | 2026-06-23 08:00 A | 2026-06-23 11:00 A | 100% |  |  | start no earlier than 2026-06-23 08:00 | Тимофеев В; Макаревич А | 4h | 4h |
| 986 | 2.96 | заменить фильтр приточка 2 этаж и указать кол-во остатка на складе |  | 1h | 2026-06-20 09:00 A | 2026-06-22 10:00 A | 100% |  |  | start no earlier than 2026-06-20 09:00 | Дедов В | 1h | 1h |
| 987 | 2.97 | сделать защиту жировика от холода (изготовить из сенгвич панели на навесках 2ц.) жировик расскажет | manual | 2h | 2026-06-21 09:00 A | 2026-06-21 11:00 A | 100% |  |  | start no earlier than 2026-06-21 09:00 | Бундин В | 2h | 2h |
| 988 | 2.98 | проверка теко 0,4 -пакет запаенный |  | 1h | 2026-06-18 08:00 A | 2026-06-18 10:00 A | 100% |  |  | start no earlier than 2026-06-18 08:00 | Дедов В | 1h | 1h |
| 989 | 2.99 | подключение датчика давления через гидрошланг |  | 1h | 2026-07-09 09:00 A | 2026-07-09 10:00 A | 100% |  |  | start no earlier than 2026-07-09 09:00 | Бундин В | 1h | 1h |
| 990 | 2.100 | чистка парогенератора |  | 2h | 2026-06-18 08:00 A | 2026-06-18 11:00 A | 100% |  |  | start no earlier than 2026-06-18 08:00 | Тимофеев В | 2h | 2h |
| 991 | 2.101 | слив конденсата с компрессора и продуть радиаторы и фильтры |  | 1h | 2026-06-20 09:00 A | 2026-06-22 10:00 A | 100% |  |  | start no earlier than 2026-06-20 09:00 | Бобренок В | 1h | 1h |
| 992 | 2.102 | проверить, есть ли давление во всех гидроаккумуляторах на отоплении по цеху, зафиксировать с порванными мембранами |  | 2h | 2026-06-11 09:00 A | 2026-06-11 11:00 A | 100% |  |  | start no earlier than 2026-06-11 09:00 | Дедов В | 2h | 2h |
| 993 | 2.103 | дверь охладителя и угол - прикрутить наружний уголок 20х50 и 50х50, чтобы не резали руки (уголок на входе напротив ворот в синем складе) |  | 3h | 2026-06-12 09:00 A | 2026-06-12 12:00 A | 100% |  |  | start no earlier than 2026-06-12 09:00 | Дедов В | 3h | 3h |
| 994 | 2.104 | взять на складе специальный п-образный профиль и обшить дверной проем вход в охладитель | manual | 2h | 2026-07-05 09:00 A | 2026-07-05 11:00 A | 100% |  |  | start no earlier than 2026-07-05 09:00 |  |  |  |
| 995 | 2.105 | проверка гидроаккумулятора на водоподготовке |  | 0.5h | 2026-06-11 09:00 A | 2026-06-11 09:30 A | 100% |  |  | start no earlier than 2026-06-11 09:00 | Дедов В | 0.5h | 0.5h |
| 996 | 2.106 | чистка парогенератора |  | 2h | 2026-06-11 09:00 A | 2026-06-11 11:00 A | 100% |  |  | start no earlier than 2026-06-11 09:00 | Тимофеев В | 2h | 2h |
| 997 | 2.107 | **посмотреть на желтом складе шибер, если найдем устанавливаем на аквариум зона экструдера** |  | 0.12d | 2026-06-12 09:00 A | 2026-06-12 10:00 A | 100% |  |  |  |  | 1h | 1h |
| 998 | 2.107.1 | монтаж воздуховод под углом на шибер- настройка с операторами направление обдува |  | 1h | 2026-06-12 09:00 A | 2026-06-12 10:00 A | 100% |  |  | start no earlier than 2026-06-12 09:00 | Бундин В | 1h | 1h |
| 999 | 2.108 | **ворота выход готовой продукции (прикрутить ролик, ролик у нас в кабинете)** |  | 1d? | 2026-06-11 09:00 A | 2026-06-11 18:00 | 99% | 0d? | 0d |  | Труфанов А | 16h | 15h |
| 1000 | 2.108.1 | выкл. Ручной режим |  | 1d? | 2026-06-11 09:00 A | 2026-06-11 18:00 A | 100% |  |  | start no earlier than 2026-06-11 09:00 | Дедов В | 8h | 8h |
| 1001 | 2.109 | промерить шнеки / гильзы износ. Маркировать |  | 1h | 2026-07-08 09:00 A | 2026-07-08 10:00 A | 100% |  |  | start no earlier than 2026-07-08 09:00 | Зорькин В | 1h | 1h |
| 1002 | 2.110 | сверлить сетку от фильеры, сверлом на станке, все отверстия. |  | 4h | 2026-06-06 09:00 A | 2026-06-08 13:00 A | 100% |  |  | start no earlier than 2026-06-06 09:00 | Бобренок В | 4h | 4h |

| ID | WBS | Task | Type | Duration | Start | Finish | Predecessors | Complete | Remaining | Actual start | Actual finish | Total slack | Free slack | Constraint | Resources | Work | Actual work |
| --- | --- | --- | --- | --- | --- | --- | --- | --- | --- | --- | --- | --- | --- | --- | --- | --- | --- |
| 1003 | 2.111 | **заменаить сальник редуктора транспортер №3** |  | 0.12d | 2026-06-18 09:00 A | 2026-06-18 10:00 A |  | 100% |  |  |  |  |  |  |  | 2h | 2h |
| 1004 | 2.111.1 | заменаить редутор из зип |  | 1h | 2026-06-18 09:00 A | 2026-06-18 10:00 A |  | 100% |  |  |  |  |  | start no earlier than 2026-06-18 09:00 | Тимофеев В | 1h | 1h |
| 1005 | 2.111.2 | замена сальник на снятом |  | 1h | 2026-06-18 09:00 A | 2026-06-18 10:00 A |  | 100% |  |  |  |  |  | start no earlier than 2026-06-19 09:00 | Тимофеев В | 1h | 1h |
| 1006 | 2.112 | законтрогаить шпильки-ножки запайщиков |  | 1h | 2026-06-06 09:00 A | 2026-06-08 10:00 A |  | 100% |  |  |  |  |  | start no earlier than 2026-06-06 09:00 | Бобренок В | 1h | 1h |
| 1007 | 2.113 | **нория квадропак -устранить просыпание** |  | 1d? | 2026-06-04 09:00 A | 2026-06-04 18:00 A |  | 100% |  |  |  |  |  |  | Тимофеев В | 16h | 16h |
| 1008 | 2.113.1 | добавить частоту частотника до 70 на норию |  | 1d? | 2026-06-04 09:00 A | 2026-06-04 18:00 A |  | 100% |  |  |  |  |  | start no earlier than 2026-06-04 09:00 | Дедов В | 8h | 8h |
| 1009 | 2.114 | Замена шнеков (усиленные) - по уровню |  | 4h | 2026-06-04 09:00 A | 2026-06-04 13:00 A |  | 100% |  |  |  |  |  | start no earlier than 2026-06-04 09:00 | Тимофеев В | 4h | 4h |
| 1010 | 2.115 | монтаж воздуховод приточный в площадку загрузки смесителя |  | 3h | 2026-06-05 09:00 A | 2026-06-05 12:00 A |  | 100% |  |  |  |  |  | start no earlier than 2026-06-05 09:00 | Некрасов А | 3h | 3h |
| 1011 | 2.116 | очистка вентилятора окно экструдер |  | 40min | 2026-06-04 09:00 A | 2026-06-04 09:40 A |  | 100% |  |  |  |  |  | start no earlier than 2026-06-04 09:00 | Некрасов А; Бундин В | 1.33h | 1.33h |
| 1012 | 2.117 | **доп освещение зона охладитель** |  | 4.75d? | 2026-06-09 09:00 | 2026-06-15 16:00 |  | 100% |  | 2026-06-10 09:00 | 2026-08-06 11:00 |  |  |  |  | 12.67h | 12.67h |
| 1013 | 2.117.1 | спланировать монтаж / проверить наличие матералов |  | 20min | 2026-06-25 09:00 A | 2026-06-25 09:20 A |  | 100% |  |  |  |  |  | start no earlier than 2026-06-25 09:00 | Шуранов Ю; Дедов В | 0.67h | 0.67h |
| 1014 | 2.117.2 | заказать |  | 1d? | 2026-06-10 09:00 A | 2026-06-10 18:00 A |  | 100% |  |  |  |  |  | start no earlier than 2026-06-10 09:00 | Шуранов Ю | 8h | 8h |
| 1015 | 2.117.3 | монтаж |  | 2h | 2026-08-06 09:00 A | 2026-08-06 11:00 A | 1013 | 100% |  |  |  |  |  | start no earlier than 2026-08-06 09:00 | Тимофеев В; Бундин В | 4h | 4h |
| 1016 | 2.118 | отключить двигатель зиплока бестром |  | 1h | 2026-06-12 09:00 A | 2026-06-12 10:00 A |  | 100% |  |  |  |  |  | start no earlier than 2026-06-12 09:00 | Бундин В | 1h | 1h |
| 1017 | 2.119 | ж гардероб душ кабина осмотр гидрозатвор - сильный запах |  | 2h | 2026-05-30 09:00 A | 2026-06-01 11:00 A |  | 100% |  |  |  |  |  | start no earlier than 2026-05-30 09:00 | Бобренок В | 2h | 2h |
| 1018 | 2.120 | ремонт кресло , паук находится на складе у Веры |  | 1h | 2026-06-13 09:00 A | 2026-06-15 10:00 A |  | 100% |  |  |  |  |  | start no earlier than 2026-06-13 09:00 | Бобренок В | 1h | 1h |
| 1019 | 2.121 | ревизия нихром запайщик |  | 1h | 2026-05-29 09:00 A | 2026-05-29 10:00 A |  | 100% |  |  |  |  |  | start no earlier than 2026-05-29 08:00 | Бундин В | 1h | 1h |
| 1020 | 2.122 | штабелер 2ц ревизия колес |  | 1h | 2026-06-01 09:00 A | 2026-06-01 10:00 A |  | 100% |  |  |  |  |  | start no earlier than 2026-06-01 09:00 | Макаревич А | 1h | 1h |
| 1021 | 2.123 | **ремонт эл котел №3 охладитель** |  | 79.25d? | 2026-06-05 09:00 A | 2026-09-19 11:00 |  | 92% | 6.54d? |  |  | 120.31d |  |  |  | 24.25h | 22.25h |
| 1022 | 2.123.1 | заказать плату |  | 1d? | 2026-07-15 09:00 A | 2026-07-15 18:00 A |  | 100% |  |  |  |  |  | start no earlier than 2026-07-15 09:00 | Зорькин В | 8h | 8h |
| 1023 | 2.123.2 | замена силовой платы зота в районе мойки экструдера (плата на складе) -проверка | manual | 2h | 2026-08-09 09:00 A | 2026-08-09 11:00 A |  | 100% |  |  |  |  |  | start no earlier than 2026-08-09 09:00 | Бобренок В | 2h | 2h |
| 1024 | 2.123.3 | котел №3 проверка платы силовой управления тенами (после откл управления перегрелся пошел дым) на складе есть платы 2 шт. для ЗОТА. Слава плату заменил грешит на д температуры |  | 2h | 2026-09-01 09:00 A | 2026-09-01 11:00 A |  | 100% |  |  |  |  |  | start no earlier than 2026-09-01 09:00 | Дедов В | 2h | 2h |
| 1025 | 2.123.4 | Замена силовой платы, где сгорела 1 ТТР |  | 2h | 2026-08-31 08:00 A | 2026-08-31 11:00 A |  | 100% |  |  |  |  |  | start no earlier than 2026-08-31 08:00 | Дедов В | 2h | 2h |
| 1026 | 2.123.5 | Не работает блок тенов, заказать |  | 10min | 2026-09-01 09:00 A | 2026-09-01 09:10 A |  | 100% |  |  |  |  |  | start no earlier than 2026-09-01 08:00 | Зорькин В | 0.17h | 0.17h |
| 1027 | 2.123.6 | Контроль доставки |  | 5min | 2026-09-09 09:00 A | 2026-09-09 09:05 A |  | 100% |  |  |  |  |  | start no earlier than 2026-09-09 09:00 | Зорькин В | 0.08h | 0.08h |
| 1028 | 2.123.7 | замена блок тенов |  | 2h | 2026-09-19 09:00 | 2026-09-19 11:00 |  |  |  |  |  | 120.31d | 0d | start no earlier than 2026-09-19 09:00 | Дедов В | 2h |  |
| 1029 | 2.123.8 | заказать плату управления |  | 1d? | 2026-06-05 09:00 A | 2026-06-05 18:00 A |  | 100% |  |  |  |  |  | start no earlier than 2026-06-05 09:00 | Зорькин В | 8h | 8h |
| 1030 | 2.124 | замена задних подшипников на прекондиционере (посмотреть итальянские на складе) |  | 6h | 2026-05-26 09:00 A | 2026-05-26 16:00 A |  | 100% |  |  |  |  |  | start no earlier than 2026-05-26 09:00 | Тимофеев В; Некрасов А | 12h | 12h |
| 1031 | 2.125 | перемотать трубы скотчем серым и по низу стык улиток "загерметизировать" |  | 2h | 2026-05-25 08:00 A | 2026-05-25 11:00 A |  | 100% |  |  |  |  |  | start no earlier than 2026-05-25 08:00 | Макаревич А | 2h | 2h |

| ID | WBS | Task | Type | Duration | Start | Finish | Complete | Actual finish | Constraint | Resources | Work | Actual work |
| --- | --- | --- | --- | --- | --- | --- | --- | --- | --- | --- | --- | --- |
| 1032 | 2.126 | **изготовить мойка малая из нерж** |  | 0.5d | 2026-06-01 08:00 A | 2026-06-01 13:00 A | 100% |  |  | Макаревич А | 8h | 8h |
| 1033 | 2.126.1 | подключить мойку на месте (по телефону обсудим) |  | 4h | 2026-06-01 08:00 A | 2026-06-01 13:00 A | 100% |  | start no earlier than 2026-06-01 08:00 | Макаревич А | 4h | 4h |
| 1034 | 2.127 | **дополнительное освещение в зоне жиров** |  | 6.5d | 2026-05-26 09:00 A | 2026-06-01 13:00 | 100% | 2026-06-04 09:30 |  |  | 5h | 5h |
| 1035 | 2.127.1 | заказ светильников |  | 1h | 2026-05-26 09:00 A | 2026-05-26 10:00 A | 100% |  | start no earlier than 2026-05-26 09:00 | Шуранов Ю | 1h | 1h |
| 1036 | 2.127.2 | монтаж |  | 4h | 2026-06-01 09:00 A | 2026-06-01 13:00 A | 100% |  | start no earlier than 2026-06-01 09:00 | Макаревич А | 4h | 4h |
| 1037 | 2.127.3 | подключить к автомату на мойке |  | 0.5h | 2026-06-04 09:00 A | 2026-06-04 09:30 A | 100% |  | start no earlier than 2026-06-04 09:00 |  |  |  |
| 1038 | 2.128 | подключить пк мастеров через ИБП (согласовать с мастером 1 цеха) |  | 1h | 2026-05-25 09:00 A | 2026-05-25 10:00 A | 100% |  | start no earlier than 2026-05-25 08:00 | Шуранов Ю | 1h | 1h |
| 1039 | 2.129 | заменить помпу на термопоте в кухне |  | 1h | 2026-05-27 09:00 A | 2026-05-27 10:00 A | 100% |  | start no earlier than 2026-05-27 09:00 | Дедов В | 1h | 1h |
| 1040 | 2.130 | лопнул шланг от насосной станции до редуктора- заменить |  | 1h | 2026-05-25 08:00 A | 2026-05-25 10:00 A | 100% |  | start no earlier than 2026-05-25 08:00 | Макаревич А | 1h | 1h |
| 1041 | 2.131 | установить влагоотделитель на квадропак |  | 1h | 2026-05-25 08:00 A | 2026-05-25 10:00 A | 100% |  | start no earlier than 2026-05-25 08:00 | Дедов В | 1h | 1h |
| 1042 | 2.132 | закрепить монтажную коробку в коридоре до жировика слева, от кондиционера |  | 1h | 2026-05-22 09:00 A | 2026-05-22 10:00 A | 100% |  | start no earlier than 2026-05-22 09:00 | Бобренок В | 1h | 1h |
| 1043 | 2.133 | закрепить на доп. Клипсы трубу-воздух к стене за бестромом |  | 1h | 2026-05-23 09:00 A | 2026-05-25 10:00 A | 100% |  | start no earlier than 2026-05-23 09:00 | Бобренок В | 1h | 1h |
| 1044 | 2.134 | заменить сетку печки (находиться в слесарке) | manual | 3h | 2026-05-24 09:00 A | 2026-05-24 12:00 A | 100% |  | start no earlier than 2026-05-24 09:00 | Макаревич А | 3h | 3h |
| 1045 | 2.135 | уложить красиво и закрепить гофру от нории до красного смесителя | manual | 2h | 2026-05-24 09:00 A | 2026-05-24 11:00 A | 100% |  | start no earlier than 2026-05-24 09:00 | Макаревич А | 2h | 2h |
| 1046 | 2.136 | взять ножевой узел с желтого склада и фильеры, подготовить и передать во второй цех на экструдер |  | 1h | 2026-05-21 09:00 A | 2026-05-21 10:00 A | 100% |  | start no earlier than 2026-05-21 08:00 | Бундин В | 1h | 1h |
| 1047 | 2.137 | проверить все лотки на охладителе, чтобы не задевали сетку- если нужно поднять. |  | 1h | 2026-05-21 09:00 A | 2026-05-21 10:00 A | 100% |  | start no earlier than 2026-05-21 08:00 | Бундин В | 1h | 1h |
| 1048 | 2.138 | чистка парогенератора, если нужно замена электродов |  | 2h | 2026-05-21 08:00 A | 2026-05-21 11:00 A | 100% |  | start no earlier than 2026-05-21 08:00 | Тимофеев В | 2h | 2h |
| 1049 | 2.139 | чистка фильтра редуктора экструдера, проверка уровня масла |  | 1h | 2026-05-21 08:00 A | 2026-05-21 10:00 A | 100% |  | start no earlier than 2026-05-21 08:00 | Тимофеев В | 1h | 1h |
| 1050 | 2.140 | проверить пневмоцилиндры на встряхивателях квадропака |  | 1h | 2026-05-21 08:00 A | 2026-05-21 10:00 A | 100% |  | start no earlier than 2026-05-21 08:00 | Бобренок В | 1h | 1h |
| 1051 | 2.141 | проверка токов на печи, если просадка проверяем перемычки, тены |  | 1h | 2026-05-21 09:00 A | 2026-05-21 10:00 A | 100% |  | start no earlier than 2026-05-21 08:00 | Некрасов А | 1h | 1h |
| 1052 | 2.142 | коротит на баке жиров все проверить |  | 1h | 2026-05-21 09:00 A | 2026-05-21 10:00 A | 100% |  | start no earlier than 2026-05-21 08:00 |  |  |  |
| 1053 | 2.143 | в зоне фасовки сделать конструкцию, чтобы не выпадала макулатура |  | 6h | 2026-08-31 09:00 A | 2026-08-31 16:00 A | 100% |  | start no earlier than 2026-08-31 09:00 | Макаревич А | 6h | 6h |
| 1054 | 2.144 | закрепить доводчик на входной двери |  | 1h | 2026-05-23 09:00 A | 2026-05-25 10:00 A | 100% |  | start no earlier than 2026-05-23 09:00 | Бундин В | 1h | 1h |
| 1055 | 2.145 | установить розетку для палетооботчика на его колону |  | 2h | 2026-05-18 09:00 A | 2026-05-18 11:00 A | 100% |  | start no earlier than 2026-05-18 09:00 | Дедов В | 2h | 2h |

| ID | WBS | Task | Type | Duration | Start | Finish | Predecessors | Complete | Constraint | Resources | Work | Actual work |
| --- | --- | --- | --- | --- | --- | --- | --- | --- | --- | --- | --- | --- |
| 1056 | 2.146 | **ИБП установить на принтер SAVEMA** |  | 5.25d | 2026-05-19 09:00 A | 2026-05-26 11:00 A |  | 100% |  |  | 3.25h | 3.25h |
| 1057 | 2.146.1 | подбор и заявка ИБП |  | 1h | 2026-05-19 09:00 A | 2026-05-19 10:00 A |  | 100% | start no earlier than 2026-05-19 09:00 | Шуранов Ю | 1h | 1h |
| 1058 | 2.146.2 | контроль поставки |  | 15min | 2026-05-26 09:00 A | 2026-05-26 09:15 A |  | 100% | start no earlier than 2026-05-26 09:00 | Шуранов Ю | 0.25h | 0.25h |
| 1059 | 2.146.3 | монтаж и подключение в шкафу | manual | 2h | 2026-05-26 09:00 A | 2026-05-26 11:00 A | 1058 | 100% | start no earlier than 2026-05-26 09:00 | Дедов В | 2h | 2h |
| 1060 | 2.147 | **переместить на склад ЗИП палет сетка, зарядка АКБ штабелера** |  | 0.12d | 2026-06-01 09:00 A | 2026-06-01 10:00 A |  | 100% |  |  | 1h | 1h |
| 1061 | 2.147.1 | зарядку АКБ переместить в контейнер, она находится в мойке зона экструдера | manual | 1h | 2026-06-01 09:00 A | 2026-06-01 10:00 A |  | 100% | start no earlier than 2026-06-01 09:00 | Макаревич А | 1h | 1h |
| 1062 | 2.148 | **бестром замена линейный подшипник прижима красных ремней** |  | 24.5d | 2026-05-15 09:00 A | 2026-06-18 13:00 A |  | 100% |  |  | 5.25h | 5.25h |
| 1063 | 2.148.1 | заявка |  | 1h | 2026-05-15 09:00 A | 2026-05-15 10:00 A |  | 100% | start no earlier than 2026-05-15 09:00 | Зорькин В | 1h | 1h |
| 1064 | 2.148.2 | доставка контроль |  | 15min | 2026-05-27 10:00 A | 2026-05-27 10:15 A | 1063FS+10d | 100% | start no earlier than 2026-05-14 08:00 | Зорькин В | 0.25h | 0.25h |
| 1065 | 2.148.3 | замена |  | 4h | 2026-06-18 09:00 A | 2026-06-18 13:00 A | 1064 | 100% | start no earlier than 2026-06-18 09:00 | Тимофеев В | 4h | 4h |
| 1066 | 2.149 | осмотр цепи муфты редуктора экструдера |  | 1h | 2026-05-14 09:00 A | 2026-05-14 10:00 A |  | 100% | start no earlier than 2026-05-14 09:00 | Тимофеев В | 1h | 1h |
| 1067 | 2.150 | Линия 3 на жирах нужно поменять колеса на транспортёре, который идет на охладитель |  | 1h | 2026-05-14 09:00 A | 2026-05-14 10:00 A |  | 100% | start no earlier than 2026-05-14 09:00 | Макаревич А | 1h | 1h |
| 1068 | 2.151 | осмотр прекондиционер "звон" |  | 30min | 2026-05-14 09:00 A | 2026-05-14 09:30 A |  | 100% | start no earlier than 2026-05-14 09:00 | Тимофеев В | 0.5h | 0.5h |
| 1069 | 2.152 | **заменить гофра унитаз правый отсек** |  | 16.12d | 2026-05-13 09:00 A | 2026-06-04 10:00 A |  | 100% |  |  | 41.25h | 41.25h |
| 1070 | 2.152.1 | заявка гофра |  | 15min | 2026-05-13 09:00 A | 2026-05-13 09:15 A |  | 100% | start no earlier than 2026-05-13 09:00 | Зорькин В | 0.25h | 0.25h |
| 1071 | 2.152.2 | доставка |  | 5d | 2026-05-13 09:15 A | 2026-05-20 09:15 A | 1070 | 100% | start no earlier than 2026-05-12 08:00 | Карабанов | 40h | 40h |
| 1072 | 2.152.3 | замена |  | 1h | 2026-06-04 09:00 A | 2026-06-04 10:00 A | 1071 | 100% | start no earlier than 2026-06-04 09:00 | Бобренок В | 1h | 1h |
| 1073 | 2.153 | замена смазка шприц на экструдере |  | 30min | 2026-05-13 09:00 A | 2026-05-13 09:30 A |  | 100% | start no earlier than 2026-05-13 09:00 | Некрасов А | 0.5h | 0.5h |
| 1074 | 2.154 | замена передний подшипник + набивка прекондиционер |  | 1h | 2026-05-14 09:00 A | 2026-05-14 10:00 A |  | 100% | start no earlier than 2026-05-14 09:00 | Тимофеев В | 1h | 1h |
| 1075 | 2.155 | прикрутить лоток выше на 1 ярусе, задевает сетку со сторону редуктора |  | 1h | 2026-05-08 08:00 A | 2026-05-08 10:00 A |  | 100% | start no earlier than 2026-05-08 08:00 | Макаревич А | 1h | 1h |
| 1076 | 2.156 | взять шайбу у нас в кабинете и шлифануть одну сторону |  | 1h | 2026-05-08 09:00 A | 2026-05-08 10:00 A |  | 100% | start no earlier than 2026-05-08 09:00 | Макаревич А | 1h | 1h |
| 1077 | 2.157 | смотровое окно на загрузке прекондиционера установить |  | 4h | 2026-08-25 09:00 A | 2026-08-25 13:00 A |  | 100% | start no earlier than 2026-08-31 09:00 | Тимофеев В | 4h | 4h |
| 1078 | 2.158 | добавить воду в систему отопления зота охладитель |  | 1h | 2026-05-09 09:00 A | 2026-05-11 10:00 A |  | 100% | start no earlier than 2026-05-09 09:00 | Макаревич А | 1h | 1h |
| 1079 | 2.159 | монтаж сетки на палетообмотчике | manual | 4h | 2026-05-14 09:00 A | 2026-05-14 13:00 A |  | 100% | start no earlier than 2026-05-14 09:00 | Некрасов А; Труфанов А | 8h | 8h |
| 1080 | 2.160 | Собрать стул, находится в кабинете мастеров 2 цех |  | 1h | 2026-05-13 09:00 A | 2026-05-13 10:00 A |  | 100% | start no earlier than 2026-05-13 09:00 | Бундин В | 1h | 1h |

| ID | WBS | Task | Type | Duration | Start | Finish | Complete | Actual start | Actual finish | Constraint | Resources | Work | Actual work |
| --- | --- | --- | --- | --- | --- | --- | --- | --- | --- | --- | --- | --- | --- |
| 1081 | 2.161 | **взять у нас на складе инсектицидные светильники и повесить их во 2 цехе, где нет** |  | 1.12d | 2026-05-12 09:00 A | 2026-05-13 10:00 A | 100% |  |  |  |  | 3h | 3h |
| 1082 | 2.161.1 | ремонт |  | 2h | 2026-05-12 09:00 A | 2026-05-12 11:00 A | 100% |  |  | start no earlier than 2026-05-12 09:00 | Бундин В | 2h | 2h |
| 1083 | 2.161.2 | монтаж ламп / заполнить в журнал мастера |  | 1h | 2026-05-13 09:00 A | 2026-05-13 10:00 A | 100% |  |  | start no earlier than 2026-05-13 09:00 | Бундин В | 1h | 1h |
| 1084 | 2.162 | герметиком замазать гофру на унитазах (запах) | manual | 1h | 2026-05-07 08:00 A | 2026-05-07 09:00 A | 100% |  |  | start no earlier than 2026-05-07 08:00 | Бобренок В | 1h | 1h |
| 1085 | 2.163 | заменить фильтр на приточку 2 этаж |  | 1h | 2026-05-07 08:00 A | 2026-05-07 10:00 A | 100% |  |  | start no earlier than 2026-05-07 08:00 | Тимофеев В | 1h | 1h |
| 1086 | 2.164 | ревизия перемычек, тен на печи - замена |  | 4h | 2026-05-07 09:00 A | 2026-05-07 13:00 A | 100% |  |  | start no earlier than 2026-05-07 08:00 | Труфанов А | 4h | 4h |
| 1087 | 2.165 | **повесить на места светильники инсектицидные (замена ламп)** |  | 1d? | 2026-05-11 09:00 | 2026-05-11 18:00 | 100% | 2026-05-12 09:00 | 2026-05-12 11:00 |  |  | 2h | 2h |
| 1088 | 2.165.1 | **заказать досели** |  | 0.25d | 2026-05-12 09:00 A | 2026-05-12 11:00 A | 100% |  |  |  |  | 2h | 2h |
| 1089 | 2.165.1.1 | ремонт не рабочих светильников |  | 2h | 2026-05-12 09:00 A | 2026-05-12 11:00 A | 100% |  |  | start no earlier than 2026-05-12 09:00 | Бундин В | 2h | 2h |
| 1090 | 2.166 | уложить кабель в гофре вдоль экструдера в лоток |  | 2h | 2026-05-04 09:00 A | 2026-05-04 11:00 A | 100% |  |  | start no earlier than 2026-05-04 08:00 | Бундин В | 2h | 2h |
| 1091 | 2.167 | **подготовить ТРМ для парогенератора цех 2** |  | 0d | 2026-05-16 09:00 A | 2026-05-16 10:00 A | 100% |  |  |  | Дедов В | 1h | 1h |
| 1092 | 2.167.1 | установить на остановке ТРМ (который сняли отдать Дедову для восстановления) восстановить кнопку | manual | 1h | 2026-05-16 09:00 A | 2026-05-16 10:00 A | 100% |  |  | start no earlier than 2026-05-16 09:00 | Дедов В | 1h | 1h |
| 1093 | 2.168 | повесить светильники 3шт. |  | 1h | 2026-05-04 09:00 A | 2026-05-04 10:00 A | 100% |  |  | start no earlier than 2026-05-04 08:00 | Труфанов А | 1h | 1h |
| 1094 | 2.169 | монтаж свет на фасовке |  | 8h | 2026-05-05 09:00 A | 2026-05-05 18:00 A | 100% |  |  | start no earlier than 2026-05-05 09:00 | Тимофеев В; Труфанов А | 15h | 15h |
| 1095 | 2.170 | заменить кулер в ШУ на жирах |  | 1h | 2026-04-29 08:00 A | 2026-04-29 10:00 A | 100% |  |  | start no earlier than 2026-04-29 08:00 | Дедов В | 1h | 1h |
| 1096 | 2.171 | заменить 3х ходовой кран и фитинги с гайкой на жирах |  | 1h | 2026-04-29 09:00 A | 2026-04-29 10:00 A | 100% |  |  | start no earlier than 2026-04-30 09:00 | Дедов В | 1h | 1h |
| 1097 | 2.172 | закрепить на подножке резинку на штабелере зона экструдера (можно на саморез/клепки) |  | 1h | 2026-04-29 08:00 A | 2026-04-29 10:00 A | 100% |  |  | start no earlier than 2026-04-29 08:00 | Дедов В | 1h | 1h |
| 1098 | 2.173 | **заменить сетку для печи из зип** |  | 0.38d | 2026-05-05 09:00 A | 2026-05-05 12:00 A | 100% |  |  |  |  | 5h | 5h |
| 1099 | 2.173.1 | **заменить сетку , которую сняли с печи** |  | 3h | 2026-05-05 09:00 A | 2026-05-05 12:00 A | 100% |  |  |  | Бундин В | 5h | 5h |
| 1100 | 2.173.1.1 | ремонт сетки |  | 2h | 2026-05-05 09:00 A | 2026-05-05 11:00 A | 100% |  |  | start no earlier than 2026-05-05 09:00 | Бобренок В | 2h | 2h |
| 1101 | 2.174 | под норией сыпит сырье устранить |  | 4h | 2026-04-30 09:00 A | 2026-04-30 13:00 A | 100% |  |  | start no earlier than 2026-04-30 09:00 | Труфанов А; Некрасов А | 8h | 8h |
| 1102 | 2.175 | устранить течь, сброс пара под прекондиционером |  | 1h | 2026-05-01 09:00 A | 2026-05-01 10:00 A | 100% |  |  | start no earlier than 2026-05-01 09:00 | Дедов В | 1h | 1h |
| 1103 | 2.176 | устранить течь редуктор прекондиционера |  | 5h | 2026-04-29 09:00 A | 2026-04-29 15:00 A | 100% |  |  | start no earlier than 2026-04-29 08:00 | Некрасов А; Труфанов А | 10h | 10h |
| 1104 | 2.177 | почистить фильтр на поломоечной машинке |  | 1h | 2026-04-29 09:00 A | 2026-04-29 10:00 A | 100% |  |  | start no earlier than 2026-04-29 09:00 | Тимофеев В | 1h | 1h |
| 1105 | 2.178 | Полное ТО квадропак (чистка тен, смазка штоков пневмоцилиндров, шприцевание подшипников) |  | 3h | 2026-04-28 09:00 A | 2026-04-28 12:00 A | 100% |  |  | start no earlier than 2026-04-28 09:00 | Тимофеев В | 3h | 3h |
| 1106 | 2.179 | Полное ТО бестром (чистка тен, смазка штоков пневмоцилиндров, шприцевание подшипников) |  | 2h | 2026-04-28 09:00 A | 2026-04-28 11:00 A | 100% |  |  | start no earlier than 2026-04-28 09:00 | Тимофеев В | 2h | 2h |
| 1107 | 2.180 | демонтаж инсектютерной ламп на очистку / продуть |  | 1h | 2026-04-27 08:00 A | 2026-04-27 10:00 A | 100% |  |  | start no earlier than 2026-04-27 08:00 | Тимофеев В | 1h | 1h |
| 1108 | 2.181 | ремонт инсектецидных ламп взять у Мастера в каб. (проверить контакты соединения самих лам, дросели). 3 исправно/1 сломан дросель |  | 1h | 2026-04-29 09:00 A | 2026-04-29 10:00 A | 100% |  |  | start no earlier than 2026-04-29 09:00 | Дедов В | 1h | 1h |

| ID | WBS | Task | Type | Duration | Start | Finish | Predecessors | Complete | Remaining | Actual start | Total slack | Constraint | Resources | Work | Actual work |
| --- | --- | --- | --- | --- | --- | --- | --- | --- | --- | --- | --- | --- | --- | --- | --- |
| 1109 | 2.182 | **замена дроселя инсекцидной лампы** |  | 17.38d | 2026-04-30 09:00 A | 2026-05-25 12:00 A |  | 100% |  |  |  |  |  | 84.25h | 84.25h |
| 1110 | 2.182.1 | заявка |  | 15min | 2026-04-30 09:00 A | 2026-04-30 09:15 A |  | 100% |  |  |  | start no earlier than 2026-04-30 08:00 | Шуранов Ю | 0.25h | 0.25h |
| 1111 | 2.182.2 | замена |  | 3h | 2026-05-25 08:00 A | 2026-05-25 12:00 A |  | 100% |  |  |  | start no earlier than 2026-05-25 08:00 | Дедов В | 3h | 3h |
| 1112 | 2.182.3 | доставка |  | 10d | 2026-05-04 09:00 A | 2026-05-18 18:00 A | 1110 | 100% |  |  |  | start no earlier than 2026-05-04 09:00 | Карабанов | 80h | 80h |
| 1113 | 2.182.4 | замена |  | 1h | 2026-05-12 09:00 A | 2026-05-12 10:00 A |  | 100% |  |  |  | start no earlier than 2026-05-12 09:00 | Бундин В | 1h | 1h |
| 1114 | 2.183 | поликарбанат в зоне седла жировика оторвался, ремонт |  | 1h | 2026-04-30 09:00 A | 2026-04-30 10:00 A |  | 100% |  |  |  | start no earlier than 2026-04-30 09:00 | Бундин В | 1h | 1h |
| 1115 | 2.184 | зачистить и покрасить решетку на входе в 2 ц. |  | 4h | 2026-04-28 09:00 A | 2026-04-28 13:00 A |  | 100% |  |  |  | start no earlier than 2026-04-28 09:00 | Дворник | 4h | 4h |
| 1116 | 2.185 | поднять лотки на 10 мм на охладителе со стороны фасовки (видео вышлю) |  | 1h | 2026-04-24 09:00 A | 2026-04-24 10:00 A |  | 100% |  |  |  | start no earlier than 2026-04-24 08:00 | Бундин В | 1h | 1h |
| 1117 | 2.186 | добавить в систему отопления котла в мойке и в охладителе воды | manual | 2h | 2026-04-24 09:00 A | 2026-04-24 11:00 A |  | 100% |  |  |  | start no earlier than 2026-04-24 09:00 | Бундин В | 2h | 2h |
| 1118 | 2.187 | на углы установить отбойники выход с зоны экструдера |  | 2h | 2026-04-23 09:00 A | 2026-04-23 11:00 A |  | 100% |  |  |  | start no earlier than 2026-04-23 08:00 | Бундин В | 2h | 2h |
| 1119 | 2.188 | сделать ТО Бестром (чистка тен и т.д.) |  | 2h | 2026-04-22 08:00 A | 2026-04-22 11:00 A |  | 100% |  |  |  | start no earlier than 2026-04-22 08:00 | Дедов В | 2h | 2h |
| 1120 | 2.189 | собрать кабинку в мужской раздевалке, она там стоит в коробке |  | 1h | 2026-04-23 09:00 A | 2026-04-23 10:00 A |  | 100% |  |  |  | start no earlier than 2026-04-23 09:00 | Дедов В | 1h | 1h |
| 1121 | 2.190 | заменить датчик переполнения на загрузке с синего бункера, на складе взять |  | 1h | 2026-04-29 09:00 A | 2026-04-29 10:00 A |  | 100% |  |  |  | start no earlier than 2026-04-29 09:00 | Дедов В | 1h | 1h |
| 1122 | 2.191 | **включить все исектицидные светильники по цеху, проверить есть ли напряжение в розетках** |  | 0.12d | 2026-04-23 09:00 A | 2026-04-23 10:00 A |  | 100% |  |  |  |  | Дедов В | 2h | 2h |
| 1123 | 2.191.1 | проверить напряжение в розетке светильника на фасовке |  | 1h | 2026-04-23 09:00 A | 2026-04-23 10:00 A |  | 100% |  |  |  | start no earlier than 2026-04-23 08:00 | Бундин В | 1h | 1h |
| 1124 | 2.192 | **установить кольцо "вентури" в фильеру** |  | 2.38d? | 2026-05-04 09:00 | 2026-05-06 12:00 |  | 78% | 0.53d? | 2026-04-27 09:00 |  |  |  | 4.5h | 3.5h |
| 1125 | 2.192.1 | определить диаметр отверстия кольца |  | 1h | 2026-04-27 09:00 A | 2026-04-27 10:00 A |  | 100% |  |  |  | start no earlier than 2026-04-27 09:00 | Зорькин В | 1h | 1h |
| 1126 | 2.192.2 | заявка на изготовление |  | 1h | 2026-04-28 10:00 A | 2026-04-28 11:00 A | 1125FS+1d | 100% |  |  |  | start no earlier than 2026-04-20 08:00 | Зорькин В | 1h | 1h |
| 1127 | 2.192.3 | контроль |  | 1h | 2026-05-04 09:00 A | 2026-05-04 10:00 A | 1126FS+1d | 100% |  |  |  | start no earlier than 2026-05-04 09:00 | Зорькин В | 1h | 1h |
| 1128 | 2.192.4 | заявка на выжечь проставку лдя кольца |  | 30min | 2026-07-15 09:00 A | 2026-07-15 09:30 A |  | 100% |  |  |  | start no earlier than 2026-07-15 09:00 | Зорькин В | 0.5h | 0.5h |
| 1129 | 2.192.5 | контроль доставки | milestone | 0d | 2026-07-22 09:30 A | 2026-07-22 09:30 A | 1128FS+5d | 100% |  |  |  | start no earlier than 2026-07-15 09:00 | Зорькин В |  |  |
| 1130 | 2.192.6 | провести тест |  | 1h | 2026-09-10 09:00 | 2026-09-10 10:00 |  |  |  |  | 135.47d | start no earlier than 2026-09-10 09:00 | Зорькин В | 1h |  |
| 1131 | 2.193 | замена фильтр вода подача в накопитель |  | 1h | 2026-04-21 09:00 A | 2026-04-21 10:00 A |  | 100% |  |  |  | start no earlier than 2026-04-21 09:00 | Тимофеев В | 1h | 1h |
| 1132 | 2.194 | замена потускневших ламп в инсекютере. Мастеру сообщить кол-во. б/у складывать в коробку |  | 2h | 2026-05-04 09:00 A | 2026-05-04 11:00 A |  | 100% |  |  |  | start no earlier than 2026-05-04 09:00 | Макаревич А | 2h | 2h |

| ID | WBS | Task | Type | Duration | Start | Finish | Predecessors | Complete | Actual start | Actual finish | Constraint | Resources | Work | Actual work |
| --- | --- | --- | --- | --- | --- | --- | --- | --- | --- | --- | --- | --- | --- | --- |
| 1133 | 2.195 | **ограждение палетообмотчика** |  | 19.25d | 2026-04-17 08:00 A | 2026-05-14 11:00 A |  | 100% |  |  |  |  | 190.5h | 190.5h |
| 1134 | 2.195.1 | **подготовка и монтаж рамы** |  | 6.75d | 2026-04-17 08:00 A | 2026-04-27 16:00 A |  | 100% |  |  |  |  | 24h | 24h |
| 1135 | 2.195.1.1 | изготовить ограждения для палетообмотчика (размеры обговорим) |  | 10h | 2026-04-17 08:00 A | 2026-04-20 11:00 A |  | 100% |  |  | start no earlier than 2026-04-17 08:00 | Макаревич А | 10h | 10h |
| 1136 | 2.195.1.2 | очистка, покраска рам ограждения. Быстросохн грунт-эмаль по ржавчине 3в1. |  | 4h | 2026-04-20 08:00 A | 2026-04-20 13:00 A |  | 100% |  |  | start no earlier than 2026-04-20 08:00 | Макаревич А | 4h | 4h |
| 1137 | 2.195.1.3 | монтаж рамы ограждения |  | 4h | 2026-04-27 09:00 A | 2026-04-27 13:00 A | 1136 | 100% |  |  | start no earlier than 2026-04-27 09:00 | Тимофеев В | 4h | 4h |
| 1138 | 2.195.1.4 | приварить пластины под стойки ограждения и закрепить к полу, чтобы оператор был вне зоны опасности) |  | 6h | 2026-04-25 09:00 A | 2026-04-27 16:00 A |  | 100% |  |  | start no earlier than 2026-04-25 09:00 | Макаревич А | 6h | 6h |
| 1139 | 2.195.2 | **обклеить рамы лентой** |  | 17.25d | 2026-04-21 09:00 A | 2026-05-14 11:00 A |  | 100% |  |  |  |  | 82.25h | 82.25h |
| 1140 | 2.195.2.1 | заявка клейка лента сигнальная черно-желтая / негабарит |  | 15min | 2026-04-21 09:00 A | 2026-04-21 09:15 A |  | 100% |  |  | start no earlier than 2026-04-21 09:00 | Зорькин В | 0.25h | 0.25h |
| 1141 | 2.195.2.2 | доставка |  | 10d | 2026-04-21 09:15 A | 2026-05-05 09:15 A | 1140 | 100% |  |  | start no earlier than 2026-04-20 08:00 | Карабанов | 80h | 80h |
| 1142 | 2.195.2.3 | монтаж ленты черно-желтой |  | 2h | 2026-05-14 09:00 A | 2026-05-14 11:00 A | 1141 | 100% |  |  | start no earlier than 2026-05-14 09:00 | Бобренок В | 2h | 2h |
| 1143 | 2.195.3 | **монтаж сетки на раму** |  | 10.03d | 2026-04-21 09:00 A | 2026-05-05 09:15 A |  | 100% |  |  |  |  | 84.25h | 84.25h |
| 1144 | 2.195.3.1 | заявка сетка для ограждения |  | 15min | 2026-04-21 09:00 A | 2026-04-21 09:15 A |  | 100% |  |  | start no earlier than 2026-04-21 09:00 | Зорькин В | 0.25h | 0.25h |
| 1145 | 2.195.3.2 | доставка сетка |  | 10d | 2026-04-21 09:15 A | 2026-05-05 09:15 A | 1144 | 100% |  |  | start no earlier than 2026-04-20 08:00 | Карабанов | 80h | 80h |
| 1146 | 2.195.3.3 | монтаж сетка |  | 4h | 2026-05-04 09:15 A | 2026-05-04 14:15 A | 1145 | 100% |  |  | start no earlier than 2026-04-20 08:00 | Некрасов А | 4h | 4h |
| 1147 | 2.196 | воздухозабоник циклона отпилить и вернуть как было раньше |  | 1h | 2026-04-28 09:00 A | 2026-04-28 10:00 A |  | 100% |  |  | start no earlier than 2026-04-28 09:00 | Тимофеев В | 1h | 1h |
| 1148 | 2.197 | проверка всех гидроаккумуляторов парогенератор, в вент комнате и отопительные |  | 2h | 2026-04-17 09:00 A | 2026-04-17 11:00 A |  | 100% |  |  | start no earlier than 2026-04-17 08:00 |  |  |  |
| 1149 | 2.198 | сборка полетообмотчика на фасовке |  | 1h | 2026-04-16 09:00 A | 2026-04-16 10:00 A |  | 100% |  |  | start no earlier than 2026-04-16 09:00 | Бобренок В | 1h | 1h |
| 1150 | 2.199 | заменить ремень на охладителе |  | 1h | 2026-04-15 09:00 A | 2026-04-15 10:00 A |  | 100% |  |  | start no earlier than 2026-04-15 08:00 | Некрасов А | 1h | 1h |
| 1151 | 2.200 | оторвался контроллер мониторинга на ШУ экструдера |  | 1h | 2026-04-15 09:00 A | 2026-04-15 10:00 A |  | 100% |  |  | start no earlier than 2026-04-15 08:00 | Некрасов А | 1h | 1h |
| 1152 | 2.201 | **сделать горловину на быстросъемах прекондиционер** |  | 3.88d? | 2026-04-16 09:00 | 2026-04-21 17:00 |  | 100% | 2026-08-20 09:00 | 2026-09-14 12:00 |  |  | 23h | 23h |
| 1153 | 2.201.1 | заказать защелки |  | 1d? | 2026-08-31 09:00 A | 2026-08-31 18:00 A |  | 100% |  |  | start no earlier than 2026-08-31 09:00 | Шуранов Ю | 8h | 8h |
| 1154 | 2.201.2 | Удлинить носик, чтоб можно было вешать мешок, куда будет ссыпаться мука |  | 3h | 2026-09-14 09:00 A | 2026-09-14 12:00 A |  | 100% |  |  | start no earlier than 2026-09-14 08:00 | Макаревич А | 3h | 3h |
| 1155 | 2.201.3 | изготовить установить люк для чистки с обр стороны как в 3ц (шапочка) |  | 4h | 2026-09-12 09:00 A | 2026-09-12 13:00 A |  | 100% |  |  | start no earlier than 2026-09-12 09:00 | Макаревич А | 4h | 4h |
| 1156 | 2.201.4 | установка |  | 1d? | 2026-08-20 09:00 A | 2026-08-20 18:00 A |  | 100% |  |  | start no earlier than 2026-09-02 09:00 | Тимофеев В | 8h | 8h |
| 1157 | 2.202 | перенести светильник квадропака (на край мезонина) |  | 2h | 2026-04-13 09:00 A | 2026-04-13 11:00 A |  | 100% |  |  | start no earlier than 2026-04-13 09:00 | Труфанов А | 2h | 2h |
| 1158 | 2.203 | сделать или мусоросборник на лотке выхода экструдера, или обратный лоток в сторону охдадителя (обсудим по телефону) |  | 4h | 2026-08-31 09:00 A | 2026-08-31 13:00 A |  | 100% |  |  | start no earlier than 2026-08-31 09:00 | Макаревич А | 4h | 4h |
| 1159 | 2.204 | слить конденсат с компрессора, продуть радиаторы, чистка фильтров | manual | 2h | 2026-04-12 09:00 A | 2026-04-12 11:00 A |  | 100% |  |  | start no earlier than 2026-04-12 09:00 | Труфанов А | 2h | 2h |
| 1160 | 2.205 | добавить в систему отопления воды (зона экструдера, вход в мойку) | manual | 2h | 2026-04-12 09:00 A | 2026-04-12 11:00 A |  | 100% |  |  | start no earlier than 2026-04-12 09:00 | Труфанов А | 2h | 2h |
| 1161 | 2.206 | починить стул Шелепову (выстучать середину и посадить на хомут) |  | 1h | 2026-04-11 09:00 A | 2026-04-13 10:00 A |  | 100% |  |  | start no earlier than 2026-04-11 09:00 | Труфанов А | 1h | 1h |
| 1162 | 2.207 | не работает вентилятор третий справа, плохой контакт- прикрутить |  | 1h | 2026-04-10 08:00 A | 2026-04-10 10:00 A |  | 100% |  |  | start no earlier than 2026-04-10 08:00 | Бобренок В | 1h | 1h |
| 1163 | 2.208 | взять канистру со склада и сделать подачу снизу, взять сгон с канистры 2 линии (канистру я видел в гидрализатной 1 ц.) |  | 1h | 2026-04-26 09:00 A | 2026-04-27 10:00 A |  | 100% |  |  | start no earlier than 2026-04-26 09:00 | Макаревич А | 1h | 1h |
| 1164 | 2.209 | сделать лоток под канистру рыбий жир - подача в прекондиционер |  | 3h | 2026-04-11 09:00 A | 2026-04-13 12:00 A |  | 100% |  |  | start no earlier than 2026-04-11 09:00 | Макаревич А | 3h | 3h |
| 1165 | 2.210 | перескочила цепь на 2ом ярусе охладителя -поправить |  | 1h | 2026-04-10 08:00 A | 2026-04-10 10:00 A |  | 100% |  |  | start no earlier than 2026-04-10 08:00 | Макаревич А | 1h | 1h |

| ID | WBS | Task | Type | Duration | Start | Finish | Predecessors | Complete | Remaining | Total slack | Constraint | Resources | Work | Actual work |
| --- | --- | --- | --- | --- | --- | --- | --- | --- | --- | --- | --- | --- | --- | --- |
| 1166 | 2.211 | **установка фосунок - подача жира 2 линия** |  | 5d | 2026-04-24 09:00 A | 2026-04-30 18:00 A |  | 100% |  |  |  |  | 8.42h | 8.42h |
| 1167 | 2.211.1 | заявка краны 1/2 |  | 15min | 2026-04-24 09:00 A | 2026-04-24 09:15 A |  | 100% |  |  | start no earlier than 2026-04-24 08:00 | Зорькин В | 0.25h | 0.25h |
| 1168 | 2.211.2 | доставка контроль |  | 10min | 2026-04-30 09:15 A | 2026-04-30 09:25 A | 1167FS+5d | 100% |  |  | start no earlier than 2026-04-24 08:00 | Зорькин В | 0.17h | 0.17h |
| 1169 | 2.211.3 | сборка кронштейн для фильтров + счетчик |  | 4h | 2026-04-30 09:25 A | 2026-04-30 14:25 A | 1168 | 100% |  |  | start no earlier than 2026-04-24 08:00 | Тимофеев В | 4h | 4h |
| 1170 | 2.211.4 | монтаж на линию фильтры + кронштейн + форсунка |  | 4h | 2026-04-30 13:25 A | 2026-04-30 18:00 A | 1169 | 100% |  |  | start no earlier than 2026-04-24 08:00 | Тимофеев В | 4h | 4h |
| 1171 | 2.212 | вывести на синий склад старые цепи от печи зона навесок |  | 2h | 2026-05-22 09:00 A | 2026-05-22 11:00 A |  | 100% |  |  | start no earlier than 2026-04-09 08:00 | Тимофеев В | 2h | 2h |
| 1172 | 2.213 | прикрутить уголок снизу выхода охладителя, забивается кормом (фото скину) |  | 1h | 2026-04-08 09:00 A | 2026-04-08 10:00 A |  | 100% |  |  | start no earlier than 2026-04-08 08:00 | Бундин В | 1h | 1h |
| 1173 | 2.214 | закрыть шибер кондиционера над жировиком |  | 1h | 2026-04-09 09:00 A | 2026-04-09 10:00 A |  | 100% |  |  | start no earlier than 2026-04-09 09:00 | Бобренок В | 1h | 1h |
| 1174 | 2.215 | прикрутить оргстекло в аквариуме где забрасывают навески в смеситель |  | 1h | 2026-04-08 09:00 A | 2026-04-08 10:00 A |  | 100% |  |  | start no earlier than 2026-04-08 09:00 | Бундин В | 1h | 1h |
| 1175 | 2.216 | ревизия двигатель, контакты ножевого узла |  | 1h | 2026-04-09 09:00 A | 2026-04-09 10:00 A |  | 100% |  |  | start no earlier than 2026-04-09 09:00 | Тимофеев В | 1h | 1h |
| 1176 | 2.217 | земена сеток печи |  | 2h | 2026-05-04 09:00 A | 2026-05-04 11:00 A |  | 100% |  |  | start no earlier than 2026-05-04 09:00 | Макаревич А; Некрасов А; Тимофеев В | 4h | 4h |
| 1177 | 2.218 | получить метал-лоток 100х50, закрепить слева от двери выхода с зоны экструдера и уложить все провода | manual | 2h | 2026-04-11 09:00 A | 2026-04-11 11:00 A |  | 100% |  |  |  | Труфанов А | 2h | 2h |
| 1178 | 2.219 | получить аллюминевый скотч- замотать стыки циклона, улитки печек, место рычага шибера улитки | manual | 2h | 2026-04-05 09:00 A | 2026-04-05 11:00 A |  | 100% |  |  | start no earlier than 2026-04-05 09:00 | Труфанов А | 2h | 2h |
| 1179 | 2.220 | **установить водоподготовку на парогенератор** |  | 140d? | 2026-04-08 09:00 A | 2026-10-09 18:00 |  | 3% | 136.22d? | 107.59d |  |  | 17.25h | 0.25h |
| 1180 | 2.220.1 | планирование монтажа |  | 1h | 2026-10-05 09:00 | 2026-10-05 10:00 |  |  |  | 112.47d | start no earlier than 2026-10-05 09:00 | Домоводов К | 1h |  |
| 1181 | 2.220.2 | запрос КП | milestone | 0min | 2026-04-08 09:00 A | 2026-04-08 09:00 A |  | 100% |  |  | start no earlier than 2026-04-08 09:00 | Зорькин В |  |  |
| 1182 | 2.220.3 | решение о покупке | milestone | 0d | 2026-04-08 18:00 A | 2026-04-08 18:00 A | 1181FS+1d | 100% |  |  | start no earlier than 2026-04-03 08:00 | Домоводов К |  |  |
| 1183 | 2.220.4 | контроль поставки |  | 15min | 2026-04-27 09:00 A | 2026-04-27 09:15 A |  | 100% |  |  | start no earlier than 2026-04-27 09:00 | Зорькин В | 0.25h | 0.25h |
| 1184 | 2.220.5 | монтаж (установка) |  | 1d? | 2026-10-09 09:00 | 2026-10-09 18:00 |  |  |  | 107.59d | start no earlier than 2026-10-09 09:00 | Тимофеев В; Некрасов А | 16h |  |
| 1185 | 2.221 | **изготовить сетку перед фильерой экструдера от костей** |  | 11d | 2026-04-17 09:00 A | 2026-05-01 18:00 A |  | 100% |  |  |  |  | 83.25h | 83.25h |
| 1186 | 2.221.1 | составить чертеж |  | 2h | 2026-04-17 09:00 A | 2026-04-17 11:00 A |  | 100% |  |  | start no earlier than 2026-04-17 09:00 | Зорькин В | 2h | 2h |
| 1187 | 2.221.2 | разместить заказ |  | 1h | 2026-04-18 11:00 A | 2026-04-20 10:00 A | 1186FS+1d | 100% |  |  | start no earlier than 2026-04-03 08:00 | Зорькин В | 1h | 1h |
| 1188 | 2.221.3 | изготовление |  | 10d | 2026-04-18 12:00 A | 2026-05-01 18:00 A | 1187 | 100% |  |  | start no earlier than 2026-04-03 08:00 | Подрядчик | 80h | 80h |
| 1189 | 2.221.4 | контроль | milestone | 0d | 2026-04-30 12:00 A | 2026-04-30 12:00 A | 1188 | 100% |  |  | start no earlier than 2026-04-03 08:00 | Зорькин В |  |  |
| 1190 | 2.221.5 | орг забрать |  | 15min | 2026-05-01 12:00 A | 2026-05-01 12:15 A | 1189FS+1d | 100% |  |  | start no earlier than 2026-04-03 08:00 | Зорькин В | 0.25h | 0.25h |

| ID | WBS | Task | Type | Duration | Start | Finish | Predecessors | Complete | Actual start | Actual finish | Constraint | Resources | Work | Actual work |
| --- | --- | --- | --- | --- | --- | --- | --- | --- | --- | --- | --- | --- | --- | --- |
| 1191 | 2.222 | **вешалка для дамских сумочек в тамбур при надевании бахил** |  | 13.25d | 2026-05-04 09:00 | 2026-05-18 11:00 |  | 100% | 2026-04-17 09:00 | 2026-06-15 10:00 |  |  | 82h | 82h |
| 1192 | 2.222.1 | заявка |  | 1h | 2026-04-17 09:00 A | 2026-04-17 10:00 A |  | 100% |  |  | start no earlier than 2026-04-17 09:00 | Зорькин В | 1h | 1h |
| 1193 | 2.222.2 | доставка |  | 10d | 2026-04-17 10:00 A | 2026-05-01 10:00 A | 1192 | 100% |  |  | start no earlier than 2026-04-02 08:00 | Карабанов | 80h | 80h |
| 1194 | 2.222.3 | монтаж |  | 1h | 2026-06-13 09:00 A | 2026-06-15 10:00 A | 1193 | 100% |  |  | start no earlier than 2026-06-13 09:00 | Бобренок В | 1h | 1h |
| 1195 | 2.223 | Врезка фитинга 1/2х12мм в дверку прекондиционера 2 цех (созвон с Зорькиным) |  | 30min | 2026-04-09 09:00 A | 2026-04-09 09:30 A |  | 100% |  |  | start no earlier than 2026-04-09 09:00 | Тимофеев В | 0.5h | 0.5h |
| 1196 | 2.224 | проверить контур управления насосом ПГ |  | 1h | 2026-04-02 09:00 A | 2026-04-02 10:00 A |  | 100% |  |  | start no earlier than 2026-04-02 09:00 | Тимофеев В | 1h | 1h |
| 1197 | 2.225 | замена электродной группы или чистка до металла электродов |  | 1h | 2026-04-16 09:00 A | 2026-04-16 10:00 A |  | 100% |  |  | start no earlier than 2026-04-16 09:00 | Макаревич А | 1h | 1h |
| 1198 | 2.226 | закрепить шкаф управления приточной вентиляцией |  | 30min | 2026-04-01 08:00 A | 2026-04-01 09:30 A |  | 100% |  |  | start no earlier than 2026-04-01 08:00 | Бобренок В | 0.5h | 0.5h |
| 1199 | 2.227 | установить пневмо пистолеты на охладители с длинным носиком (у мастеров) |  | 1h | 2026-04-01 08:00 A | 2026-04-01 10:00 A |  | 100% |  |  | start no earlier than 2026-04-01 08:00 | Бобренок В | 1h | 1h |
| 1200 | 2.228 | утечка группа безопасности котел склад навесок устранить |  | 30min | 2026-03-31 08:00 A | 2026-03-31 09:30 A |  | 100% |  |  | start no earlier than 2026-03-31 08:00 | Бобренок В | 0.5h | 0.5h |
| 1201 | 2.229 | закрепить две трубы подачи воздуха в охладителе, пневмо шланг подачи в улитку крепим к стене |  | 2h | 2026-03-27 09:00 A | 2026-03-27 11:00 A |  | 100% |  |  | start no earlier than 2026-03-27 08:00 | Труфанов А | 2h | 2h |
| 1202 | 2.230 | изготовить 2 лотка 700х400х50 мм из нерж под транспортерную ленту транспортер №1 и №2 |  | 6h | 2026-04-04 09:00 A | 2026-04-06 16:00 A |  | 100% |  |  | start no earlier than 2026-04-04 09:00 | Макаревич А | 6h | 6h |
| 1203 | 2.231 | открутить вилку-розетку возле насоса подачи жиров в экструдер |  | 1h | 2026-04-01 09:00 A | 2026-04-01 10:00 A |  | 100% |  |  | start no earlier than 2026-04-01 09:00 | Бобренок В | 1h | 1h |
| 1204 | 2.232 | прикруть кусок металлопрофиля ,чтобы заделать отверстие куда проходит труба отопления (зона где привозят навески) фото скину | manual | 1h | 2026-03-29 09:00 A | 2026-03-29 10:00 A |  | 100% |  |  | start no earlier than 2026-03-29 09:00 | Бундин В | 1h | 1h |
| 1205 | 2.233 | **замена ленты нория** |  | 4.5d | 2026-03-27 08:00 A | 2026-04-02 13:00 A |  | 100% |  |  |  |  | 39.5h | 39.5h |
| 1206 | 2.233.1 | получить материал весь | manual | 30min | 2026-03-29 09:00 A | 2026-03-29 09:30 A |  | 100% |  |  | start no earlier than 2026-03-29 09:00 | Тимофеев В | 0.5h | 0.5h |
| 1207 | 2.233.2 | подготовка кондуктора |  | 2h | 2026-03-27 08:00 A | 2026-03-27 11:00 A |  | 100% |  |  | start no earlier than 2026-03-27 08:00 | Некрасов А; Тимофеев В | 4h | 4h |
| 1208 | 2.233.3 | подготовить к установке норийную ленту, ковши, болты |  | 15h | 2026-03-28 09:00 A | 2026-03-31 17:00 A |  | 100% |  |  | start no earlier than 2026-03-28 09:00 | Дедов В | 15h | 15h |
| 1209 | 2.233.4 | подготовка крепления лебедки для затягивания ленты |  | 4h | 2026-03-31 09:00 A | 2026-03-31 13:00 A |  | 100% |  |  | start no earlier than 2026-03-31 09:00 | Труфанов А; Некрасов А | 8h | 8h |
| 1210 | 2.233.5 | замена ленты |  | 4h | 2026-04-02 09:00 A | 2026-04-02 13:00 A |  | 100% |  |  | start no earlier than 2026-04-02 09:00 | Некрасов А; Макаревич А; Тимофеев В | 12h | 12h |
| 1211 | 2.234 | закрепить гофру на трос -рефрежераторы на территории |  | 1h | 2026-03-27 09:00 A | 2026-03-27 10:00 A |  | 100% |  |  | start no earlier than 2026-03-27 09:00 | Некрасов А | 1h | 1h |
| 1212 | 2.235 | монтаж розетки до канистры с жиром для подачи в экструдер (подключение весов) |  | 2h | 2026-03-26 09:00 A | 2026-03-26 11:00 A |  | 100% |  |  | start no earlier than 2026-03-26 09:00 | Дедов В | 2h | 2h |
| 1213 | 2.236 | заделать щели / маршпуты крыс . Зона хранения навесок (закрутить профлист и запенить отверстие под трубу) |  | 1h | 2026-03-26 09:00 A | 2026-03-26 10:00 A |  | 100% |  |  | start no earlier than 2026-03-26 09:00 | Некрасов А | 1h | 1h |
| 1214 | 2.237 | оперативная замена шнеков |  | 6h | 2026-03-23 09:00 A | 2026-03-23 16:00 A |  | 100% |  |  | start no earlier than 2026-03-23 09:00 | Бобренок В; Бундин В | 12h | 12h |
| 1215 | 2.238 | выдать шланг для продувки бестрома |  | 1h | 2026-03-23 09:00 A | 2026-03-23 10:00 A |  | 100% |  |  | start no earlier than 2026-03-23 09:00 | Бундин В | 1h | 1h |
| 1216 | 2.239 | приварить уголок на лотке в охладитель (фото скину) |  | 2h | 2026-03-24 09:00 A | 2026-03-24 11:00 A |  | 100% |  |  | start no earlier than 2026-03-24 09:00 | Бобренок В | 2h | 2h |
| 1217 | 2.240 | на транспортере с охладителя отрезать концы саморезов на оргстекле (зарапают руки) |  | 1h | 2026-03-23 09:00 A | 2026-03-23 10:00 A |  | 100% |  |  | start no earlier than 2026-03-23 08:00 | Бундин В | 1h | 1h |
| 1218 | 2.241 | насосная станция включить и проверить на кз (выбивало автомат) |  | 2h | 2026-03-31 09:00 A | 2026-03-31 11:00 A |  | 100% |  |  | start no earlier than 2026-03-31 09:00 | Тимофеев В | 2h | 2h |
| 1219 | 2.242 | закрепить трубу РР к стене в районе хранения кубов гидролизат |  | 1h | 2026-03-26 09:00 A | 2026-03-26 10:00 A |  | 100% |  |  | start no earlier than 2026-03-26 09:00 | Тимофеев В | 1h | 1h |
| 1220 | 2.243 | настройка продувка ПГ ч/з 30 мин |  | 30min | 2026-04-02 09:00 A | 2026-04-02 09:30 A |  | 100% |  |  | start no earlier than 2026-04-02 09:00 | Шуранов Ю | 0.5h | 0.5h |
| 1221 | 2.244 | на красном смесителе закусывает ручку шибера - разобраться |  | 2h | 2026-03-26 09:00 A | 2026-03-26 11:00 A |  | 100% |  |  | start no earlier than 2026-03-26 09:00 | Тимофеев В | 2h | 2h |
| 1222 | 2.245 | посмотреть эл. магнит на двери вход ц.2 |  | 1h | 2026-03-27 09:00 A | 2026-03-27 10:00 A |  | 100% |  |  | start no earlier than 2026-03-27 09:00 | Тимофеев В | 1h | 1h |
| 1223 | 2.246 | ящик возле нашего кабинета- прибить или прикрутить дно |  | 1h | 2026-03-22 09:00 A | 2026-03-23 10:00 A |  | 100% |  |  | start no earlier than 2026-03-22 09:00 | Бобренок В | 1h | 1h |
| 1224 | 2.247 | слить конденсат, почистить фильтры и продуть радиаторы |  | 1h | 2026-03-21 09:00 A | 2026-03-23 10:00 A |  | 100% |  |  | start no earlier than 2026-03-21 09:00 | Дедов В | 1h | 1h |
| 1225 | 2.248 | забрать кресло Сапелина на ремонт в слесарку с каб. Шелепова |  | 2h | 2026-03-23 09:00 A | 2026-03-23 11:00 A |  | 100% |  |  | start no earlier than 2026-03-23 09:00 | Тимофеев В | 2h | 2h |
| 1226 | 2.249 | закрепить кабель в гофре на клипсы от розетки слева от ворот жировика |  | 1h | 2026-03-26 09:00 A | 2026-03-26 10:00 A |  | 100% |  |  | start no earlier than 2026-03-26 09:00 | Труфанов А | 1h | 1h |
| 1227 | 2.250 | уложить выше подиума и красиво закрепить на клипсы кабель в гофре от ворот справа (фото вышлю) |  | 1h | 2026-04-16 09:00 A | 2026-04-16 10:00 A |  | 100% |  |  | start no earlier than 2026-04-10 09:00 | Тимофеев В | 1h | 1h |
| 1228 | 2.251 | монтаж отбойников по периметру |  | 4h | 2026-03-25 09:00 A | 2026-03-25 13:00 A |  | 100% |  |  | start no earlier than 2026-03-25 09:00 | Бундин В | 4h | 4h |
| 1229 | 2.252 | перенос отбойник ГП с стороны эл щита, что бы не входл палет |  | 2h | 2026-03-19 08:00 A | 2026-03-19 11:00 A |  | 100% |  |  | start no earlier than 2026-03-19 08:00 | Бобренок В | 2h | 2h |
| 1230 | 2.253 | установить лист сендвич панель на стену жир/экструдер с стороны мойки |  | 3h | 2026-04-07 09:00 A | 2026-04-07 12:00 A |  | 100% |  |  | start no earlier than 2026-04-07 09:00 | Некрасов А; Труфанов А | 6h | 6h |
| 1231 | 2.254 | подлючить пневмоулитку к воздуху в охладителе |  | 1h | 2026-03-31 09:00 A | 2026-03-31 10:00 A |  | 100% |  |  | start no earlier than 2026-03-31 09:00 | Бобренок В | 1h | 1h |
| 1232 | 2.255 | выдать уплотнение на крышки прекондиционера |  | 30min | 2026-03-19 08:00 A | 2026-03-19 09:30 A |  | 100% |  |  | start no earlier than 2026-03-19 08:00 | Бобренок В | 0.5h | 0.5h |

| ID | WBS | Task | Type | Duration | Start | Finish | Predecessors | Complete | Actual start | Actual finish | Constraint | Resources | Work | Actual work |
| --- | --- | --- | --- | --- | --- | --- | --- | --- | --- | --- | --- | --- | --- | --- |
| 1233 | 2.256 | **ворота фасовка** |  | 0.12d | 2026-03-26 09:00 A | 2026-03-26 10:00 A |  | 100% |  |  |  |  | 1h | 1h |
| 1234 | 2.256.1 | закрепить гофру до розетки слева от ворот и закрыть монтажную коробку |  | 1h | 2026-03-26 09:00 A | 2026-03-26 10:00 A |  | 100% |  |  | start no earlier than 2026-03-26 09:00 | Некрасов А | 1h | 1h |
| 1235 | 2.257 | **забивает лоток прекондиционер/экструдер, передалать** |  | 1.62d | 2026-08-31 09:00 A | 2026-09-01 15:00 A |  | 100% |  |  |  |  | 5h | 5h |
| 1236 | 2.257.1 | изготовить чертежи лекалы для воронки |  | 1h | 2026-08-31 09:00 A | 2026-08-31 10:00 A |  | 100% |  |  | start no earlier than 2026-08-31 09:00 | Шуранов Ю | 1h | 1h |
| 1237 | 2.257.2 | изготовление воронки |  | 4h | 2026-09-01 10:00 A | 2026-09-01 15:00 A | 1236FS+1d | 100% |  |  | start no earlier than 2026-09-01 09:00 | Макаревич А | 4h | 4h |
| 1238 | 2.258 | уложить в лоток пучек управления заслонками, отвязать от батареи |  | 1h | 2026-03-17 08:00 A | 2026-03-17 10:00 A |  | 100% |  |  | start no earlier than 2026-03-17 08:00 | Бобренок В | 1h | 1h |
| 1239 | 2.259 | распред коробка подкл вентилятора которого уже нет (кондиционер №3 жиры) - облогородить |  | 30min | 2026-03-17 08:00 A | 2026-03-17 09:30 A |  | 100% |  |  | start no earlier than 2026-03-17 08:00 | Бобренок В | 0.5h | 0.5h |
| 1240 | 2.260 | удалить лотаки с барана |  | 2h | 2026-03-19 09:00 A | 2026-03-19 11:00 A |  | 100% |  |  | start no earlier than 2026-03-19 08:00 | Труфанов А; Некрасов А | 4h | 4h |
| 1241 | 2.261 | упорядочить проводку регистратора данных - стянуть в пучек |  | 1h | 2026-03-20 09:00 A | 2026-03-20 10:00 A |  | 100% |  |  | start no earlier than 2026-03-20 09:00 | Дедов В | 1h | 1h |
| 1242 | 2.262 | **открыть люк у бестрома / ревизяия / закрыть на герметик** |  | 0.12d | 2026-03-19 09:00 A | 2026-03-19 10:00 A |  | 100% |  |  |  | Труфанов А | 2h | 2h |
| 1243 | 2.262.1 | хим. Лаборатория устранить течь с оборудования |  | 1h | 2026-03-19 09:00 A | 2026-03-19 10:00 A |  | 100% |  |  | start no earlier than 2026-03-19 08:00 | Труфанов А | 1h | 1h |
| 1244 | 2.263 | **изготовить 2 лотка из нерж. в зоне жиров по аналогии с первым цехом под транспортером тип 1 и тип 2** |  | 0.25d | 2026-03-16 09:00 A | 2026-03-16 11:00 A |  | 100% |  |  |  | Макаревич А | 4h | 4h |
| 1245 | 2.263.1 | установить отбойник в зону ХХХ, брать в 5А |  | 2h | 2026-03-16 09:00 A | 2026-03-16 11:00 A |  | 100% |  |  | start no earlier than 2026-03-16 09:00 | Бобренок В | 2h | 2h |
| 1246 | 2.264 | **сточить острый край лотка загрузки в охладитель** |  | 0.12d | 2026-03-15 09:00 A | 2026-03-16 10:00 A |  | 100% |  |  |  | Некрасов А | 3h | 3h |
| 1247 | 2.264.1 | вывезти люльку, вывезти бойлер, провода на жирах спрятать в коробку |  | 1h | 2026-03-15 09:00 A | 2026-03-16 10:00 A |  | 100% |  |  | start no earlier than 2026-03-15 09:00 | Бобренок В | 1h | 1h |
| 1248 | 2.264.2 | бойлер в душе - установить трубку на клапан сброса и смонтировать её по стене до канализ трубы |  | 1h | 2026-03-16 09:00 A | 2026-03-16 10:00 A |  | 100% |  |  | start no earlier than 2026-03-16 09:00 | Макаревич А | 1h | 1h |
| 1249 | 2.265 | облогородить кабельный пучек, сделать аккуратно/закрыить крышкой. Слева от двери экструдер/тамбур под лестницей |  | 6h | 2026-04-09 09:00 A | 2026-04-09 16:00 A |  | 100% |  |  | start no earlier than 2026-04-11 09:00 | Труфанов А | 6h | 6h |
| 1250 | 2.266 | **изготовить сетку после барабана по аналогии с сущ 10мм** |  | 2.5d | 2026-03-12 09:00 A | 2026-03-16 13:00 A |  | 100% |  |  |  | Макаревич А | 25.5h | 25.5h |
| 1251 | 2.266.1 | на лоток загрузки в охладитель - установить доп борт с левой стороны, такой же как с правой (съемный) |  | 4h | 2026-03-15 09:00 A | 2026-03-16 13:00 A |  | 100% |  |  | start no earlier than 2026-03-15 09:00 | Бобренок В | 4h | 4h |
| 1252 | 2.266.2 | квадропак стол подачи пакетов устновить кайки с барашком/приварить. + зафиксировать от бокового смещения |  | 1h | 2026-03-16 09:00 A | 2026-03-16 10:00 A |  | 100% |  |  | start no earlier than 2026-03-16 09:00 | Тимофеев В | 1h | 1h |
| 1253 | 2.266.3 | изменить время разгон/торожение привод барабана |  | 30min | 2026-03-12 09:00 A | 2026-03-12 09:30 A |  | 100% |  |  | start no earlier than 2026-03-13 09:00 | Дедов В | 0.5h | 0.5h |
| 1254 | 2.267 | изготовить кожух на шестерни прекондиционера |  | 6h | 2026-04-03 09:00 A | 2026-04-03 16:00 A |  | 100% |  |  | start no earlier than 2026-04-03 09:00 | Макаревич А | 6h | 6h |
| 1255 | 2.268 | **ремонт датчик давления линия 3** |  | 30.25d | 2026-03-26 09:00 | 2026-04-30 11:00 |  | 100% | 2026-05-14 09:00 | 2026-06-11 12:00 |  |  | 124.75h | 124.75h |
| 1256 | 2.268.1 | заявка переходник G1/4 /M20*1.5 токарю |  | 15min | 2026-05-14 09:00 A | 2026-05-14 09:15 A |  | 100% |  |  | start no earlier than 2026-05-14 09:00 | Зорькин В | 0.25h | 0.25h |
| 1257 | 2.268.2 | контроль изг/орг доставка | milestone | 0d | 2026-05-14 09:15 A | 2026-05-14 09:15 A | 1256 | 100% |  |  | start no earlier than 2026-03-20 08:00 |  |  |  |
| 1258 | 2.268.3 | заказ замена + в ЗИП |  | 15min | 2026-05-14 09:15 A | 2026-05-14 09:30 A | 1257 | 100% |  |  | start no earlier than 2026-03-13 09:00 | Зорькин В | 0.25h | 0.25h |
| 1259 | 2.268.4 | заявка на РВД удлинитель |  | 15min | 2026-05-14 09:30 A | 2026-05-14 09:45 A | 1258 | 100% |  |  | start no earlier than 2026-03-12 08:00 | Зорькин В | 0.25h | 0.25h |
| 1260 | 2.268.5 | доставка |  | 15d | 2026-05-14 09:45 A | 2026-06-04 09:45 A | 1259 | 100% |  |  | start no earlier than 2026-03-12 08:00 | Карабанов | 120h | 120h |
| 1261 | 2.268.6 | монтаж |  | 1h | 2026-06-04 09:00 A | 2026-06-04 10:00 A |  | 100% |  |  | start no earlier than 2026-06-04 09:00 | Тимофеев В | 1h | 1h |
| 1262 | 2.268.7 | датчик давления экструдера проверка подключения |  | 3h | 2026-06-11 09:00 A | 2026-06-11 12:00 A |  | 100% |  |  | start no earlier than 2026-06-11 09:00 | Дедов В | 3h | 3h |

| ID | WBS | Task | Duration | Start | Finish | Predecessors | Complete | Constraint | Resources | Work | Actual work |
| --- | --- | --- | --- | --- | --- | --- | --- | --- | --- | --- | --- |
| 1263 | 2.269 | **установить сирену при отключении автомата ПГ** | 28.12d | 2026-03-13 09:00 A | 2026-04-22 10:00 A |  | 100% |  |  | 81.5h | 81.5h |
| 1264 | 2.269.1 | заявка на реле / сирена | 30min | 2026-03-13 09:00 A | 2026-03-13 09:30 A |  | 100% | start no earlier than 2026-03-13 09:00 | Шуранов Ю | 0.5h | 0.5h |
| 1265 | 2.269.2 | доставка | 10d | 2026-03-13 09:30 A | 2026-03-27 09:30 A | 1264 | 100% | start no earlier than 2026-03-12 08:00 | Карабанов | 80h | 80h |
| 1266 | 2.269.3 | монтаж в схему (проверить почему не срабатывает) | 1h | 2026-04-22 09:00 A | 2026-04-22 10:00 A | 1265 | 100% | start no earlier than 2026-04-22 09:00 | Дедов В | 1h | 1h |
| 1267 | 2.270 | **установить сирену на отключение автоматов в печи** | 16d | 2026-03-11 09:00 A | 2026-04-01 18:00 A |  | 100% |  |  | 44.25h | 44.25h |
| 1268 | 2.270.1 | заявка сирена | 15min | 2026-03-13 09:30 A | 2026-03-13 09:45 A | 1264 | 100% | start no earlier than 2026-03-12 08:00 | Шуранов Ю | 0.25h | 0.25h |
| 1269 | 2.270.2 | доставка | 5d | 2026-03-13 09:45 A | 2026-03-20 09:45 A | 1268 | 100% | start no earlier than 2026-03-12 08:00 | Карабанов | 40h | 40h |
| 1270 | 2.270.3 | монтаж | 2h | 2026-03-19 09:00 A | 2026-03-19 11:00 A | 1269 | 100% | start no earlier than 2026-03-19 09:00 | Дедов В | 2h | 2h |
| 1271 | 2.270.4 | доставка сирены | 10d | 2026-03-19 09:00 A | 2026-04-01 18:00 A |  | 100% | start no earlier than 2026-03-19 08:00 |  |  |  |
| 1272 | 2.270.5 | монтаж сирены | 1h | 2026-03-31 09:00 A | 2026-03-31 10:00 A | 1271 | 100% | start no earlier than 2026-03-31 09:00 | Дедов В | 1h | 1h |
| 1273 | 2.270.6 | настройка доводчика дверь вход в зону экструдера | 1h | 2026-03-11 09:00 A | 2026-03-11 10:00 A |  | 100% | start no earlier than 2026-03-11 09:00 | Макаревич А | 1h | 1h |
| 1274 | 2.271 | **выпадает фильера с матрицы - делать стпор** | 0.5d | 2026-04-27 09:00 A | 2026-04-27 13:00 A |  | 100% |  |  | 4.5h | 4.5h |
| 1275 | 2.271.1 | подготовка сверла / метчика | 30min | 2026-04-27 09:00 A | 2026-04-27 09:30 A |  | 100% | start no earlier than 2026-04-27 09:00 | Шуранов Ю | 0.5h | 0.5h |
| 1276 | 2.271.2 | сверлить и резать резьбу для фикс болта | 4h | 2026-04-27 09:00 A | 2026-04-27 13:00 A |  | 100% | start no earlier than 2026-04-27 09:00 | Подрядчик | 4h | 4h |
| 1277 | 2.272 | **замена поликарбанат на перегородках металопрофилем** | 68.75d | 2026-03-11 09:00 A | 2026-06-15 16:00 A |  | 100% |  |  | 114h | 114h |
| 1278 | 2.272.1 | расчет материал стена охладитель | 1h | 2026-03-19 09:00 A | 2026-03-19 10:00 A |  | 100% | start no earlier than 2026-03-19 09:00 | Шуранов Ю | 1h | 1h |
| 1279 | 2.272.2 | заявка | 1h | 2026-03-19 10:00 A | 2026-03-19 11:00 A | 1278 | 100% | start no earlier than 2026-03-12 08:00 | Шуранов Ю | 1h | 1h |
| 1280 | 2.272.3 | доставка | 10d | 2026-03-19 11:00 A | 2026-04-02 11:00 A | 1279 | 100% | start no earlier than 2026-03-12 08:00 | Карабанов | 80h | 80h |
| 1281 | 2.272.4 | из металлопрофиля 3м. Обшиваем охладитель внутри и снаружи + утеплитель | 5h | 2026-05-29 09:00 A | 2026-05-29 15:00 A |  | 100% | start no earlier than 2026-05-29 09:00 | Некрасов А; Бобренок В | 10h | 10h |
| 1282 | 2.272.5 | продолжить монтаж (со стороны охладителя и со стороны жиров) | 6h | 2026-06-15 09:00 A | 2026-06-15 16:00 A | 1280 | 100% | start no earlier than 2026-06-15 09:00 | Некрасов А; Бундин В | 12h | 12h |
| 1283 | 2.272.6 | замена шланг реле давление и настройка. фильтр приточная офис | 1h | 2026-03-12 09:00 A | 2026-03-12 10:00 A |  | 100% | start no earlier than 2026-03-13 09:00 | Дедов В | 1h | 1h |
| 1284 | 2.272.7 | замена насос гидролизата | 1h | 2026-03-12 08:00 A | 2026-03-12 10:00 A |  | 100% | start no earlier than 2026-03-12 08:00 | Бундин В; Тимофеев В | 2h | 2h |
| 1285 | 2.272.8 | замена подшипник прекондиционер | 1h | 2026-03-12 09:00 A | 2026-03-12 10:00 A |  | 100% | start no earlier than 2026-03-12 08:00 | Бундин В | 1h | 1h |
| 1286 | 2.272.9 | ремонт вал охладитель | 4h | 2026-03-12 09:00 A | 2026-03-12 13:00 A |  | 100% | start no earlier than 2026-03-19 09:00 | Тимофеев В | 4h | 4h |
| 1287 | 2.272.10 | плохо закр дверь на фасовку. заменить личинку двери / выравнить напильником в коробке. | 1h | 2026-03-11 09:00 A | 2026-03-11 10:00 A |  | 100% | start no earlier than 2026-03-11 09:00 | Макаревич А | 1h | 1h |
| 1288 | 2.272.11 | крепить поликарбанат стена печь/жир длинная часть | 1h | 2026-03-11 09:00 A | 2026-03-11 10:00 A |  | 100% | start no earlier than 2026-03-11 09:00 | Макаревич А | 1h | 1h |
| 1289 | 2.273 | сетку на выходе барабана жир закрепить. Устр вспомогактельные крепжи операторам | 1h | 2026-03-19 09:00 A | 2026-03-19 10:00 A |  | 100% | start no earlier than 2026-03-19 09:00 | Тимофеев В | 1h | 1h |

| ID | WBS | Task | Duration | Start | Finish | Predecessors | Complete | Constraint | Resources | Work | Actual work |
| --- | --- | --- | --- | --- | --- | --- | --- | --- | --- | --- | --- |
| 1290 | 2.274 | **установить / снять трубу от ПГ для чистки сетки** | 0.25d | 2026-03-12 09:00 A | 2026-03-12 11:00 A |  | 100% |  | Тимофеев В | 7h | 7h |
| 1291 | 2.274.1 | чистка циклон снаружи от копоти. Средство для чистки выдаст Шелепов К | 2h | 2026-03-12 09:00 A | 2026-03-12 11:00 A |  | 100% | start no earlier than 2026-03-12 09:00 | Тимофеев В; Бундин В | 4h | 4h |
| 1292 | 2.274.2 | замена датчик расхода пара | 1h | 2026-03-12 09:00 A | 2026-03-12 10:00 A |  | 100% | start no earlier than 2026-03-12 09:00 | Некрасов А | 1h | 1h |
| 1293 | 2.275 | **замениь фитинги на жир** | 0.25d | 2026-03-10 09:00 A | 2026-03-10 11:00 A | 651 | 100% |  | Некрасов А | 4h | 4h |
| 1294 | 2.275.1 | замена бойлер в мойке экструдера на бойлер который весит за экструдером | 2h | 2026-03-10 09:00 A | 2026-03-10 11:00 A |  | 100% | start no earlier than 2026-03-10 09:00 | Дедов В | 2h | 2h |
| 1295 | 2.276 | **переключить освещение на автолномный выключатель, запитанный от системы освещения, а не от оборудования.** | 15.38d | 2026-03-05 09:00 A | 2026-03-26 12:00 A |  | 100% |  |  | 13h | 13h |
| 1296 | 2.276.1 | ножевой узел | 1.5h | 2026-03-26 09:00 A | 2026-03-26 10:30 A |  | 100% | start no earlier than 2026-03-26 09:00 | Дедов В; Некрасов А | 3h | 3h |
| 1297 | 2.276.2 | бестром | 1.5h | 2026-03-26 09:00 A | 2026-03-26 10:30 A |  | 100% | start no earlier than 2026-03-26 09:00 | Некрасов А; Дедов В | 3h | 3h |
| 1298 | 2.276.3 | выход с охладителя | 1.5h | 2026-03-26 10:30 A | 2026-03-26 12:00 A | 1296 | 100% | start no earlier than 2026-03-26 09:00 | Дедов В; Некрасов А | 3h | 3h |
| 1299 | 2.276.4 | переключить норию квадропака стационрно, без розетки | 2h | 2026-03-05 09:00 A | 2026-03-05 11:00 A |  | 100% | start no earlier than 2026-03-05 09:00 | Дедов В | 2h | 2h |
| 1300 | 2.276.5 | перемонтаж провода заземления нории квадропак эстетично и удобно для прохода и уборщицы | 2h | 2026-03-05 09:00 A | 2026-03-05 11:00 A |  | 100% | start no earlier than 2026-03-05 09:00 | Дедов В | 2h | 2h |
| 1301 | 2.277 | **сетки на дно печи в зип изготовить** | 10.5d | 2026-03-10 09:00 A | 2026-03-24 13:00 A |  | 100% |  |  | 85h | 85h |
| 1302 | 2.277.1 | заявка сетка уголки | 1h | 2026-03-10 09:00 A | 2026-03-10 10:00 A |  | 100% | start no earlier than 2026-03-10 09:00 | Шуранов Ю | 1h | 1h |
| 1303 | 2.277.2 | доставка | 10d | 2026-03-10 10:00 A | 2026-03-24 10:00 A | 1302 | 100% | start no earlier than 2026-03-06 08:00 | Карабанов | 80h | 80h |
| 1304 | 2.277.3 | изготовление | 4h | 2026-03-24 09:00 A | 2026-03-24 13:00 A | 1303 | 100% | start no earlier than 2026-03-24 09:00 | Тимофеев В | 4h | 4h |
| 1305 | 2.278 | закрепить лоток для совка с спиртом. Изготовить усилит косынку | 2h | 2026-03-07 09:00 A | 2026-03-09 11:00 A |  | 100% | start no earlier than 2026-03-07 09:00 | Бундин В | 2h | 2h |
| 1306 | 2.279 | **установить монтажную коробку квадропак. Инструктаж Шуранов по тлф** | 0.12d | 2026-03-06 08:00 A | 2026-03-06 10:00 A |  | 100% |  | Бундин В | 2h | 2h |
| 1307 | 2.279.1 | Не уходит вода в душевой кабине, посмотреть, устранить. | 1h | 2026-03-06 08:00 A | 2026-03-06 10:00 A |  | 100% | start no earlier than 2026-03-06 08:00 | Бобренок В | 1h | 1h |
| 1308 | 2.280 | ревизия вентиляторов охладителя, не закрываются крышки | 30min | 2026-03-05 09:00 A | 2026-03-05 09:30 A |  | 100% | start no earlier than 2026-03-05 09:00 | Тимофеев В | 0.5h | 0.5h |
| 1309 | 2.281 | **Квадропак** | 0.38d | 2026-03-05 09:00 A | 2026-03-05 12:00 A |  | 100% |  |  | 3h | 3h |
| 1310 | 2.281.1 | Уложить красиво провода на лестнице квадропака цех 2 (созвон с Шурановым) | 3h | 2026-03-05 09:00 A | 2026-03-05 12:00 A |  | 100% | start no earlier than 2026-03-05 09:00 | Дедов В | 3h | 3h |
| 1311 | 2.282 | **Сброс ошибо Н4 и Е9 на кондиционерах** | 0.08d | 2026-03-04 09:00 A | 2026-03-04 09:40 A |  | 100% |  |  | 0.67h | 0.67h |
| 1312 | 2.282.1 | Договориться с оплотом по решению | 30min | 2026-03-04 09:00 A | 2026-03-04 09:30 A |  | 100% | start no earlier than 2026-03-04 09:00 | Зорькин В | 0.5h | 0.5h |
| 1313 | 2.282.2 | устранить ошибки | 10min | 2026-03-04 09:30 A | 2026-03-04 09:40 A | 1312 | 100% | start no earlier than 2026-03-03 08:00 | Зорькин В | 0.17h | 0.17h |
| 1314 | 2.283 | закреить поликарбанат по периметру | 4h | 2026-03-08 09:00 A | 2026-03-09 13:00 A |  | 100% | start no earlier than 2026-03-08 09:00 | Макаревич А | 4h | 4h |
| 1315 | 2.284 | смазать ручки и шарниры дверей | 1h | 2026-03-08 09:00 A | 2026-03-09 10:00 A |  | 100% | start no earlier than 2026-03-08 09:00 | Макаревич А | 1h | 1h |

| ID | WBS | Task | Duration | Start | Finish | Predecessors | Complete | Constraint | Resources | Work | Actual work |
| --- | --- | --- | --- | --- | --- | --- | --- | --- | --- | --- | --- |
| 1316 | 2.285 | **сделать ровным порог вход в мойку экструдера** | 23.5d | 2026-03-03 09:00 A | 2026-04-03 13:00 A |  | 100% |  |  | 86.25h | 86.25h |
| 1317 | 2.285.1 | Показать Олегу порог | 30min | 2026-03-03 09:00 A | 2026-03-03 09:30 A |  | 100% | start no earlier than 2026-03-03 08:00 | Зорькин В; Олег лукас | 1h | 1h |
| 1318 | 2.285.2 | составить план ремонта | 15min | 2026-03-03 09:00 A | 2026-03-03 09:15 A |  | 100% | start no earlier than 2026-03-03 09:00 | Зорькин В; Некрасов А; Труфанов А | 0.75h | 0.75h |
| 1319 | 2.285.3 | составить заявку на материал | 30min | 2026-03-04 09:00 A | 2026-03-04 09:30 A | 1318 | 100% | start no earlier than 2026-03-04 09:00 | Зорькин В | 0.5h | 0.5h |
| 1320 | 2.285.4 | доставка | 10d | 2026-03-04 09:30 A | 2026-03-18 09:30 A | 1319 | 100% | start no earlier than 2026-03-03 08:00 | Карабанов | 80h | 80h |
| 1321 | 2.285.5 | реализация | 4h | 2026-04-03 09:00 A | 2026-04-03 13:00 A | 1320 | 100% | start no earlier than 2026-04-03 09:00 | Олег | 4h | 4h |
| 1322 | 2.286 | востановить профлист. Проход навески экструдер. Обрезками с 3ц, цвет любой | 5h | 2026-03-08 09:00 A | 2026-03-09 15:00 A |  | 100% | start no earlier than 2026-03-08 09:00 | Макаревич А | 5h | 5h |
| 1323 | 2.287 | установить отбойники в проход и углы проезд навесок. Барть с 5а | 4h | 2026-03-09 09:00 A | 2026-03-09 13:00 A |  | 100% | start no earlier than 2026-03-09 09:00 | Макаревич А | 4h | 4h |
| 1324 | 2.288 | **установить отбойники в углы проезд навесок** | 24.25d | 2026-03-13 09:00 A | 2026-04-16 11:00 A |  | 100% |  |  | 82.17h | 82.17h |
| 1325 | 2.288.1 | заявка 2 отбойника | 10min | 2026-03-13 09:00 A | 2026-03-13 09:10 A |  | 100% | start no earlier than 2026-03-13 09:00 | Зорькин В | 0.17h | 0.17h |
| 1326 | 2.288.2 | доставка | 10d | 2026-03-13 09:10 A | 2026-03-27 09:10 A | 1325 | 100% | start no earlier than 2026-03-12 08:00 | Карабанов | 80h | 80h |
| 1327 | 2.288.3 | монтаж | 2h | 2026-04-16 09:00 A | 2026-04-16 11:00 A | 1326 | 100% | start no earlier than 2026-04-16 09:00 | Бундин В | 2h | 2h |
| 1328 | 2.289 | **наростить ножки на бестроме бункер, вместо деревянной** | 3.38d | 2026-03-05 09:00 A | 2026-03-10 12:00 A |  | 100% |  | Макаревич А | 39h | 39h |
| 1329 | 2.289.1 | **мойка** | 0.38d | 2026-03-05 09:00 A | 2026-03-05 12:00 A |  | 100% |  |  | 6h | 6h |
| 1330 | 2.289.1.1 | ревизия вытяжка принудительная из печи (нерж вентилятор), очистка | 3h | 2026-03-05 09:00 A | 2026-03-05 12:00 A |  | 100% | start no earlier than 2026-03-05 09:00 | Некрасов А; Труфанов А | 6h | 6h |
| 1331 | 2.289.2 | ремонт колесо штабелер/замена подшипник | 3h | 2026-03-10 09:00 A | 2026-03-10 12:00 A |  | 100% | start no earlier than 2026-03-10 09:00 | Тимофеев В; Дедов В | 6h | 6h |
| 1332 | 2.290 | **увеличить освещение в зоне квадропака** | 41.88d | 2026-03-02 09:00 A | 2026-04-28 17:00 A |  | 100% |  |  | 101h | 101h |
| 1333 | 2.290.1 | составить список мматериал для монтажа | 30min | 2026-03-02 09:00 A | 2026-03-02 09:30 A |  | 100% | start no earlier than 2026-03-02 09:00 | Труфанов А; Некрасов А; Зорькин В | 1.5h | 1.5h |
| 1334 | 2.290.2 | заявка светильники | 30min | 2026-03-02 09:30 A | 2026-03-02 10:00 A | 1333 | 100% | start no earlier than 2026-02-27 08:00 | Зорькин В | 0.5h | 0.5h |
| 1335 | 2.290.3 | доставка | 10d | 2026-03-02 10:00 A | 2026-03-16 10:00 A | 1334 | 100% | start no earlier than 2026-02-27 08:00 | Карабанов | 80h | 80h |
| 1336 | 2.290.4 | монтаж светильников зона фасовки 8 светильников, операторы помогут | 15h | 2026-04-25 09:00 A | 2026-04-28 17:00 A |  | 100% | start no earlier than 2026-04-25 09:00 | Бобренок В | 15h | 15h |
| 1337 | 2.290.5 | монтаж светильников зона квадропак 1шт - перевесить светильник | 1h | 2026-04-16 09:00 A | 2026-04-16 10:00 A |  | 100% | start no earlier than 2026-04-16 09:00 | Тимофеев В | 1h | 1h |
| 1338 | 2.290.6 | монтаж | 2h | 2026-03-06 09:00 A | 2026-03-06 11:00 A |  | 100% | start no earlier than 2026-03-06 09:00 | Бобренок В | 2h | 2h |
| 1339 | 2.290.7 | **замена сетка печи на мелкую** | 0.12d | 2026-03-02 09:00 A | 2026-03-02 10:00 A |  | 100% |  |  | 1h | 1h |
| 1340 | 2.290.7.1 | согласовать спецификацию / оплата счет | 1h | 2026-03-02 09:00 A | 2026-03-02 10:00 A |  | 100% | start no earlier than 2026-03-02 09:00 | Домоводов К | 1h | 1h |

| ID | WBS | Task | Duration | Start | Finish | Predecessors | Complete | Remaining | Total slack | Free slack | Constraint | Resources | Work | Actual work |
| --- | --- | --- | --- | --- | --- | --- | --- | --- | --- | --- | --- | --- | --- | --- |
| 1341 | 2.291 | **монтаж дозации жира в экструдер** | 34.25d? | 2026-02-27 09:00 A | 2026-04-16 11:00 |  | 38% | 21.26d? | 241.34d |  |  |  | 25h | 15h |
| 1342 | 2.291.1 | монтаж частотного привода | 2h | 2026-02-27 09:00 A | 2026-02-27 11:00 A |  | 100% |  |  |  | start no earlier than 2026-02-27 09:00 | Тимофеев В | 2h | 2h |
| 1343 | 2.291.2 | монтаж трассы гидравлической | 2h | 2026-03-02 09:00 A | 2026-03-02 11:00 A | 1342 | 100% |  |  |  | start no earlier than 2026-03-02 09:00 | Тимофеев В | 2h | 2h |
| 1344 | 2.291.3 | сборка канистры с фитингом | 1h | 2026-03-02 11:00 A | 2026-03-02 12:00 A | 1343 | 100% |  |  |  | start no earlier than 2026-02-26 08:00 | Тимофеев В | 1h | 1h |
| 1345 | 2.291.4 | калибровка на нужный расход | 1h | 2026-03-03 09:00 A | 2026-03-03 10:00 A |  | 100% |  |  |  | start no earlier than 2026-03-03 09:00 | Зорькин В; Тимофеев В | 2h | 2h |
| 1346 | 2.291.5 | испытание | 1h | 2026-03-04 09:00 A | 2026-03-04 10:00 A |  | 100% |  |  |  | start no earlier than 2026-03-04 09:00 | Зорькин В | 1h | 1h |
| 1347 | 2.291.6 | подключить управление насосом синхронно с запуском ножей экструдера. Проложить кабель, изучить параметары, передать по смене что подключать | 4h | 2026-03-04 09:00 | 2026-03-04 13:00 |  |  |  | 272.09d |  | start no earlier than 2026-03-04 09:00 | Дедов В | 4h |  |
| 1348 | 2.291.7 | подключить кабель/ неастроить параметры, что передаст Дедов | 1h | 2026-03-05 09:00 | 2026-03-05 10:00 |  |  |  | 271.47d |  | start no earlier than 2026-03-05 09:00 | Труфанов А | 1h |  |
| 1349 | 2.291.8 | поставка контрллра | 1d? | 2026-03-11 09:00 | 2026-03-11 18:00 |  |  |  | 266.34d | 25d | start no earlier than 2026-03-11 09:00 |  |  |  |
| 1350 | 2.291.9 | подключить контрллера расходомер | 2h | 2026-04-16 09:00 | 2026-04-16 11:00 | 1349 |  |  | 241.34d |  | start no earlier than 2026-04-16 09:00 | Тимофеев В | 2h |  |
| 1351 | 2.291.10 | Прокинуть интерфейсный кабель от черной коробочки до нового частотника на синем бункере (проложить так чтоб ни где ничего не торчало) | 3h | 2026-03-05 09:00 | 2026-03-05 12:00 |  |  |  | 271.22d |  | start no earlier than 2026-03-05 08:00 | Дедов В | 3h |  |
| 1352 | 2.291.11 | сделать регулировку угла наклона приемная воронка конв в охладитель после жира | 3h | 2026-03-05 09:00 A | 2026-03-05 12:00 A |  | 100% |  |  |  | start no earlier than 2026-03-05 09:00 | Некрасов А; Труфанов А | 6h | 6h |
| 1353 | 2.291.12 | сборка и монтаж полка для дез раствора на охладитель | 1h | 2026-03-02 09:00 A | 2026-03-02 10:00 A |  | 100% |  |  |  | start no earlier than 2026-03-02 09:00 | Тимофеев В | 1h | 1h |
| 1354 | 2.292 | **настройка блокировок отключения котла, если отключена приточка** | 130.25d | 2026-03-03 09:00 A | 2026-09-01 11:00 |  | 7% | 120.93d | 143.34d |  |  |  | 86.17h | 6.17h |
| 1355 | 2.292.1 | внести в схему котла блокировку либо от трм 33 либо от частотника | 4h | 2026-03-03 09:00 A | 2026-03-03 13:00 A |  | 100% |  |  |  | start no earlier than 2026-03-03 09:00 | Дедов В | 4h | 4h |
| 1356 | 2.292.2 | Заявка на реле протока воды | 10min | 2026-03-10 09:00 A | 2026-03-10 09:10 A |  | 100% |  |  |  | start no earlier than 2026-03-10 09:00 | Зорькин В | 0.17h | 0.17h |
| 1357 | 2.292.3 | Доставка | 10d | 2026-03-10 09:10 | 2026-03-24 09:10 | 1356 |  |  | 258.57d |  | start no earlier than 2026-03-02 09:00 | Карабанов | 80h |  |
| 1358 | 2.292.4 | Замена | 2h | 2026-09-01 09:00 A | 2026-09-01 11:00 A | 1357 | 100% |  |  |  | start no earlier than 2026-09-01 09:00 | Дедов В | 2h | 2h |
| 1359 | 2.293 | Запрет работы вентилятора если низкая температура калорифера | 2h | 2026-03-12 09:00 A | 2026-03-12 11:00 A |  | 100% |  |  |  | start no earlier than 2026-03-12 09:00 | Дедов В | 2h | 2h |
| 1360 | 2.294 | **установить на охладитель ролики + скольжение трубы** | 32d? | 2026-09-01 09:00 | 2026-10-05 18:00 |  |  |  | 111.59d |  |  |  | 10h |  |
| 1361 | 2.294.1 | печать кронштейнов | 2h | 2026-09-01 09:00 | 2026-09-01 11:00 |  |  |  | 143.34d |  | start no earlier than 2026-09-01 09:00 | Домоводов К | 2h |  |
| 1362 | 2.294.2 | установить держатели труб | 1d? | 2026-10-05 09:00 | 2026-10-05 18:00 |  |  |  | 111.59d |  | start no earlier than 2026-10-05 09:00 | Тимофеев В | 8h |  |
| 1363 | 2.295 | **установить паровопровод для очистки сетки печи на мойке парогенератором** | 8.75d | 2026-03-02 09:00 A | 2026-03-12 16:00 A |  | 100% |  |  |  |  |  | 18.5h | 18.5h |
| 1364 | 2.295.1 | проверка фитингов | 30min | 2026-03-02 09:00 A | 2026-03-02 09:30 A |  | 100% |  |  |  | start no earlier than 2026-03-02 09:00 | Зорькин В | 0.5h | 0.5h |
| 1365 | 2.295.2 | монтаж | 2h | 2026-03-05 09:00 A | 2026-03-05 11:00 A | 1364 | 100% |  |  |  | start no earlier than 2026-03-05 09:00 | Тимофеев В | 2h | 2h |

| ID | WBS | Task | Type | Duration | Start | Finish | Predecessors | Complete | Total slack | Free slack | Constraint | Resources | Work | Actual work |
| --- | --- | --- | --- | --- | --- | --- | --- | --- | --- | --- | --- | --- | --- | --- |
| 1366 | 2.295.3 | **лоток с транспортера в барабан. Большой** |  | 2.75d | 2026-03-10 09:00 A | 2026-03-12 16:00 A |  | 100% |  |  |  |  | 16h | 16h |
| 1367 | 2.295.3.1 | изготовить из листа лоток. Заготовку 612*965 с пропилами для сгиба по чертежу |  | 4h | 2026-03-10 09:00 A | 2026-03-10 13:00 A |  | 100% |  |  | start no earlier than 2026-03-10 09:00 | Макаревич А | 4h | 4h |
| 1368 | 2.295.3.2 | подготовить раму крепежа |  | 4h | 2026-03-12 09:00 A | 2026-03-12 13:00 A | 1367 | 100% |  |  | start no earlier than 2026-03-12 09:00 | Некрасов А; Труфанов А | 8h | 8h |
| 1369 | 2.295.3.3 | монтаж |  | 2h | 2026-03-12 14:00 A | 2026-03-12 16:00 A | 1368 | 100% |  |  | start no earlier than 2026-02-27 08:00 | Некрасов А; Труфанов А | 4h | 4h |
| 1370 | 2.296 | **установка ворот шлюз в проходе вент камеры** |  | 119d? | 2026-02-24 09:00 A | 2026-08-09 13:00 A |  | 100% |  |  |  |  | 163.5h | 163.5h |
| 1371 | 2.296.1 | изготовить и установить шпингалеты |  | 4h | 2026-02-27 09:00 A | 2026-02-27 13:00 A |  | 100% |  |  | start no earlier than 2026-02-27 09:00 | Некрасов А; Бобренок В | 8h | 8h |
| 1372 | 2.296.2 | установка петель, транспортировка, монтаж |  | 1d? | 2026-02-24 09:00 A | 2026-02-24 18:00 A |  | 100% |  |  | start no earlier than 2026-02-24 09:00 | Труфанов А; Некрасов А | 16h | 16h |
| 1373 | 2.296.3 | установить полосу притвора |  | 3h | 2026-02-27 09:00 A | 2026-02-27 12:00 A |  | 100% |  |  | start no earlier than 2026-02-28 09:00 | Бобренок В | 3h | 3h |
| 1374 | 2.296.4 | установить силиконовые уплотнители на пол |  | 2h | 2026-02-26 09:00 A | 2026-02-26 11:00 A |  | 100% |  |  | start no earlier than 2026-02-26 08:00 | Некрасов А | 2h | 2h |
| 1375 | 2.296.5 | заявка доводчики, шпингалеты |  | 30min | 2026-03-02 09:00 A | 2026-03-02 09:30 A |  | 100% |  |  | start no earlier than 2026-03-02 09:00 | Зорькин В | 0.5h | 0.5h |
| 1376 | 2.296.6 | доставка |  | 10d | 2026-03-02 09:30 A | 2026-03-16 09:30 A | 1375 | 100% |  |  | start no earlier than 2026-02-27 08:00 | Карабанов | 80h | 80h |
| 1377 | 2.296.7 | монтаж шпингалетов |  | 2h | 2026-03-25 09:00 A | 2026-03-25 11:00 A | 1376 | 100% |  |  | start no earlier than 2026-03-25 09:00 | Бобренок В | 2h | 2h |
| 1378 | 2.296.8 | **установить концевики блокировки открывания роль ворот, если не закрыты шлюз** |  | 109d | 2026-03-10 09:00 A | 2026-08-09 13:00 A |  | 100% |  |  |  |  | 52h | 52h |
| 1379 | 2.296.8.1 | **установить доводчики на ворота в зоне навесок** |  | 0.25d | 2026-06-14 09:00 A | 2026-06-15 11:00 A |  | 100% |  |  |  |  | 2h | 2h |
| 1380 | 2.296.8.1.1 | пробурить для задвижек ворот в полу отверстия -фиксация для проезда штабелера |  | 2h | 2026-06-14 09:00 A | 2026-06-15 11:00 A |  | 100% |  |  | start no earlier than 2026-06-14 09:00 | Бобренок В | 2h | 2h |
| 1381 | 2.296.8.2 | составить список материалов |  | 30min | 2026-03-10 09:00 A | 2026-03-10 09:30 A |  | 100% |  |  | start no earlier than 2026-03-10 09:00 | Дедов В | 0.5h | 0.5h |
| 1382 | 2.296.8.3 | заявка |  | 30min | 2026-03-10 09:30 A | 2026-03-10 10:00 A | 1381 | 100% |  |  | start no earlier than 2026-03-03 09:00 | Зорькин В | 0.5h | 0.5h |
| 1383 | 2.296.8.4 | доставка |  | 5d | 2026-03-10 10:00 A | 2026-03-17 10:00 A | 1382 | 100% |  |  | start no earlier than 2026-02-27 08:00 | Карабанов | 40h | 40h |
| 1384 | 2.296.8.5 | монтаж датчиков на двери / доводчиков. | manual | 4h | 2026-08-09 09:00 A | 2026-08-09 13:00 A | 1383 | 100% |  |  | start no earlier than 2026-08-09 09:00 | Бундин В | 4h | 4h |
| 1385 | 2.296.8.6 | монтаж кабеля от датчиков до блока рольворот, не подключать | manual | 4h | 2026-08-09 09:00 A | 2026-08-09 13:00 A | 1384 | 100% |  |  | start no earlier than 2026-08-09 09:00 | Бундин В | 4h | 4h |
| 1386 | 2.296.8.7 | установить концевики на ворота - установить закладные под них | manual | 1h | 2026-08-08 09:00 A | 2026-08-08 10:00 A |  | 100% |  |  | start no earlier than 2026-08-08 09:00 | Бундин В | 1h | 1h |
| 1387 | 2.297 | **схема блокировки роль ворот при открытым шлюзе + авт закрытие + датчик препятствия** |  | 24.5d | 2026-09-09 09:00 | 2026-10-05 13:00 |  |  | 112.09d |  |  |  | 8h |  |
| 1388 | 2.297.1 | разработка схемы |  | 4h | 2026-09-09 09:00 | 2026-09-09 13:00 |  |  | 134.59d | 22.5d | start no earlier than 2026-09-09 09:00 | Домоводов К | 4h |  |
| 1389 | 2.297.2 | монтаж |  | 4h | 2026-10-05 09:00 | 2026-10-05 13:00 | 1388FS+1d |  | 112.09d |  | start no earlier than 2026-10-05 09:00 | Труфанов А | 4h |  |
| 1390 | 2.298 | ремонт нижних сеток печи просева гранулы |  | 4h | 2025-01-23 09:00 A | 2025-01-23 13:00 A |  | 100% |  |  | start no earlier than 2025-01-23 09:00 | Черепанов И | 4h | 4h |

| ID | WBS | Task | Type | Duration | Start | Finish | Predecessors | Complete | Remaining | Total slack | Free slack | Constraint | Resources | Work | Actual work |
| --- | --- | --- | --- | --- | --- | --- | --- | --- | --- | --- | --- | --- | --- | --- | --- |
| 1391 | 2.299 | **замена реле безопасности бойлер ж** |  | 91.12d | 2024-10-16 09:00 A | 2025-02-20 10:00 A |  | 100% |  |  |  |  |  | 82h | 82h |
| 1392 | 2.299.1 | заЯВка |  | 1h | 2024-10-16 09:00 A | 2024-10-16 10:00 A |  | 100% |  |  |  | start no earlier than 2024-10-16 09:00 | Зорькин В | 1h | 1h |
| 1393 | 2.299.2 | доставка |  | 10d | 2024-10-16 10:00 A | 2024-10-30 10:00 A | 1392 | 100% |  |  |  | start no earlier than 2024-10-16 09:00 | Мультан | 80h | 80h |
| 1394 | 2.299.3 | замена |  | 1h | 2025-02-20 09:00 A | 2025-02-20 10:00 A | 1393 | 100% |  |  |  | start no earlier than 2025-02-20 09:00 | Некрасов А | 1h | 1h |
| 1395 | 2.300 | **установить пульты на регулировку шибиров вентиляции** |  | 32d? | 2026-08-31 09:00 | 2026-10-02 18:00 |  |  |  | 112.59d |  |  |  | 90h |  |
| 1396 | 2.300.1 | заявка на блок питания, шкаф управления, кабель |  | 2h | 2026-08-31 09:00 | 2026-08-31 11:00 |  |  |  | 133.34d | 0d | start no earlier than 2026-08-31 09:00 | Домоводов К | 2h |  |
| 1397 | 2.300.2 | доставка |  | 10d | 2026-08-31 11:00 | 2026-09-11 11:00 | 1396 |  |  | 133.34d | 20.75d | start no earlier than 2024-05-08 08:00 | Мультан | 80h |  |
| 1398 | 2.300.3 | монтаж |  | 1d? | 2026-10-02 09:00 | 2026-10-02 18:00 | 1397 |  |  | 112.59d |  | start no earlier than 2026-10-02 09:00 | Некрасов А | 8h |  |
| 1399 | 2.301 | заменить местами 2 зеркала маленький и большой бункер |  | 4h | 2024-10-03 09:00 | 2024-10-03 13:00 |  |  |  | 641.09d |  | start no earlier than 2024-10-03 09:00 | Черепанов И | 4h |  |
| 1400 | 2.302 | установить провод заземления на дверь шкафа упр сушки |  | 1h | 2024-01-08 09:00 | 2024-01-08 10:00 |  |  |  | 834.47d |  | start no earlier than 2024-01-06 09:00 | Тимофеев В | 1h |  |
| 1401 | 2.303 | **Палетообмотчик** |  | 50.06d | 2026-05-19 09:00 A | 2026-07-28 09:30 A |  | 100% |  |  |  |  |  | 80.67h | 80.67h |
| 1402 | 2.303.1 | заказать цепь |  | 10min | 2026-05-19 09:00 A | 2026-05-19 09:10 A |  | 100% |  |  |  | start no earlier than 2026-05-19 08:00 | Зорькин В | 0.17h | 0.17h |
| 1403 | 2.303.2 | доставка |  | 10d | 2026-05-29 09:00 A | 2026-06-11 18:00 A |  | 100% |  |  |  | start no earlier than 2026-05-29 09:00 | Карабанов | 80h | 80h |
| 1404 | 2.303.3 | замена цепи на вход в зону палетирования на складе взять 10М оцинкованная 3мм | manual | 30min | 2026-07-28 09:00 A | 2026-07-28 09:30 A |  | 100% |  |  |  | start no earlier than 2026-07-28 09:00 | Макаревич А | 0.5h | 0.5h |
| 1405 | 2.304 | Изготовить полочки из нержавейки по образцу на 18 баночек еще 2 шт |  | 3h | 2026-07-24 09:00 A | 2026-07-24 12:00 A |  | 100% |  |  |  | start no earlier than 2026-07-24 09:00 | Бундин В | 3h | 3h |
| 1406 | 2.305 | **разделить воду на ПГ и экструдер** |  | 0.25d | 2026-10-05 09:00 | 2026-10-05 11:00 |  |  |  | 0d |  |  |  | 2h |  |
| 1407 | 2.305.1 | изготовить промежуточную емкость для прекондера, подача воды, сделать по аналогу 3 цеха | manual | 2h | 2026-10-05 09:00 | 2026-10-05 11:00 |  |  |  |  |  | start no earlier than 2026-10-05 09:00 | Тимофеев В | 2h |  |
| 1408 | 2.306 | **отмена** |  | 84.31d? | 2026-08-11 09:00 A | 2026-11-26 11:30 |  | 2% | 82.4d? | 74.28d |  |  |  | 11h | 0.25h |
| 1409 | 2.306.1 | **найти места утечки тепла под потолком- перемерзает труба подачи воды в 3 цех** |  | 84.31d? | 2026-08-11 09:00 A | 2026-11-26 11:30 |  | 2% | 82.4d? | 74.28d |  |  |  | 11h | 0.25h |
| 1410 | 2.306.1.1 | вспомнить из-за чего холод под потолком? Какие нужны мероприятия?- никто не помнит |  | 15min | 2026-08-11 09:00 A | 2026-08-11 09:15 A |  | 100% |  |  |  | start no earlier than 2026-08-11 09:00 | Некрасов А | 0.25h | 0.25h |
| 1411 | 2.306.1.2 | подать олегу заявку |  | 15min | 2026-08-31 09:00 | 2026-08-31 09:15 |  |  |  | 144.56d |  | start no earlier than 2026-08-31 09:00 | Зорькин В | 0.25h |  |
| 1412 | 2.306.1.3 | проверка пирометром / тепловизором |  | 2h | 2026-11-11 09:00 | 2026-11-11 11:00 |  |  |  | 74.28d | 0d | start no earlier than 2026-11-11 09:00 | Некрасов А | 2h |  |
| 1413 | 2.306.1.4 | заявка (подумать материал) |  | 15min | 2026-11-11 11:00 | 2026-11-11 11:15 | 1412 |  |  | 74.28d | 0d | start no earlier than 2026-08-13 09:00 | Зорькин В | 0.25h |  |
| 1414 | 2.306.1.5 | доставка- контроль |  | 15min | 2026-11-25 11:15 | 2026-11-25 11:30 | 1413FS+10d |  |  | 74.28d | 0d | start no earlier than 2026-08-12 09:00 | Зорькин В | 0.25h |  |
| 1415 | 2.306.1.6 | монтаж |  | 1d? | 2026-11-25 11:30 | 2026-11-26 11:30 | 1414 |  |  | 74.28d |  | start no earlier than 2026-08-11 09:00 | Тимофеев В | 8h |  |

| ID | WBS | Task | Type | Duration | Start | Finish | Predecessors | Complete | Remaining | Total slack | Constraint | Resources | Work | Actual work |
| --- | --- | --- | --- | --- | --- | --- | --- | --- | --- | --- | --- | --- | --- | --- |
| 1416 | 2.307 | **вентиляция** |  | 11.25d | 2026-08-13 09:00 A | 2026-08-28 11:00 A |  | 100% |  |  |  |  | 4h | 4h |
| 1417 | 2.307.1 | Монтаж частотников на ШУ | manual | 2h | 2026-08-13 09:00 A | 2026-08-13 11:00 A |  | 100% |  |  | start no earlier than 2026-08-13 09:00 | Труфанов А | 2h | 2h |
| 1418 | 2.307.2 | В ШУ вырезать окна для частотников в двери, закрыть оргстеклом. Желательно на шарниры. |  | 2h | 2026-08-28 09:00 A | 2026-08-28 11:00 A |  | 100% |  |  | start no earlier than 2026-08-31 09:00 | Бундин В | 2h | 2h |
| 1419 | 2.308 | **Синий бункер** |  | 0.25d | 2026-07-30 09:00 A | 2026-07-30 11:00 A |  | 100% |  |  |  |  | 4h | 4h |
| 1420 | 2.308.1 | Ремонт синего бункера в зоне вибратора |  | 2h | 2026-07-30 09:00 A | 2026-07-30 11:00 A |  | 100% |  |  | start no earlier than 2026-07-30 09:00 | Труфанов А; Бундин В | 4h | 4h |
| 1421 | 2.309 | **Охладитель** |  | 0.38d | 2026-07-30 09:00 A | 2026-07-30 12:00 A |  | 100% |  |  |  |  | 3h | 3h |
| 1422 | 2.309.1 | Установка защиты сетки на полозья/направляющие, спросить Зорькина |  | 3h | 2026-07-30 09:00 A | 2026-07-30 12:00 A |  | 100% |  |  | start no earlier than 2026-07-30 09:00 | Тимофеев В | 3h | 3h |
| 1423 | 2.310 | Осмотреть/устранить течь раковины возле туалета |  | 1h | 2026-07-29 08:00 A | 2026-07-29 10:00 A |  | 100% |  |  | start no earlier than 2026-07-29 08:00 | Дедов В | 1h | 1h |
| 1424 | 3 | **3 цех** |  | 293.5d? | 2025-09-01 09:00 A | 2026-10-06 13:00 |  | 78% | 63.56d? | 111.09d |  |  | 1178.58h | 934.08h |
| 1425 | 3.1 | сопряжение круглой входной воронки в экструдер с квадратом выхода прекондиционера как в 2ц |  | 5h | 2026-10-02 09:00 | 2026-10-02 15:00 |  |  |  | 112.97d | start no earlier than 2026-10-02 09:00 | Бундин В | 5h |  |
| 1426 | 3.2 | **обеспечить быстрое переключение продукта из барабана годен/брак - охладитель/тазик** |  | 3.06d | 2026-09-19 09:00 A | 2026-09-22 09:30 A |  | 100% |  |  |  |  | 21h | 21h |
| 1427 | 3.2.1 | Модернизация лотка для удаления брака из барабанов, а именно: | milestone | 0h | 2026-09-19 09:00 A | 2026-09-19 09:00 A |  | 100% |  |  | start no earlier than 2026-09-19 09:00 | Макаревич А |  |  |
| 1428 | 3.2.2 | демонтировать отбойник, направляющий продукт в центр |  | 2h | 2026-09-19 09:00 A | 2026-09-19 11:00 A |  | 100% |  |  | start no earlier than 2026-09-19 09:00 | Макаревич А | 2h | 2h |
| 1429 | 3.2.3 | сделать торцевую стенку на шарнире с наклоном под барабан. Шарнир на высоте кронштейнов сетки. Шарнир дверной / как от печей |  | 4h | 2026-09-19 11:00 A | 2026-09-19 16:00 A | 1428 | 100% |  |  | start no earlier than 2026-09-18 08:00 | Макаревич А | 4h | 4h |
| 1430 | 3.2.4 | сделать фиксатор стенки в положении закрыто в виде щеколды. Безопасный быстрый |  | 2h | 2026-09-20 09:00 A | 2026-09-20 11:00 A | 1429 | 100% |  |  | start no earlier than 2026-09-20 09:00 | Макаревич А | 2h | 2h |
| 1431 | 3.2.5 | сделать "притвор", закрывающий щель после разрезания стенки. Все края защита от пореза либо зачистить либо лента |  | 4h | 2026-09-20 11:00 A | 2026-09-20 16:00 A | 1430 | 100% |  |  | start no earlier than 2026-09-18 08:00 | Макаревич А | 4h | 4h |
| 1432 | 3.2.6 | изготовить новый отбойник, направляющий продукт в центр, ниже опущенной стенки на сброс, не широкий, что бы удобно былоо менять сетку |  | 2h | 2026-09-20 16:00 A | 2026-09-20 18:00 A | 1431 | 100% |  |  | start no earlier than 2026-09-18 08:00 | Макаревич А | 2h | 2h |
| 1433 | 3.2.7 | Доработка короба после барабанов для ссыпки в емкость, установка ограничителей, язычка. Подробности у Труфанова |  | 6h | 2026-09-21 09:00 A | 2026-09-21 16:00 A |  | 100% |  |  | start no earlier than 2026-09-21 08:00 | Макаревич А | 6h | 6h |
| 1434 | 3.2.8 | установить на место, испытание |  | 30min | 2026-09-22 09:00 A | 2026-09-22 09:30 A |  | 100% |  |  | start no earlier than 2026-09-22 09:00 | Некрасов А; Труфанов А | 1h | 1h |
| 1435 | 3.3 | **Дражжировка** |  | 13.25d | 2026-09-17 09:00 A | 2026-09-30 11:00 |  | 86% | 1.89d | 115.34d |  |  | 14h | 12h |
| 1436 | 3.3.1 | Повесить мощную цепь, за которую можно опускать и поднимать защиту |  | 1h | 2026-09-18 09:00 A | 2026-09-18 10:00 A |  | 100% |  |  | start no earlier than 2026-09-18 09:00 | Бундин В | 1h | 1h |
| 1437 | 3.3.2 | Сделать ограничитель, когда опускаешь защиту на себя, на уровне перил |  | 1h | 2026-09-17 09:00 A | 2026-09-17 10:00 A |  | 100% |  |  | start no earlier than 2026-09-17 08:00 | Бундин В | 1h | 1h |
| 1438 | 3.3.3 | Сделать из отбойников рессор уаз отбойники на защите паллет, чтоб не било когда падает (позвони, обьясню) |  | 2h | 2026-09-17 09:00 A | 2026-09-17 11:00 A |  | 100% |  |  | start no earlier than 2026-09-17 08:00 | Бундин В | 2h | 2h |
| 1439 | 3.3.4 | Перенести частотник со стены ближе к барабанам, смонтировать на раму барабанов |  | 2h | 2026-09-30 09:00 | 2026-09-30 11:00 |  |  |  | 115.34d | start no earlier than 2026-09-30 09:00 | Дедов В | 2h |  |
| 1440 | 3.3.5 | на коневейер циклон-барабан установить полосу сбоку ленты не дающую грануле скатываться обратно, примеры посмотреть в 1 цеху |  | 1h | 2026-09-22 09:00 A | 2026-09-22 10:00 A |  | 100% |  |  | start no earlier than 2026-09-22 09:00 | Тимофеев В | 1h | 1h |
| 1441 | 3.3.6 | Изготовить и установить уши на конце конвейера в барабан (чтоб гранула не попадала внутрь ленты) |  | 2h | 2026-09-21 09:00 A | 2026-09-21 11:00 A |  | 100% |  |  | start no earlier than 2026-09-21 09:00 | Тимофеев В | 2h | 2h |
| 1442 | 3.3.7 | Доделать и установить язык между барабанами |  | 1h | 2026-09-21 09:00 A | 2026-09-21 10:00 A |  | 100% |  |  | start no earlier than 2026-09-21 09:00 | Тимофеев В | 1h | 1h |
| 1443 | 3.3.8 | Увеличить «язычек» между барабанами на жирах (просыпается много гранулы |  | 4h | 2026-09-17 09:00 A | 2026-09-17 13:00 A |  | 100% |  |  | start no earlier than 2026-09-17 09:00 | Тимофеев В | 4h | 4h |

| ID | WBS | Task | Duration | Start | Finish | Predecessors | Complete | Remaining | Total slack | Free slack | Constraint | Resources | Work | Actual work |
| --- | --- | --- | --- | --- | --- | --- | --- | --- | --- | --- | --- | --- | --- | --- |
| 1444 | 3.4 | **Разобрать регулировку ножевого узла, достать вал на котором установлен штурвал** | 12.12d | 2026-09-21 09:00 A | 2026-10-05 10:00 |  | 40% | 7.28d | 112.47d |  |  |  | 2.5h | 1h |
| 1445 | 3.4.1 | Снять вал, передать Зорькину | 1h | 2026-09-22 09:00 A | 2026-09-22 10:00 A |  | 100% |  |  |  | start no earlier than 2026-09-22 09:00 | Тимофеев В | 1h | 1h |
| 1446 | 3.4.2 | Заявка по образцу | 20min | 2026-09-21 09:00 | 2026-09-21 09:20 |  |  |  | 116.47d | 0.02d | start no earlier than 2026-09-21 09:00 | Зорькин В | 0.33h |  |
| 1447 | 3.4.3 | контроль | 10min | 2026-09-28 09:00 | 2026-09-28 09:10 | 1446SF+7d |  |  | 116.45d | 3.98d | start no earlier than 2026-09-28 09:00 | Зорькин В | 0.17h |  |
| 1448 | 3.4.4 | установка | 1h | 2026-10-05 09:00 | 2026-10-05 10:00 | 1447FS+1d |  |  | 112.47d |  | start no earlier than 2026-10-05 09:00 | Тимофеев В | 1h |  |
| 1449 | 3.5 | Между шлюзовым питателем и конвейером на жирах сделать ограничение, чтоб не разлеталась гранула и не мешало двигать конвейер | 3h | 2026-09-15 09:00 A | 2026-09-15 12:00 A |  | 100% |  |  |  | start no earlier than 2026-09-15 09:00 | Тимофеев В | 3h | 3h |
| 1450 | 3.6 | **Найти и установить жироуловитель с синего склада на жирах мойка** | 16.12d | 2026-09-16 09:00 A | 2026-10-02 10:00 |  | 54% | 7.49d | 113.47d |  |  |  | 3.33h | 2.25h |
| 1451 | 3.6.1 | Составить список необходимых материлов для подключения (передать зорькину) | 1h | 2026-09-16 09:00 A | 2026-09-16 10:00 A |  | 100% |  |  |  | start no earlier than 2026-09-16 08:00 | Тимофеев В; Зорькин В | 2h | 2h |
| 1452 | 3.6.2 | Заявка | 15min | 2026-09-16 10:00 A | 2026-09-16 10:15 A | 1451 | 100% |  |  |  | start no earlier than 2026-09-16 08:00 | Зорькин В | 0.25h | 0.25h |
| 1453 | 3.6.3 | Контроль | 5min | 2026-09-24 09:00 | 2026-09-24 09:05 | 1452FS+7d |  |  | 121.46d | 7.99d | start no earlier than 2026-09-24 09:00 | Зорькин В | 0.08h |  |
| 1454 | 3.6.4 | Монтаж | 1h | 2026-10-02 09:00 | 2026-10-02 10:00 | 1453 |  |  | 113.47d |  | start no earlier than 2026-10-02 09:00 | Тимофеев В | 1h |  |
| 1455 | 3.7 | монтаж оконечные кожухи на конвейер после охладителя, что бы гранула не разлеталась при перевороте ленты | 4h | 2026-09-21 09:00 A | 2026-09-21 13:00 A |  | 100% |  |  |  | start no earlier than 2026-09-22 09:00 | Тимофеев В | 4h | 4h |
| 1456 | 3.8 | Перенести регулировку подачи жира, ближе к барабанам. Перенос частотник на раму барабанов | 4h | 2026-10-06 09:00 | 2026-10-06 13:00 |  |  |  | 111.09d |  | start no earlier than 2026-10-06 09:00 | Тимофеев В | 4h |  |
| 1457 | 3.9 | Проблема с закрыванием дверцы привода ножей (шарнир с мотором ножей при закрывании теряет соосность, сделать упор) | 1h | 2026-09-15 09:00 A | 2026-09-15 10:00 A |  | 100% |  |  |  | start no earlier than 2026-09-15 09:00 | Тимофеев В | 1h | 1h |
| 1458 | 3.10 | Разобраться почему закусывает резьбу прижима ножей к фильере (испытывать после установки штурвала) | 1h | 2026-09-15 09:00 A | 2026-09-15 10:00 A |  | 100% |  |  |  | start no earlier than 2026-09-15 09:00 | Тимофеев В | 1h | 1h |
| 1459 | 3.11 | Регулировка ножей на экструдере — сделать «штурвал»; | 2h | 2026-09-15 09:00 A | 2026-09-15 11:00 A |  | 100% |  |  |  | start no earlier than 2026-09-15 09:00 | Тимофеев В | 2h | 2h |
| 1460 | 3.12 | **Гранулы выходили из печи со следами смазки** | 0.5d | 2026-10-02 09:00 | 2026-10-02 13:00 |  |  |  | 113.09d |  |  |  | 4h |  |
| 1461 | 3.12.1 | (сделать направляющие в печи); | 4h | 2026-10-02 09:00 | 2026-10-02 13:00 |  |  |  | 113.09d |  | start no earlier than 2026-10-02 09:00 | Тимофеев В | 4h |  |
| 1462 | 3.13 | **С двигателя экструдера выдавило много масла;** | 14.75d | 2026-09-18 09:00 A | 2026-10-02 16:00 |  | 36% | 9.51d | 112.84d |  |  |  | 11.25h | 4h |
| 1463 | 3.13.1 | установить поплавок на верхний уровень для блокировки насоса- осмотр | 4h | 2026-09-18 09:00 A | 2026-09-18 13:00 A |  | 100% |  |  |  | start no earlier than 2026-09-18 09:00 | Бобренок В | 4h | 4h |
| 1464 | 3.13.2 | заявка на датчики | 1h | 2026-09-18 14:00 | 2026-09-18 15:00 | 1463 |  |  | 117.19d | 0d | start no earlier than 2026-09-18 08:00 | Зорькин В | 1h |  |
| 1465 | 3.13.3 | контроль достачки | 15min | 2026-09-25 15:00 | 2026-09-25 15:15 | 1464FS+7d |  |  | 117.19d | 4.34d | start no earlier than 2026-09-18 08:00 | Зорькин В | 0.25h |  |
| 1466 | 3.13.4 | монтаж датчик в редуктор | 2h | 2026-10-01 09:00 | 2026-10-01 11:00 | 1465FS+1d |  |  | 112.84d | 0d | start no earlier than 2026-10-01 09:00 | Бобренок В | 2h |  |
| 1467 | 3.13.5 | подключение датчика в схему - блокировка по уровню | 4h | 2026-10-02 11:00 | 2026-10-02 16:00 | 1466FS+1d |  |  | 112.84d |  | start no earlier than 2026-09-18 08:00 | Дедов В | 4h |  |
| 1468 | 3.14 | Заменить кран подачи воды (второй слева) на втором предкондиционере — | 1h | 2026-09-14 09:00 A | 2026-09-14 10:00 A |  | 100% |  |  |  | start no earlier than 2026-09-14 09:00 | Тимофеев В | 1h | 1h |

| ID | WBS | Task | Type | Duration | Start | Finish | Predecessors | Complete | Total slack | Free slack | Constraint | Resources | Work | Actual work |
| --- | --- | --- | --- | --- | --- | --- | --- | --- | --- | --- | --- | --- | --- | --- |
| 1469 | 3.15 | **По схемам Труфанова разобраться с автоматикой шкафа и подключить 3 датчика уровня и подписать, где и что находится +кнопки и переключатели на шкафу тоже подписать** |  | 1.06d | 2026-09-07 09:00 A | 2026-09-08 09:30 A |  | 100% |  |  |  |  | 8.5h | 8.5h |
| 1470 | 3.15.1 | изучение схему |  | 8h | 2026-09-07 09:00 A | 2026-09-07 18:00 A |  | 100% |  |  | start no earlier than 2026-09-07 09:00 | Дедов В | 8h | 8h |
| 1471 | 3.15.2 | подкл 2я нория по датчику уровня |  | 30min | 2026-09-08 09:00 A | 2026-09-08 09:30 A |  | 100% |  |  | start no earlier than 2026-09-08 08:00 | Дедов В | 0.5h | 0.5h |
| 1472 | 3.16 | **установить ограничитель на дверь что бы попадала под движение рольворот** |  | 7.16d | 2026-09-22 09:00 | 2026-09-29 10:15 |  |  | 116.44d |  |  |  | 1.5h |  |
| 1473 | 3.16.1 | заявка |  | 15min | 2026-09-22 09:00 | 2026-09-22 09:15 |  |  | 117.41d | 0.97d | start no earlier than 2026-09-22 09:00 | Зорькин В | 0.25h |  |
| 1474 | 3.16.2 | контроль доставки |  | 15min | 2026-09-28 09:00 | 2026-09-28 09:15 | 1473FS+5d |  | 116.44d | 0d | start no earlier than 2026-09-28 09:00 | Зорькин В | 0.25h |  |
| 1475 | 3.16.3 | монтаж |  | 1h | 2026-09-29 09:15 | 2026-09-29 10:15 | 1474FS+1d |  | 116.44d |  | start no earlier than 2026-09-26 09:00 | Бундин В | 1h |  |
| 1476 | 3.17 | приварить к люку сливной ямы вспомогательную ручку (ручка весит на стеллаже в слесарке) | manual | 2h | 2026-08-30 09:00 | 2026-08-30 11:00 |  |  |  |  | start no earlier than 2026-08-30 09:00 | Бундин В | 2h |  |
| 1477 | 3.18 | **монтаж унитаз, получить на складе** |  | 0d | 2026-08-17 09:00 A | 2026-08-17 09:00 A |  | 100% |  |  |  |  |  |  |
| 1478 | 3.18.1 | крышка бачка лопнувшая- поменять по гарантии | milestone | 0d | 2026-08-17 09:00 A | 2026-08-17 09:00 A |  | 100% |  |  | start no earlier than 2026-08-17 09:00 | Зорькин В |  |  |
| 1479 | 3.19 | закрыить металлом 1.5мм щель стена / площадка загрузки муки. Между рольворотой и стеной с окнами |  | 2h | 2026-08-15 09:00 A | 2026-08-17 11:00 A |  | 100% |  |  | start no earlier than 2026-08-15 09:00 | Бундин В | 2h | 2h |
| 1480 | 3.20 | закрыть щель битумной лентой стык площадка-профлист стенка. Полоску клеить из нутри, обезжирить. |  | 2h | 2026-08-16 09:00 A | 2026-08-17 11:00 A |  | 100% |  |  | start no earlier than 2026-08-16 09:00 | Бундин В | 2h | 2h |
| 1481 | 3.21 | монтаж светильник в корридор / лестница на площадку жиров |  | 3h | 2026-08-16 09:00 A | 2026-08-17 12:00 A |  | 100% |  |  | start no earlier than 2026-08-16 09:00 | Бундин В | 3h | 3h |
| 1482 | 3.22 | **ломает гранулу после печи** |  | 17.12d? | 2026-08-18 09:00 A | 2026-09-09 10:00 A |  | 100% |  |  |  |  | 18.5h | 18.5h |
| 1483 | 3.22.1 | тест на ручной загрузке |  | 2h | 2026-08-18 09:00 A | 2026-08-18 11:00 A |  | 100% |  |  | start no earlier than 2026-08-18 09:00 | Шуранов Ю | 2h | 2h |
| 1484 | 3.22.2 | полная раборка трассы на ревизию острых граней? |  | 2h | 2026-08-19 09:00 A | 2026-08-19 11:00 A |  | 100% |  |  | start no earlier than 2026-08-19 09:00 | Тимофеев В | 2h | 2h |
| 1485 | 3.22.3 | определить параметры нории для запроса цены |  | 2h | 2026-08-18 09:00 A | 2026-08-18 11:00 A |  | 100% |  |  | start no earlier than 2026-08-18 09:00 | Шуранов Ю | 2h | 2h |
| 1486 | 3.22.4 | контроль отвта |  | 15min | 2026-09-03 09:00 A | 2026-09-03 09:15 A | 1485FS+5d | 100% |  |  | start no earlier than 2026-09-03 09:00 | Зорькин В | 0.25h | 0.25h |
| 1487 | 3.22.5 | изготовить новый отвод 90 с фланцем, учесть степеньку |  | 1h | 2026-09-02 09:00 A | 2026-09-02 10:00 A |  | 100% |  |  | start no earlier than 2026-09-09 09:00 | Макаревич А | 1h | 1h |
| 1488 | 3.22.6 | тест |  | 1h | 2026-08-19 09:00 A | 2026-08-19 10:00 A |  | 100% |  |  | start no earlier than 2026-08-19 09:00 | Тимофеев В; Шуранов Ю | 2h | 2h |
| 1489 | 3.22.7 | переварить фланец на угловом соединении (объясню по телефону). То же самое | milestone | 0h | 2026-09-04 09:00 A | 2026-09-04 09:00 A |  | 100% |  |  | start no earlier than 2026-09-04 09:00 | Макаревич А |  |  |
| 1490 | 3.22.8 | печать переходника на 3д принтере |  | 1d? | 2026-08-31 09:00 A | 2026-08-31 18:00 A |  | 100% |  |  | start no earlier than 2026-08-31 09:00 | Домоводов К | 8h | 8h |
| 1491 | 3.22.9 | проверка размещения нории от квадропака |  | 15min | 2026-08-18 09:00 A | 2026-08-18 09:15 A |  | 100% |  |  | start no earlier than 2026-08-18 09:00 | Шуранов Ю | 0.25h | 0.25h |
| 1492 | 3.22.10 | установить угловой фланец на пневмотрассу |  | 1h | 2026-09-09 09:00 A | 2026-09-09 10:00 A |  | 100% |  |  | start no earlier than 2026-09-09 09:00 | Тимофеев В | 1h | 1h |

| ID | WBS | Task | Type | Duration | Start | Finish | Predecessors | Complete | Remaining | Total slack | Free slack | Constraint | Resources | Work | Actual work |
| --- | --- | --- | --- | --- | --- | --- | --- | --- | --- | --- | --- | --- | --- | --- | --- |
| 1493 | 3.23 | **доп мощности для приточной вентиляции** |  | 34d? | 2026-08-21 09:00 A | 2026-09-28 18:00 |  | 16% | 28.63d? | 116.59d |  |  |  | 152h | 24h |
| 1494 | 3.23.1 | проект автоматика ограничения мощности в автомате |  | 1d? | 2026-08-31 09:00 | 2026-08-31 18:00 |  |  |  | 116.59d | 0d | start no earlier than 2026-08-31 09:00 | Домоводов К | 8h |  |
| 1495 | 3.23.2 | составить ТЗ на монтаж кабеля |  | 3d | 2026-08-21 09:00 A | 2026-08-25 18:00 A |  | 100% |  |  |  | start no earlier than 2026-08-21 09:00 | Домоводов К | 24h | 24h |
| 1496 | 3.23.3 | получить КП / счет договор | milestone | 0d | 2026-09-01 18:00 | 2026-09-01 18:00 | 1494FS+1d, 1495FS+2d |  |  | 116.59d | 0d | start no earlier than 2026-08-27 09:00 | Домоводов К |  |  |
| 1497 | 3.23.4 | предоплата | milestone | 0d | 2026-09-02 18:00 | 2026-09-02 18:00 | 1496FS+1d |  |  | 116.59d | 0d | start no earlier than 2026-08-10 08:00 | Домоводов К |  |  |
| 1498 | 3.23.5 | монтаж |  | 15d | 2026-09-14 09:00 | 2026-09-28 18:00 | 1497FS+10d |  |  | 116.59d |  | start no earlier than 2026-08-10 08:00 | Подрядчик | 120h |  |
| 1499 | 3.24 | сделать перемычку на нижней части системы загрузки палет подачи жиров и гидрализата | manual | 3h | 2026-08-15 09:00 | 2026-08-15 12:00 |  |  |  |  |  | start no earlier than 2026-08-15 09:00 | Бундин В | 3h |  |
| 1500 | 3.25 | **сборка квадропака 3 цех** |  | 43.5d | 2026-08-14 09:00 A | 2026-10-05 13:00 |  | 70% | 12.89d | 112.09d |  |  |  | 37h | 25h |
| 1501 | 3.25.1 | Монтаж/позиционирование квадропака |  | 5h | 2026-09-02 09:00 A | 2026-09-02 15:00 A |  | 100% |  |  |  | start no earlier than 2026-09-02 09:00 | Труфанов А | 5h | 5h |
| 1502 | 3.25.2 | перестановка норий, задействовать бункер |  | 2h | 2026-08-17 09:00 A | 2026-08-17 11:00 A |  | 100% |  |  |  | start no earlier than 2026-08-17 09:00 | Тимофеев В; Некрасов А | 4h | 4h |
| 1503 | 3.25.3 | сборка накопительный стол |  | 2h | 2026-08-19 09:00 A | 2026-08-19 11:00 A | 1502 | 100% |  |  |  | start no earlier than 2026-08-19 09:00 | Тимофеев В | 2h | 2h |
| 1504 | 3.25.4 | подключение дозатор |  | 1h | 2026-08-14 09:00 A | 2026-08-14 10:00 A |  | 100% |  |  |  | start no earlier than 2026-08-14 09:00 | Труфанов А | 1h | 1h |
| 1505 | 3.25.5 | зарисовка схема ШУ нория - понять управление бункером |  | 4h | 2026-08-14 09:00 | 2026-08-14 13:00 |  |  |  | 155.09d |  | start no earlier than 2026-08-14 09:00 | Труфанов А | 4h |  |
| 1506 | 3.25.6 | подключение нория к упаковке |  | 2h | 2026-08-14 14:00 A | 2026-08-14 16:00 A | 1505 | 100% |  |  |  | start no earlier than 2026-08-14 09:00 | Труфанов А | 2h | 2h |
| 1507 | 3.25.7 | подключение вводный кабель (питание) информация у Труфанова |  | 2h | 2026-09-04 09:00 A | 2026-09-04 11:00 A | 1506 | 100% |  |  |  | start no earlier than 2026-09-04 09:00 | Бундин В; Труфанов А | 4h | 4h |
| 1508 | 3.25.8 | тест на пакетах |  | 4h | 2026-10-05 09:00 | 2026-10-05 13:00 |  |  |  | 112.09d |  | start no earlier than 2026-10-05 09:00 | Труфанов А; Зорькин В | 8h |  |
| 1509 | 3.25.9 | подключениекомпрессор |  | 1h | 2026-09-03 09:00 A | 2026-09-03 10:00 A | 1507 | 100% |  |  |  | start no earlier than 2026-09-03 09:00 | Бобренок В | 1h | 1h |
| 1510 | 3.25.10 | Установка квадропака (позиционирование нижней машины) информация у Труфанова |  | 2h | 2026-09-02 09:00 A | 2026-09-02 11:00 A |  | 100% |  |  |  | start no earlier than 2026-09-02 09:00 | Труфанов А; Бундин В | 4h | 4h |
| 1511 | 3.25.11 | Выставить опоры верхней рамы и лестницы по уровню |  | 1h | 2026-09-02 09:00 A | 2026-09-02 10:00 A |  | 100% |  |  |  | start no earlier than 2026-09-02 08:00 | Бундин В | 1h | 1h |
| 1512 | 3.25.12 | Редуктор стола повернуть кабелем к электрощиту (на столе) |  | 30min | 2026-09-02 09:00 A | 2026-09-02 09:30 A |  | 100% |  |  |  | start no earlier than 2026-09-02 08:00 | Бундин В | 0.5h | 0.5h |
| 1513 | 3.25.13 | Провод от редуктора и кнопки в гофре закрепить по раме стола завести в шкаф |  | 30min | 2026-09-02 09:00 A | 2026-09-02 09:30 A |  | 100% |  |  |  | start no earlier than 2026-09-02 08:00 | Бундин В | 0.5h | 0.5h |
| 1514 | 3.26 | сделать ручку и зацепной крюк для открытия люка сливной ямы | manual | 2h | 2026-08-08 09:00 A | 2026-08-08 11:00 A |  | 100% |  |  |  | start no earlier than 2026-08-08 09:00 | Бобренок В | 2h | 2h |
| 1515 | 3.27 | **карусель добавить перемычку снизу, чтобы не выпал мешок** |  | 30.25d | 2026-08-18 09:00 A | 2026-09-22 11:00 |  | 93% | 2.16d | 123.34d |  |  |  | 2.33h | 2.17h |
| 1516 | 3.27.1 | заказать краску |  | 10min | 2026-08-18 09:00 A | 2026-08-18 09:10 A |  | 100% |  |  |  | start no earlier than 2026-08-18 09:00 | Шуранов Ю | 0.17h | 0.17h |
| 1517 | 3.27.2 | контроль доставки |  | 10min | 2026-08-31 09:00 | 2026-08-31 09:10 | 1516FS+5d |  |  | 144.57d |  | start no earlier than 2026-08-31 09:00 | Зорькин В | 0.17h |  |
| 1518 | 3.27.3 | покрасить перемычки система безопасности) |  | 2h | 2026-09-22 09:00 A | 2026-09-22 11:00 A | 1517FS+1d | 100% |  |  |  | start no earlier than 2026-09-22 09:00 | Тимофеев В | 2h | 2h |
| 1519 | 3.28 | убрать битумную ленту снаружи мезонина |  | 1h | 2026-08-04 08:00 A | 2026-08-04 10:00 A |  | 100% |  |  |  | start no earlier than 2026-08-04 08:00 | Макаревич А | 1h | 1h |
| 1520 | 3.29 | хорошо закрепить шланг подачи воды в прекондеционер |  | 2h | 2026-08-04 08:00 A | 2026-08-04 11:00 A |  | 100% |  |  |  | start no earlier than 2026-08-04 08:00 | Макаревич А | 2h | 2h |
| 1521 | 3.30 | на выходе ротаметра поменять шланг большего диаметра |  | 1h | 2026-07-31 08:00 A | 2026-07-31 10:00 A |  | 100% |  |  |  | start no earlier than 2026-07-31 08:00 | Тимофеев В | 1h | 1h |
| 1522 | 3.31 | покрасить кронштейн крепления ротаметра |  | 1h | 2026-07-31 09:00 A | 2026-07-31 10:00 A |  | 100% |  |  |  | start no earlier than 2026-07-31 09:00 | Бундин В | 1h | 1h |
| 1523 | 3.32 | не набирает заданную температуру 4 зона экструдера- разобраться |  | 2h | 2026-07-30 08:00 A | 2026-07-30 11:00 A |  | 100% |  |  |  | start no earlier than 2026-07-30 08:00 | Дедов В | 2h | 2h |
| 1524 | 3.33 | сборка кожухи на печи |  | 2h | 2026-07-15 09:00 A | 2026-07-15 11:00 A |  | 100% |  |  |  | start no earlier than 2026-07-15 09:00 | Бундин В | 2h | 2h |

| ID | WBS | Task | Type | Duration | Start | Finish | Predecessors | Complete | Actual start | Actual finish | Constraint | Resources | Work | Actual work |
| --- | --- | --- | --- | --- | --- | --- | --- | --- | --- | --- | --- | --- | --- | --- |
| 1525 | 3.34 | **установить зеркало сферическое на бункер** |  | 15.5d | 2026-07-07 09:00 A | 2026-07-28 13:00 A |  | 100% |  |  |  |  | 5h | 5h |
| 1526 | 3.34.1 | заявка |  | 1h | 2026-07-07 09:00 A | 2026-07-07 10:00 A |  | 100% |  |  | start no earlier than 2026-07-07 09:00 | Зорькин В | 1h | 1h |
| 1527 | 3.34.2 | контроль доставки | milestone | 0d | 2026-07-17 10:00 A | 2026-07-17 10:00 A | 1526FS+10d | 100% |  |  | start no earlier than 2026-07-14 08:00 | Зорькин В |  |  |
| 1528 | 3.34.3 | монтаж |  | 4h | 2026-07-28 09:00 A | 2026-07-28 13:00 A | 1527FS+1d | 100% |  |  | start no earlier than 2026-07-28 09:00 | Макаревич А | 4h | 4h |
| 1529 | 3.35 | поиск след от смазки на охладителе |  | 1h | 2026-07-10 09:00 A | 2026-07-10 10:00 A |  | 100% |  |  | start no earlier than 2026-07-10 09:00 | Тимофеев В; Зорькин В | 2h | 2h |
| 1530 | 3.36 | **установить наосос центробежный на бочку слив с парогенератора, врезать штуцер в бочку** |  | 0.25d | 2026-07-15 09:00 A | 2026-07-15 11:00 A |  | 100% |  |  |  |  | 4h | 4h |
| 1531 | 3.36.1 | орг закуп с курьером |  | 2h | 2026-07-15 09:00 A | 2026-07-15 11:00 A |  | 100% |  |  | start no earlier than 2026-07-15 09:00 | Зорькин В | 2h | 2h |
| 1532 | 3.36.2 | монтаж штуцер |  | 2h | 2026-07-15 09:00 A | 2026-07-15 11:00 A |  | 100% |  |  | start no earlier than 2026-07-15 09:00 | Бобренок В | 2h | 2h |
| 1533 | 3.37 | **вода идет не стабильно** |  | 4.38d | 2026-07-09 09:00 A | 2026-07-15 12:00 A |  | 100% |  |  |  |  | 8h | 8h |
| 1534 | 3.37.1 | Поставить гидроаккумулятор на насос между выходом насосной станции и 3-х ходомым краном подачи воды в экструдер и заменить трубки на шланги |  | 3h | 2026-07-09 09:00 A | 2026-07-09 12:00 A |  | 100% |  |  | start no earlier than 2026-07-09 09:00 | Тимофеев В | 3h | 3h |
| 1535 | 3.37.2 | тест работы воды с ПГ на давлении питательного насоса 3+ |  | 1h | 2026-07-10 09:00 A | 2026-07-10 10:00 A |  | 100% |  |  | start no earlier than 2026-07-10 09:00 | Зорькин В; Тимофеев В | 2h | 2h |
| 1536 | 3.37.3 | орг закуп с курьером |  | 2h | 2026-07-15 09:00 A | 2026-07-15 11:00 A | 1531SS | 100% |  |  | start no earlier than 2026-07-13 09:00 | Зорькин В | 2h | 2h |
| 1537 | 3.37.4 | замена шланг напорный с насоса до ротаметра |  | 1h | 2026-07-15 11:00 A | 2026-07-15 12:00 A | 1536 | 100% |  |  | start no earlier than 2026-07-13 09:00 | Бобренок В | 1h | 1h |
| 1538 | 3.38 | Доработать крутилку ссыпа гранулы, прихватить на сварку |  | 1h | 2026-07-09 09:00 A | 2026-07-09 10:00 A |  | 100% |  |  | start no earlier than 2026-07-09 09:00 | Макаревич А | 1h | 1h |
| 1539 | 3.39 | удлинить лоток ножевого узла, до кромки загрузки применик пневмотранспорта |  | 3h | 2026-07-09 09:00 A | 2026-07-09 12:00 A |  | 100% |  |  | start no earlier than 2026-07-09 09:00 | Макаревич А | 3h | 3h |
| 1540 | 3.40 | Снять торцевые дверцы на печи для доступа к сетке |  | 1h | 2026-07-08 09:00 A | 2026-07-08 10:00 A |  | 100% |  |  | start no earlier than 2026-07-08 08:00 | Бундин В | 1h | 1h |
| 1541 | 3.41 | Снять кожухи на редукторах на цепях |  | 1h | 2026-07-08 09:00 A | 2026-07-08 10:00 A |  | 100% |  |  | start no earlier than 2026-07-08 08:00 | Бундин В | 1h | 1h |
| 1542 | 3.42 | Установка раковины,унитаза в 3 цеху 2 этаж |  | 4h | 2026-07-07 09:00 A | 2026-07-07 13:00 A |  | 100% |  |  | start no earlier than 2026-07-07 09:00 | Бундин В | 4h | 4h |
| 1543 | 3.43 | Установить тройник на компрессор маленький, на входе. (тройни пришел сегодня на склад) |  | 1h | 2026-07-08 09:00 A | 2026-07-08 10:00 A |  | 100% |  |  | start no earlier than 2026-07-08 08:00 | Бундин В | 1h | 1h |
| 1544 | 3.44 | Вернуть упакованный унитаз на склад |  | 30min | 2026-07-08 09:00 A | 2026-07-08 09:30 A |  | 100% |  |  | start no earlier than 2026-07-08 08:00 | Бундин В | 0.5h | 0.5h |
| 1545 | 3.45 | **на тепловых реле 1 и 2 смесителя добавить порог выключения** |  | 1h? | 2026-07-11 09:00 | 2026-07-11 10:00 |  | 100% | 2026-07-14 09:00 | 2026-09-03 10:00 |  |  | 1.5h | 1.5h |
| 1546 | 3.45.1 | заявка на тепловые реле с большим номинолом |  | 15min | 2026-07-14 09:00 A | 2026-07-14 09:15 A |  | 100% |  |  | start no earlier than 2026-07-14 08:00 | Зорькин В | 0.25h | 0.25h |
| 1547 | 3.45.2 | доставка контроль |  | 15min | 2026-08-28 09:00 A | 2026-08-28 09:15 A | 1546FS+5d | 100% |  |  | start no earlier than 2026-08-28 09:00 | Зорькин В | 0.25h | 0.25h |
| 1548 | 3.45.3 | замена тепловых реле, получить на складе |  | 1h | 2026-09-03 09:00 A | 2026-09-03 10:00 A | 1547FS+1d | 100% |  |  | start no earlier than 2026-09-03 09:00 | Бобренок В | 1h | 1h |
| 1549 | 3.46 | сделать ручки с резьбой для снятия матрицы экструдера |  | 2h | 2026-07-04 09:00 A | 2026-07-06 11:00 A |  | 100% |  |  | start no earlier than 2026-07-04 09:00 | Макаревич А | 2h | 2h |
| 1550 | 3.47 | сделать противоудары головы на циклоне в зоне жиров | manual | 1h | 2026-07-26 09:00 A | 2026-07-26 10:00 A |  | 100% |  |  | start no earlier than 2026-07-26 09:00 | Макаревич А | 1h | 1h |
| 1551 | 3.48 | сделать откидную крышку на ножевом узле (расскажу как) |  | 8h | 2026-07-04 09:00 A | 2026-07-06 18:00 A |  | 100% |  |  | start no earlier than 2026-07-04 09:00 | Макаревич А | 8h | 8h |
| 1552 | 3.49 | подклинивает охладитель (все ярусы)- разобраться почему |  | 2h | 2026-07-11 09:00 A | 2026-07-13 11:00 A |  | 100% |  |  | start no earlier than 2026-07-11 09:00 | Макаревич А | 2h | 2h |

| ID | WBS | Task | Type | Duration | Start | Finish | Complete | Actual finish | Total slack | Constraint | Resources | Work | Actual work |
| --- | --- | --- | --- | --- | --- | --- | --- | --- | --- | --- | --- | --- | --- |
| 1553 | 3.50 | **откалибровать весы красных смесителей, муку с контрольным весом обеспечит 5ц** |  | 2h? | 2026-07-29 09:00 A | 2026-07-29 11:00 | 100% | 2026-08-03 18:00 |  |  | Дедов В | 10h | 10h |
| 1554 | 3.50.1 | вызвать специалистов |  | 1d? | 2026-08-03 09:00 A | 2026-08-03 18:00 A | 100% |  |  | start no earlier than 2026-08-03 09:00 | Шуранов Ю | 8h | 8h |
| 1555 | 3.51 | **установка частотника на шнек подачи со смесителей на ногу опоры шнека в разрыв питания шнека** |  | 0.12d | 2026-07-04 09:00 A | 2026-07-06 10:00 A | 100% |  |  |  |  | 1h | 1h |
| 1556 | 3.51.1 | демонтировать частотник шнека (в слесарку) |  | 1h | 2026-07-04 09:00 A | 2026-07-06 10:00 A | 100% |  |  | start no earlier than 2026-07-04 09:00 | Дедов В | 1h | 1h |
| 1557 | 3.52 | щель запенить выход из цеха |  | 1d? | 2026-07-02 09:00 A | 2026-07-02 18:00 A | 100% |  |  | start no earlier than 2026-07-02 09:00 | Олег | 8h | 8h |
| 1558 | 3.53 | силиконим двери прекондиционера (одну эксперимент) |  | 2h | 2026-07-02 09:00 A | 2026-07-02 11:00 A | 100% |  |  | start no earlier than 2026-07-03 09:00 | Дедов В | 2h | 2h |
| 1559 | 3.54 | наростить лопатку датчика переполнения на приемном лотке прекондиционера |  | 1h | 2026-06-30 09:00 A | 2026-06-30 10:00 A | 100% |  |  | start no earlier than 2026-06-30 09:00 | Бундин В | 1h | 1h |
| 1560 | 3.55 | установка бака стабилизации на подачу воды в прекондеционер (подключение) |  | 2h | 2026-07-02 09:00 A | 2026-07-02 11:00 A | 100% |  |  | start no earlier than 2026-07-02 09:00 | Тимофеев В | 2h | 2h |
| 1561 | 3.56 | изготовить фильтры на установки охлаждения |  | 1d? | 2026-07-06 09:00 | 2026-07-06 18:00 |  |  | 183.59d | start no earlier than 2026-07-06 09:00 | Тимофеев В | 8h |  |
| 1562 | 3.57 | удлинить горловину для второго красного смесителя |  | 2h | 2026-06-29 09:00 A | 2026-06-29 11:00 A | 100% |  |  | start no earlier than 2026-06-29 09:00 | Бундин В | 2h | 2h |
| 1563 | 3.58 | закрепить датчик сырья лопаткой в горке, под магнитом. Бункер экструдера |  | 4h | 2026-06-27 09:00 A | 2026-06-29 13:00 A | 100% |  |  | start no earlier than 2026-06-27 09:00 | Бундин В | 4h | 4h |
| 1564 | 3.59 | над магнитом сделать приемную воронку, борта, чтобы не пересыпалось сырье |  | 4h | 2026-06-27 09:00 A | 2026-06-29 13:00 A | 100% |  |  | start no earlier than 2026-06-27 09:00 | Бундин В | 4h | 4h |
| 1565 | 3.60 | удлинить воронку смесителя до горловины шнека. Приготовить сварщику, обяснить что нужно сделать. Вместо вибратора |  | 4h | 2026-06-27 09:00 A | 2026-06-29 13:00 A | 100% |  |  | start no earlier than 2026-06-27 09:00 | Дедов В; Бундин В | 8h | 8h |
| 1566 | 3.61 | байпас для масленной станции |  | 2h | 2026-07-01 09:00 A | 2026-07-01 11:00 A | 100% |  |  | start no earlier than 2026-07-01 09:00 | Тимофеев В | 2h | 2h |
| 1567 | 3.62 | **площадка для операторов для доступа к бункеру, что бы не наступали на краны** |  | 0.12d | 2026-07-02 09:00 A | 2026-07-02 10:00 A | 100% |  |  |  | Макаревич А; Некрасов А | 4h | 4h |
| 1568 | 3.62.1 | убрать заусенцы болгаркой |  | 1h | 2026-07-02 09:00 A | 2026-07-02 10:00 A | 100% |  |  | start no earlier than 2026-07-02 09:00 | Макаревич А; Тимофеев В | 2h | 2h |
| 1569 | 3.63 | **монтаж второй площадки с другой стороны (лестницу берем у 5 цеха -белую)** |  | 0.12d | 2026-07-03 09:00 A | 2026-07-03 10:00 A | 100% |  |  |  | Макаревич А; Некрасов А | 3h | 3h |
| 1570 | 3.63.1 | покрасить лестницу (мастер ц.1 даст людей- контроль) |  | 1h | 2026-07-03 09:00 A | 2026-07-03 10:00 A | 100% |  |  | start no earlier than 2026-07-03 09:00 | Макаревич А | 1h | 1h |
| 1571 | 3.64 | закрутить крышку двигателя улитки на циклоне жиров |  | 1h | 2026-06-25 09:00 A | 2026-06-25 10:00 A | 100% |  |  | start no earlier than 2026-06-25 09:00 | Дедов В | 1h | 1h |
| 1572 | 3.65 | укоротить шланг подачи масла | manual | 1h | 2026-06-25 08:00 A | 2026-06-25 09:00 A | 100% |  |  | start no earlier than 2026-06-25 08:00 | Макаревич А | 1h | 1h |
| 1573 | 3.66 | проверка подачи воды на парогенератор и прекондиционер, почему клапан подачи в бак заблокирован. |  | 2h | 2026-06-25 09:00 A | 2026-06-25 11:00 A | 100% |  |  | start no earlier than 2026-06-25 09:00 | Дедов В | 2h | 2h |
| 1574 | 3.67 | проверить парогенератор |  | 0.5h | 2026-06-25 09:00 A | 2026-06-25 09:30 A | 100% |  |  | start no earlier than 2026-06-25 09:00 | Дедов В | 0.5h | 0.5h |
| 1575 | 3.68 | вскрыть парогенератор, чистка электродов- фото |  | 3h | 2026-06-25 08:00 A | 2026-06-25 12:00 A | 100% |  |  | start no earlier than 2026-06-25 08:00 | Макаревич А | 3h | 3h |
| 1576 | 3.69 | подключить ролеты на охладителе |  | 1h | 2026-06-25 09:00 A | 2026-06-25 10:00 A | 100% |  |  | start no earlier than 2026-06-25 09:00 | Дедов В | 1h | 1h |
| 1577 | 3.70 | изготовление и установка шибера в лоток |  | 2h | 2026-06-25 09:00 A | 2026-06-25 11:00 A | 100% |  |  | start no earlier than 2026-06-25 09:00 | Дедов В | 2h | 2h |
| 1578 | 3.71 | контроль печи, будет включена пока не перестанет дымить |  | 1h | 2026-06-24 09:00 A | 2026-06-24 10:00 A | 100% |  |  | start no earlier than 2026-06-24 09:00 | Труфанов А; Макаревич А | 2h | 2h |

| ID | WBS | Task | Type | Duration | Start | Finish | Predecessors | Complete | Constraint | Resources | Work | Actual work |
| --- | --- | --- | --- | --- | --- | --- | --- | --- | --- | --- | --- | --- |
| 1579 | 3.72 | **взять на складе у Веры кронштейн под щетку, закрепить на него саму щетку и прикрутить на мезонине навесок в сторону ворот** |  | 28.38d | 2026-07-07 09:00 A | 2026-08-14 12:00 A |  | 100% |  |  | 3.5h | 3.5h |
| 1580 | 3.72.1 | заказать профиль 5мм |  | 15min | 2026-07-07 09:00 A | 2026-07-07 09:15 A |  | 100% | start no earlier than 2026-07-07 09:00 | Зорькин В | 0.25h | 0.25h |
| 1581 | 3.72.2 | контроль досставки |  | 15min | 2026-07-17 09:15 A | 2026-07-17 09:30 A | 1580FS+10d | 100% | start no earlier than 2026-07-07 09:00 | Зорькин В | 0.25h | 0.25h |
| 1582 | 3.72.3 | прикрепить на клепки/ саморезу щетку и установить на мезонине где ворота (все это находиться в 3 ц. справа на входе) Еще одна щетка есть у веры на складе, висела на кабинке | manual | 3h | 2026-08-14 09:00 A | 2026-08-14 12:00 A | 1581 | 100% |  | Макаревич А | 3h | 3h |
| 1583 | 3.73 | кабель трется о дверь, уложить в лоток, приподнять -закрепить к воздуховоду |  | 3h | 2026-06-24 09:00 A | 2026-06-24 12:00 A |  | 100% | start no earlier than 2026-06-24 09:00 | Труфанов А | 3h | 3h |
| 1584 | 3.74 | на частотнике пневмоулитки на жирах- увеличить время разгона и торможения |  | 1h | 2026-06-23 09:00 A | 2026-06-23 10:00 A |  | 100% | start no earlier than 2026-06-23 09:00 | Труфанов А | 1h | 1h |
| 1585 | 3.75 | проверить редукторы на печи (утечка есть или нет) |  | 1h | 2026-06-23 09:00 A | 2026-06-23 10:00 A |  | 100% | start no earlier than 2026-06-23 09:00 | Труфанов А | 1h | 1h |
| 1586 | 3.76 | убрать трубу нерж в коридоре возле охладителя в комнату на выходе из цеха | manual | 1h | 2026-06-20 09:00 A | 2026-06-20 10:00 A |  | 100% | start no earlier than 2026-06-20 09:00 | Бундин В | 1h | 1h |
| 1587 | 3.77 | капает с улитки вытяжки печи- просверлить сверло 6мм |  | 1h | 2026-06-20 09:00 A | 2026-06-22 10:00 A |  | 100% | start no earlier than 2026-06-20 09:00 | Дедов В | 1h | 1h |
| 1588 | 3.78 | герметизация всех стыков вневмотрубы аллюминевым скотчем (улитка с печи на жиры) | manual | 1h | 2026-06-21 09:00 A | 2026-06-21 10:00 A |  | 100% | start no earlier than 2026-06-21 09:00 | Труфанов А | 1h | 1h |
| 1589 | 3.79 | отпилить одну перекладину опоры вентиляции, чтобы открывалась дверь печи | manual | 3h | 2026-06-21 09:00 A | 2026-06-21 12:00 A |  | 100% | start no earlier than 2026-06-21 09:00 | Бундин В | 3h | 3h |
| 1590 | 3.80 | проверка подачи воды в прекондиционер | manual | 1h | 2026-06-21 09:00 A | 2026-06-21 10:00 A |  | 100% | start no earlier than 2026-06-21 09:00 | Труфанов А | 1h | 1h |
| 1591 | 3.81 | включаем печь, прожигаем масло- чтобы вагорело и не дымило… контроль |  | 1h | 2026-06-23 09:00 A | 2026-06-23 10:00 A |  | 100% | start no earlier than 2026-06-23 09:00 | Шуранов Ю | 1h | 1h |
| 1592 | 3.82 | прикрутить горловину прекондиционера (находиться в комнате на выходе из цеха) | manual | 1h | 2026-06-20 09:00 A | 2026-06-20 10:00 A |  | 100% | start no earlier than 2026-06-20 09:00 | Бундин В | 1h | 1h |
| 1593 | 3.83 | на 1 и 2 зоне температура растет больше факта- проверить |  | 1h | 2026-06-23 09:00 A | 2026-06-23 10:00 A |  | 100% | start no earlier than 2026-06-23 09:00 | Труфанов А | 1h | 1h |
| 1594 | 3.84 | собрать парогенератор (насос+ вход вода в парик) |  | 1h | 2026-06-19 09:00 A | 2026-06-19 10:00 A |  | 100% | start no earlier than 2026-06-19 09:00 | Дедов В | 1h | 1h |
| 1595 | 3.85 | увеличить частоту на пневмоулитку с печи в жиры |  | 1h | 2026-06-19 09:00 A | 2026-06-19 10:00 A |  | 100% | start no earlier than 2026-06-19 09:00 | Дедов В | 1h | 1h |
| 1596 | 3.86 | трубу жиротопки утеплить |  | 2h | 2026-06-18 09:00 A | 2026-06-18 11:00 A |  | 100% | start no earlier than 2026-06-18 08:00 | Труфанов А | 2h | 2h |
| 1597 | 3.87 | установка смесителя душа 2 этаж продолжить |  | 4h | 2026-07-07 09:00 A | 2026-07-07 13:00 A |  | 100% | start no earlier than 2026-07-07 09:00 | Бундин В | 4h | 4h |
| 1598 | 3.88 | на прекондеционере настроить премыкание на всех дверцах | manual | 3h | 2026-06-21 09:00 A | 2026-06-21 12:00 A |  | 100% | start no earlier than 2026-06-21 09:00 | Труфанов А | 3h | 3h |
| 1599 | 3.89 | обрезить шпильки, которые торчат, на воздуховодах вентиляции (зона навесок и жиров) |  | 2h | 2026-06-18 09:00 A | 2026-06-18 11:00 A |  | 100% | start no earlier than 2026-06-18 08:00 | Труфанов А | 2h | 2h |
| 1600 | 3.90 | **модернизация схема ШУ жиротопки - отключается циркуляц насос при достжении температуры** |  | 5.5d | 2026-06-07 09:00 A | 2026-06-15 13:00 A |  | 100% |  |  | 5h | 5h |
| 1601 | 3.90.1 | изучить схему, согласовать предложения модернизации |  | 1h | 2026-06-07 09:00 A | 2026-06-08 10:00 A |  | 100% | start no earlier than 2026-06-07 09:00 | Дедов В | 1h | 1h |
| 1602 | 3.90.2 | реализации модернизации |  | 4h | 2026-06-15 09:00 A | 2026-06-15 13:00 A | 1601 | 100% | start no earlier than 2026-06-15 09:00 | Дедов В | 4h | 4h |

| ID | WBS | Task | Type | Duration | Start | Finish | Predecessors | Complete | Remaining | Actual start | Actual finish | Total slack | Constraint | Resources | Work | Actual work |
| --- | --- | --- | --- | --- | --- | --- | --- | --- | --- | --- | --- | --- | --- | --- | --- | --- |
| 1603 | 3.91 | **сборка квадропак с системой дозации** |  | 56.5d | 2026-06-18 09:00 A | 2026-09-04 13:00 |  | 86% | 7.79d |  |  | 140.09d |  |  | 67h | 59h |
| 1604 | 3.91.1 | сборка нория |  | 8h | 2026-07-17 09:00 A | 2026-07-17 18:00 A |  | 100% |  |  |  |  | start no earlier than 2026-07-17 09:00 | Некрасов А; Тимофеев В | 15h | 15h |
| 1605 | 3.91.2 | сборка площадка |  | 4h | 2026-07-20 09:00 A | 2026-07-20 13:00 A | 1604 | 100% |  |  |  |  | start no earlier than 2026-07-09 08:00 | Некрасов А; Тимофеев В | 8h | 8h |
| 1606 | 3.91.3 | монтаж весы |  | 4h | 2026-07-20 14:00 | 2026-07-20 18:00 | 1605 |  |  |  |  | 173.59d | start no earlier than 2026-07-09 08:00 | Некрасов А; Тимофеев В | 8h |  |
| 1607 | 3.91.4 | подключить квадропак / пусконаладка |  | 4h | 2026-09-04 09:00 A | 2026-09-04 13:00 A |  | 100% |  |  |  |  | start no earlier than 2026-09-04 09:00 | Зорькин В; Труфанов А | 8h | 8h |
| 1608 | 3.91.5 | разгрузка / распаковка |  | 1h | 2026-06-18 09:00 A | 2026-06-18 10:00 A |  | 100% |  |  |  |  | start no earlier than 2026-06-18 09:00 | Некрасов А; Тимофеев В | 1h | 1h |
| 1609 | 3.91.6 | сборка рама в 1ц над столом выгрузки пакетов. Примерка/доработка рамы по месту |  | 4h | 2026-07-09 09:00 A | 2026-07-09 13:00 A |  | 100% |  |  |  |  | start no earlier than 2026-07-09 09:00 | Некрасов А; Макаревич А; Тимофеев В | 11h | 11h |
| 1610 | 3.91.7 | сборка дозатор |  | 4h | 2026-07-09 09:00 A | 2026-07-09 13:00 A |  | 100% |  |  |  |  | start no earlier than 2026-07-09 09:00 | Зорькин В; Макаревич А; Некрасов А; Тимофеев В | 16h | 16h |
| 1611 | 3.92 | устранить заусенцы пол площадки жиротопки. Рвет тряпку уборщица. |  | 4h | 2026-05-31 09:00 A | 2026-06-01 13:00 A |  | 100% |  |  |  |  | start no earlier than 2026-05-31 09:00 | Макаревич А | 4h | 4h |
| 1612 | 3.93 | **востановить насос циркуляция воды на жиротопке** |  | 8.32d | 2026-06-06 09:00 A | 2026-06-18 11:35 A |  | 100% |  |  |  |  |  |  | 3.58h | 3.58h |
| 1613 | 3.93.1 | разборка насос / выяснить причину заклинивания |  | 1h | 2026-06-06 09:00 A | 2026-06-08 10:00 A |  | 100% |  |  |  |  | start no earlier than 2026-06-06 09:00 | Бундин В | 1h | 1h |
| 1614 | 3.93.2 | заявка аналог |  | 20min | 2026-06-08 09:00 A | 2026-06-08 09:20 A | 1613 | 100% |  |  |  |  | start no earlier than 2026-06-08 09:00 | Шуранов Ю | 0.33h | 0.33h |
| 1615 | 3.93.3 | контроль доставка |  | 15min | 2026-06-17 09:20 A | 2026-06-17 09:35 A | 1614FS+7d | 100% |  |  |  |  | start no earlier than 2026-06-05 08:00 | Шуранов Ю | 0.25h | 0.25h |
| 1616 | 3.93.4 | замена |  | 2h | 2026-06-18 09:35 A | 2026-06-18 11:35 A | 1615FS+1d | 100% |  |  |  |  | start no earlier than 2026-06-05 08:00 | Тимофеев В | 2h | 2h |
| 1617 | 3.94 | **жиротопка** |  | 9.5d | 2026-06-09 09:00 A | 2026-06-22 13:00 A |  | 100% |  |  |  |  |  |  | 9h | 9h |
| 1618 | 3.94.1 | (проверить двигатель и сам насос) |  | 1h | 2026-06-09 09:00 A | 2026-06-09 10:00 A |  | 100% |  |  |  |  | start no earlier than 2026-06-09 09:00 | Тимофеев В | 1h | 1h |
| 1619 | 3.94.2 | ремонт заклинившего насоса жиров (сняли сегодя голову ) |  | 1h | 2026-06-18 09:00 A | 2026-06-18 10:00 A | 1618 | 100% |  |  |  |  | start no earlier than 2026-06-18 09:00 | Труфанов А | 1h | 1h |
| 1620 | 3.94.3 | установить насос, который перебрал Труфанов поставить на штатное место / если не заработает ставим новый | manual | 1h | 2026-06-21 09:00 A | 2026-06-21 10:00 A | 1619 | 100% |  |  |  |  | start no earlier than 2026-06-21 09:00 | Бундин В | 1h | 1h |
| 1621 | 3.94.4 | восстановить работу пускателя на насос перекачки с бака в бак |  | 4h | 2026-06-20 09:00 A | 2026-06-22 13:00 A |  | 100% |  |  |  |  | start no earlier than 2026-06-20 09:00 | Дедов В | 4h | 4h |
| 1622 | 3.94.5 | подключить все шланги подачи жира в баки | manual | 2h | 2026-06-22 09:00 A | 2026-06-22 11:00 A |  | 100% |  |  |  |  | start no earlier than 2026-06-22 09:00 | Труфанов А | 2h | 2h |
| 1623 | 3.95 | **трасса нерж жиротопка- баки, найти утечки устранить** |  | 0.75d | 2026-05-23 09:00 A | 2026-05-25 16:00 A |  | 100% |  |  |  |  |  |  | 6h | 6h |
| 1624 | 3.95.1 | заварить места утечки и восстановить утеплитель + греющий кабель |  | 6h | 2026-05-23 09:00 A | 2026-05-25 16:00 A |  | 100% |  |  |  |  | start no earlier than 2026-05-23 09:00 | Макаревич А | 6h | 6h |
| 1625 | 3.96 | **защита ворот на мезонине загрузки** |  | 8h? | 2026-05-22 09:00 | 2026-05-22 18:00 |  | 100% |  | 2026-05-29 09:00 | 2026-08-13 13:00 |  |  |  | 27h | 27h |
| 1626 | 3.96.1 | покрасить конструкцию |  | 2h | 2026-05-31 09:00 A | 2026-06-01 11:00 A |  | 100% |  |  |  |  | start no earlier than 2026-05-31 09:00 | Макаревич А | 2h | 2h |
| 1627 | 3.96.2 | приварить дополнительную перекладину на защиту воротины |  | 2h | 2026-07-07 09:00 A | 2026-07-07 11:00 A |  | 100% |  |  |  |  | start no earlier than 2026-07-07 09:00 | Труфанов А; Тимофеев В | 4h | 4h |
| 1628 | 3.96.3 | заказать щетку и битумную ленту |  | 1h | 2026-05-31 11:00 A | 2026-06-01 10:00 A | 1626 | 100% |  |  |  |  | start no earlier than 2026-05-22 09:00 | Шуранов Ю | 1h | 1h |
| 1629 | 3.96.4 | контроль доставки |  | 1d? | 2026-05-31 12:00 A | 2026-06-01 18:00 A | 1628 | 100% |  |  |  |  | start no earlier than 2026-05-29 09:00 | Шуранов Ю | 8h | 8h |
| 1630 | 3.96.5 | установка щетки |  | 4h | 2026-08-13 09:00 A | 2026-08-13 13:00 A |  | 100% |  |  |  |  | start no earlier than 2026-08-13 09:00 | Макаревич А | 4h | 4h |
| 1631 | 3.96.6 | монтаж |  | 1d? | 2026-05-29 09:00 A | 2026-05-29 18:00 A |  | 100% |  |  |  |  | start no earlier than 2026-05-29 09:00 | Некрасов А | 8h | 8h |
| 1632 | 3.97 | установить щетку на поломоечную машину (щетка на складе) |  | 2h | 2026-05-21 09:00 A | 2026-05-21 11:00 A |  | 100% |  |  |  |  | start no earlier than 2026-05-21 08:00 | Бундин В | 2h | 2h |
| 1633 | 3.98 | площадка мезонина зона фасовки- убрать щели профиля битумной лентой |  | 2h | 2026-05-21 09:00 A | 2026-05-21 11:00 A |  | 100% |  |  |  |  | start no earlier than 2026-05-21 09:00 | Бундин В | 2h | 2h |
| 1634 | 3.99 | прикрутить дюзы форсунок подачи воды в прекондиционер, взять у меня на столе. |  | 1h | 2026-05-22 09:00 A | 2026-05-22 10:00 A |  | 100% |  |  |  |  | start no earlier than 2026-05-22 09:00 | Тимофеев В | 1h | 1h |
| 1635 | 3.100 | проверить насос подачи жира со 2 бака на барабаны, Викторович его разобрал |  | 2h | 2026-05-19 08:00 A | 2026-05-19 11:00 A |  | 100% |  |  |  |  | start no earlier than 2026-05-19 08:00 | Дедов В | 2h | 2h |
| 1636 | 3.101 | проверить рабочий или нет циркуляционный насос для змеевика на жиротопке |  | 1h | 2026-05-19 08:00 A | 2026-05-19 10:00 A |  | 100% |  |  |  |  | start no earlier than 2026-05-19 08:00 | Дедов В | 1h | 1h |
| 1637 | 3.102 | проверка оборудования на жирах водой |  | 3h | 2026-05-19 09:00 A | 2026-05-19 12:00 A |  | 100% |  |  |  |  | start no earlier than 2026-05-20 09:00 | Тимофеев В | 3h | 3h |
| 1638 | 3.103 | покраска пол под лотком барабан-охладитель |  | 1h | 2026-05-15 09:00 A | 2026-05-15 10:00 A |  | 100% |  |  |  |  | start no earlier than 2026-05-15 09:00 | Бобренок В | 1h | 1h |

| ID | WBS | Task | Type | Duration | Start | Finish | Complete | Remaining | Total slack | Constraint | Resources | Work | Actual work |
| --- | --- | --- | --- | --- | --- | --- | --- | --- | --- | --- | --- | --- | --- |
| 1639 | 3.104 | **ремонт ворот рольставня** |  | 4.12d | 2026-05-14 09:00 A | 2026-05-20 10:00 A | 100% |  |  |  |  | 2h | 2h |
| 1640 | 3.104.1 | вызывать сервис |  | 1h | 2026-05-14 09:00 A | 2026-05-14 10:00 A | 100% |  |  | start no earlier than 2026-05-14 09:00 | Зорькин В | 1h | 1h |
| 1641 | 3.104.2 | контроль работ |  | 1h | 2026-05-20 09:00 A | 2026-05-20 10:00 A | 100% |  |  | start no earlier than 2026-05-20 09:00 | Зорькин В | 1h | 1h |
| 1642 | 3.105 | вырезать косая пластина в воронку пневмотранспорта на подачу жиров |  | 2h | 2026-05-14 09:00 A | 2026-05-14 11:00 A | 100% |  |  | start no earlier than 2026-05-14 09:00 | Макаревич А | 2h | 2h |
| 1643 | 3.106 | убрать бороду от вентиляторов |  | 4h | 2026-05-12 09:00 A | 2026-05-12 13:00 A | 100% |  |  | start no earlier than 2026-05-12 09:00 | Некрасов А; Труфанов А | 8h | 8h |
| 1644 | 3.107 | монтаж кабель управления заслонками вентиляторы окно |  | 4h | 2026-05-20 09:00 A | 2026-05-20 13:00 A | 100% |  |  | start no earlier than 2026-05-22 09:00 | Некрасов А; Бундин В | 8h | 8h |
| 1645 | 3.108 | **автоматика управления смесителями** |  | 80.38d | 2026-05-04 09:00 A | 2026-08-24 12:00 | 91% | 6.89d | 149.22d |  |  | 35h | 32h |
| 1646 | 3.108.1 | поменять местами переключатели управления смесителями левый что бы включал поперечный смеситель |  | 2h | 2026-07-12 09:00 A | 2026-07-13 11:00 A | 100% |  |  | start no earlier than 2026-07-12 09:00 | Дедов В | 2h | 2h |
| 1647 | 3.108.2 | сделать подключение красных смесителей по схеме Домоводова |  | 22h | 2026-05-18 09:00 A | 2026-05-20 16:00 A | 100% |  |  | start no earlier than 2026-05-19 09:00 | Дедов В | 22h | 22h |
| 1648 | 3.108.3 | доработка схемы управления смесителями по логике ТЗ, упорядочить монтаж, промаркировать соденения |  | 8h | 2026-05-04 09:00 A | 2026-05-04 18:00 A | 100% |  |  | start no earlier than 2026-05-04 09:00 | Дедов В | 8h | 8h |
| 1649 | 3.108.4 | уложить красиво все провода в шкафу управления смесителями |  | 3h | 2026-08-24 09:00 | 2026-08-24 12:00 |  |  | 149.22d | start no earlier than 2026-08-24 09:00 | Дедов В | 3h |  |
| 1650 | 3.109 | **установить воздуховод на 300мм на красные смесители** |  | 6.25d | 2026-05-08 08:00 A | 2026-05-18 11:00 A | 100% |  |  |  |  | 4h | 4h |
| 1651 | 3.109.1 | заказать другой диаметр | milestone | 0d | 2026-05-08 08:00 A | 2026-05-08 08:00 A | 100% |  |  | start no earlier than 2026-05-08 08:00 | Зорькин В |  |  |
| 1652 | 3.109.2 | установить ф300 | milestone | 0h | 2026-05-13 09:00 A | 2026-05-13 09:00 A | 100% |  |  | start no earlier than 2026-05-13 09:00 | Тимофеев В; Зорькин В |  |  |
| 1653 | 3.109.3 | красные смесители вернуть воздуховоды (доработать рукав пересыпки воронка-смеситель) |  | 2h | 2026-05-13 09:00 A | 2026-05-13 11:00 A | 100% |  |  | start no earlier than 2026-05-13 09:00 | Тимофеев В | 2h | 2h |
| 1654 | 3.109.4 | сборка рукав на второй смеситель. Сшить по образцу |  | 2h | 2026-05-18 09:00 A | 2026-05-18 11:00 A | 100% |  |  | start no earlier than 2026-05-18 09:00 | Тимофеев В | 2h | 2h |
| 1655 | 3.110 | проверить почему не запускается приточная вентиляция в вент. Камере 7,5кВт |  | 1h | 2026-04-29 08:00 A | 2026-04-29 10:00 A | 100% |  |  | start no earlier than 2026-04-29 08:00 | Дедов В | 1h | 1h |
| 1656 | 3.111 | прозвонить кнопку индикации водителя под сиденьем (позвони объясню) |  | 2h | 2026-04-15 09:00 A | 2026-04-15 11:00 A | 100% |  |  | start no earlier than 2026-04-15 08:00 | Бундин В | 2h | 2h |
| 1657 | 3.112 | проверить приход с Китая по шнекам и гильзам |  | 1h | 2026-04-09 09:00 A | 2026-04-09 10:00 A | 100% |  |  | start no earlier than 2026-04-09 08:00 | Шуранов Ю | 1h | 1h |
| 1658 | 3.113 | собрать и установить мойку (со старой прикрутить смеситель) мойка у Веры на складе на 2 верхнем ярусе стеллажей | manual | 2h | 2026-04-05 09:00 A | 2026-04-05 11:00 A | 100% |  |  | start no earlier than 2026-04-05 09:00 | Труфанов А | 2h | 2h |
| 1659 | 3.114 | вывоз 3 поддона с мусором |  | 30min | 2026-03-24 09:00 A | 2026-03-24 09:30 A | 100% |  |  | start no earlier than 2026-03-24 09:00 | Некрасов А; Труфанов А | 1h | 1h |
| 1660 | 3.115 | установить отбойники на стеллажи | manual | 8h | 2026-03-29 09:00 A | 2026-03-29 18:00 A | 100% |  |  | start no earlier than 2026-03-29 09:00 | Бундин В | 8h | 8h |
| 1661 | 3.116 | установить отбойники на стеллажи | manual | 6h | 2026-04-18 09:00 A | 2026-04-18 16:00 A | 100% |  |  | start no earlier than 2026-04-18 09:00 | Бобренок В | 6h | 6h |
| 1662 | 3.117 | уборка зона курилка / венткамера |  | 4h | 2026-03-17 09:00 A | 2026-03-17 13:00 A | 100% |  |  | start no earlier than 2026-03-17 09:00 | Тимофеев В; Некрасов А; Макаревич А; Труфанов А | 16h | 16h |

| ID | WBS | Task | Duration | Start | Finish | Predecessors | Complete | Actual start | Actual finish | Total slack | Constraint | Resources | Work | Actual work |
| --- | --- | --- | --- | --- | --- | --- | --- | --- | --- | --- | --- | --- | --- | --- |
| 1663 | 3.118 | **сборка квадропак** | 13.25d | 2026-05-06 09:00 A | 2026-05-25 11:00 A |  | 100% |  |  |  |  |  | 14h | 14h |
| 1664 | 3.118.1 | подвести воздух к квадропаку | 4h | 2026-05-22 09:00 A | 2026-05-22 13:00 A |  | 100% |  |  |  | start no earlier than 2026-05-22 09:00 | Тимофеев В | 4h | 4h |
| 1665 | 3.118.2 | установить перед пневмораспределителями влагоотделитель | 2h | 2026-05-24 09:00 A | 2026-05-25 11:00 A |  | 100% |  |  |  | start no earlier than 2026-05-24 09:00 | Дедов В | 2h | 2h |
| 1666 | 3.118.3 | подключить квадропак к щитку кабель 5х2,5 | 4h | 2026-05-06 09:00 A | 2026-05-06 13:00 A |  | 100% |  |  |  | start no earlier than 2026-05-06 09:00 | Труфанов А; Тимофеев В | 8h | 8h |
| 1667 | 3.119 | крепление магистрали компрессора. Зона дрожировки | 1h | 2026-03-08 09:00 A | 2026-03-09 10:00 A |  | 100% |  |  |  | start no earlier than 2026-03-08 09:00 | Бундин В | 1h | 1h |
| 1668 | 3.120 | Собрать транспортер тип2 (уточнить у Шуранова)/ доделать | 3h | 2026-03-08 09:00 A | 2026-03-09 12:00 A |  | 100% |  |  |  | start no earlier than 2026-03-08 09:00 | Бобренок В | 3h | 3h |
| 1669 | 3.121 | **Покраска лестницы** | 43d | 2026-03-04 09:00 A | 2026-05-01 18:00 A |  | 100% |  |  |  |  |  | 116.33h | 116.33h |
| 1670 | 3.121.1 | Заявка на краску | 20min | 2026-03-04 09:00 A | 2026-03-04 09:20 A |  | 100% |  |  |  | start no earlier than 2026-03-04 09:00 | Зорькин В | 0.33h | 0.33h |
| 1671 | 3.121.2 | Доставка | 10d | 2026-03-04 09:20 A | 2026-03-18 09:20 A | 1670 | 100% |  |  |  | start no earlier than 2026-03-03 08:00 | Карабанов | 80h | 80h |
| 1672 | 3.121.3 | Работа по покраске | 6h | 2026-04-28 09:00 A | 2026-04-28 16:00 A | 1671 | 100% |  |  |  | start no earlier than 2026-04-28 09:00 | оперторы2; Олег | 12h | 12h |
| 1673 | 3.121.4 | покраска колонны в коридоре | 4h | 2026-04-28 09:00 A | 2026-04-28 13:00 A |  | 100% |  |  |  | start no earlier than 2026-04-28 08:00 | оперторы2; Олег | 8h | 8h |
| 1674 | 3.121.5 | покарска потолок в корридоре | 2d | 2026-04-30 09:00 A | 2026-05-01 18:00 A |  | 100% |  |  |  | start no earlier than 2026-04-30 09:00 | оператор2 | 16h | 16h |
| 1675 | 3.122 | **доработка лотка барабан-охладитель - снизить скорость падения, установить сетку** | 1.5d? | 2026-04-14 09:00 | 2026-04-15 13:00 |  | 100% | 2026-05-13 09:00 | 2026-06-17 18:00 |  |  |  | 46.75h | 46.75h |
| 1676 | 3.122.1 | сборка кронштейны + стека | 5h | 2026-05-13 09:00 A | 2026-05-13 15:00 A |  | 100% |  |  |  | start no earlier than 2026-05-13 09:00 | Труфанов А; Некрасов А | 10h | 10h |
| 1677 | 3.122.2 | сборка ручки, установка. Фотоотчет | 2h | 2026-05-15 09:00 A | 2026-05-15 11:00 A |  | 100% |  |  |  | start no earlier than 2026-05-15 09:00 | Некрасов А; Труфанов А | 4h | 4h |
| 1678 | 3.122.3 | сборка вращающаяся заслонка | 4h | 2026-05-15 11:00 A | 2026-05-15 16:00 A | 1677 | 100% |  |  |  | start no earlier than 2026-05-15 09:00 | Некрасов А; Труфанов А | 8h | 8h |
| 1679 | 3.122.4 | доработка пластины, что бы не клинила | 1h | 2026-05-21 09:00 A | 2026-05-21 10:00 A |  | 100% |  |  |  | start no earlier than 2026-05-22 09:00 | Некрасов А; Бундин В | 2h | 2h |
| 1680 | 3.122.5 | заказ на лазере пластину для регулировки шибера | 1d? | 2026-05-25 09:00 A | 2026-05-25 18:00 A |  | 100% |  |  |  | start no earlier than 2026-05-25 09:00 | Зорькин В | 8h | 8h |
| 1681 | 3.122.6 | чертеж пластина фиксации рычага | 2h | 2026-05-19 09:00 A | 2026-05-19 11:00 A | 1678 | 100% |  |  |  | start no earlier than 2026-05-19 09:00 | Зорькин В | 2h | 2h |
| 1682 | 3.122.7 | заявка на изготвление на лазер | 15min | 2026-05-20 11:00 A | 2026-05-20 11:15 A | 1681FS+1d | 100% |  |  |  | start no earlier than 2026-05-15 08:00 | Зорькин В | 0.25h | 0.25h |
| 1683 | 3.122.8 | контроль изг | 15min | 2026-06-01 09:00 A | 2026-06-01 09:15 A | 1682FS+5d | 100% |  |  |  | start no earlier than 2026-06-01 09:00 | Зорькин В | 0.25h | 0.25h |
| 1684 | 3.122.9 | доставка орг | 15min | 2026-06-05 09:00 A | 2026-06-05 09:15 A | 1683FS+1d | 100% |  |  |  | start no earlier than 2026-06-05 09:00 | Зорькин В | 0.25h | 0.25h |
| 1685 | 3.122.10 | сборка рычага | 4h | 2026-06-08 09:15 A | 2026-06-08 14:15 A | 1684FS+1d | 100% |  |  |  | start no earlier than 2026-06-06 09:00 | Бундин В | 4h | 4h |
| 1686 | 3.122.11 | сделать напраляшку на шибере регулируемую- сыпит в одну сторону | 1d? | 2026-06-17 09:00 A | 2026-06-17 18:00 A |  | 100% |  |  |  | start no earlier than 2026-06-23 09:00 | Тимофеев В | 8h | 8h |
| 1687 | 3.123 | сборка система отопления 2 этаж | 1d? | 2026-06-15 09:00 | 2026-06-15 18:00 |  |  |  |  | 198.59d | start no earlier than 2026-06-15 09:00 | Труфанов А; Некрасов А; Олег | 24h |  |

| ID | WBS | Task | Duration | Start | Finish | Predecessors | Complete | Remaining | Total slack | Constraint | Resources | Work | Actual work |
| --- | --- | --- | --- | --- | --- | --- | --- | --- | --- | --- | --- | --- | --- |
| 1688 | 3.124 | **заменить сопряжение смесителей на гибк вставку** | 29.25d | 2026-03-19 09:00 A | 2026-04-29 11:00 A |  | 100% |  |  |  |  | 122.5h | 122.5h |
| 1689 | 3.124.1 | заявка | 30min | 2026-03-19 09:00 A | 2026-03-19 09:30 A |  | 100% |  |  | start no earlier than 2026-03-19 09:00 | Зорькин В | 0.5h | 0.5h |
| 1690 | 3.124.2 | доставка | 15d | 2026-03-19 09:30 A | 2026-04-09 09:30 A | 1689 | 100% |  |  | start no earlier than 2026-02-27 08:00 | Карабанов | 120h | 120h |
| 1691 | 3.124.3 | замена | 2h | 2026-04-29 09:00 A | 2026-04-29 11:00 A | 1690 | 100% |  |  | start no earlier than 2026-04-29 09:00 | Тимофеев В | 2h | 2h |
| 1692 | 3.125 | **приточная вентиляция** | 154.25d | 2026-03-06 09:00 A | 2026-09-29 11:00 |  | 85% | 22.85d | 116.34d |  |  | 13.5h | 11.5h |
| 1693 | 3.125.1 | визит Евгения. Контроль монтажа | 30min | 2026-03-06 09:00 A | 2026-03-06 09:30 A |  | 100% |  |  | start no earlier than 2026-03-06 09:00 | Домоводов К | 0.5h | 0.5h |
| 1694 | 3.125.2 | подключить силовой кабель в ШУ (лежит в лотке) | 3h | 2026-03-13 09:00 A | 2026-03-13 12:00 A |  | 100% |  |  | start no earlier than 2026-03-13 09:00 | Подрядчик | 3h | 3h |
| 1695 | 3.125.3 | монтаж изоляционных прокладок вводный автомат между фазами | 2h | 2026-09-24 09:00 A | 2026-09-24 11:00 A |  | 100% |  |  | start no earlier than 2026-09-24 09:00 | Дедов В | 2h | 2h |
| 1696 | 3.125.4 | подключить нулевой провод шкаф управления | 2h | 2026-09-24 09:00 A | 2026-09-24 11:00 A |  | 100% |  |  | start no earlier than 2026-09-24 09:00 | Дедов В | 2h | 2h |
| 1697 | 3.125.5 | монтаж перемычек от автомата на ТВ реле . Звонить Дедову | 2h | 2026-09-24 09:00 A | 2026-09-24 11:00 A |  | 100% |  |  | start no earlier than 2026-09-24 09:00 | Дедов В | 2h | 2h |
| 1698 | 3.125.6 | замена схемы включения вентилятор вытяжка / приточка | 2h | 2026-05-04 09:00 A | 2026-05-04 11:00 A |  | 100% |  |  | start no earlier than 2026-05-04 09:00 | Дедов В | 2h | 2h |
| 1699 | 3.125.7 | проверить все подключения / тест | 2h | 2026-09-29 09:00 | 2026-09-29 11:00 |  |  |  | 116.34d | start no earlier than 2026-09-29 09:00 | Дедов В | 2h |  |
| 1700 | 3.126 | установить гидроаккумулятор | 2h | 2026-03-03 09:00 A | 2026-03-03 11:00 A |  | 100% |  |  | start no earlier than 2026-03-03 09:00 | Тимофеев В | 2h | 2h |
| 1701 | 3.127 | тест герметичности. жиропровод нерж оборудовать греющим кабелем + утеплитель. | 2h | 2026-06-01 09:00 | 2026-06-01 11:00 |  |  |  | 209.34d | start no earlier than 2026-05-31 09:00 | Макаревич А | 2h |  |
| 1702 | 3.128 | **установить перила площадка загрузки навески** | 0.25d | 2026-05-27 09:00 A | 2026-05-27 11:00 A |  | 100% |  |  |  |  | 2h | 2h |
| 1703 | 3.128.1 | покрасить перила | 2h | 2026-05-27 09:00 A | 2026-05-27 11:00 A |  | 100% |  |  | start no earlier than 2026-05-27 09:00 | оператор2 | 2h | 2h |
| 1704 | 3.129 | дорабать качелю безопасности на площадке загрузки навески что бы не задевала за вентиляцию | 2h | 2026-05-12 09:00 A | 2026-05-12 11:00 A |  | 100% |  |  | start no earlier than 2026-05-12 09:00 | Некрасов А | 2h | 2h |
| 1705 | 3.130 | подготовить отражатели тепла на подшипники печи линия 4 | 8h | 2025-09-01 09:00 | 2025-09-01 18:00 |  |  |  | 403.59d | start no earlier than 2025-08-30 09:00 | Тимофеев В | 8h |  |
| 1706 | 3.131 | усилить раму прекондиционера | 1d? | 2026-04-28 08:00 A | 2026-04-28 18:00 A |  | 100% |  |  | start no earlier than 2026-04-28 08:00 | Тимофеев В | 8h | 8h |
| 1707 | 3.132 | переместить магнит загрузки сырья | 2h | 2026-05-07 09:00 A | 2026-05-07 11:00 A |  | 100% |  |  | start no earlier than 2026-05-07 09:00 | Тимофеев В | 2h | 2h |
| 1708 | 3.133 | труба выход пара греет шнек - переместить | 1d? | 2026-06-19 09:00 | 2026-06-19 18:00 |  |  |  | 194.59d | start no earlier than 2026-06-19 09:00 | Тимофеев В | 8h |  |
| 1709 | 3.134 | герметизация примыкание на выходе из печи | 2d | 2026-05-18 09:00 A | 2026-05-19 18:00 A |  | 100% |  |  | start no earlier than 2026-05-18 09:00 | Олег | 16h | 16h |
| 1710 | 3.135 | обшить стены курилки | 2d | 2026-04-30 09:00 A | 2026-05-01 18:00 A |  | 100% |  |  | start no earlier than 2026-04-30 09:00 | Олег; Некрасов А | 32h | 32h |
| 1711 | 3.136 | покраска рамы воздуховодов уличные | 4h | 2026-05-27 09:00 | 2026-05-27 13:00 |  |  |  | 212.09d | start no earlier than 2026-05-27 09:00 | оператор2 | 4h |  |
| 1712 | 3.137 | Выяснить количество теплопотерь с печи на входе | 1h | 2026-08-28 09:00 | 2026-08-28 10:00 |  |  |  | 145.47d | start no earlier than 2026-08-28 09:00 | Зорькин В; Бобренок В | 2h |  |
| 1713 | 3.138 | Переделка входа пневмотрассы с печи на жиры, сделать плавный переход из двух углов по 45 | 4h | 2026-07-24 09:00 | 2026-07-24 13:00 |  |  |  | 170.09d | start no earlier than 2026-07-24 09:00 | Бундин В | 4h |  |

| ID | WBS | Task | Type | Duration | Start | Finish | Predecessors | Complete | Remaining | Actual finish | Total slack | Constraint | Resources | Work | Actual work |
| --- | --- | --- | --- | --- | --- | --- | --- | --- | --- | --- | --- | --- | --- | --- | --- |
| 1714 | 3.139 | **Печь** |  | 0d | 2026-07-25 09:00 A | 2026-07-26 11:00 A |  | 100% |  |  |  |  |  | 6h | 6h |
| 1715 | 3.139.1 | Переделка входа пневмотрассы с печи на жиры, сделать плавный переход из двух углов по 45, закончить если Валентин не доделал или взять в работу если Валентин не начал. Уточнить у него как он хотел сделать. | manual | 4h | 2026-07-25 09:00 A | 2026-07-25 13:00 A |  | 100% |  |  |  | start no earlier than 2026-07-25 09:00 | Макаревич А | 4h | 4h |
| 1716 | 3.139.2 | 4 зона шкаф управления не набирает заданную температуру, выяснить причину/устранить | manual | 2h | 2026-07-26 09:00 A | 2026-07-26 11:00 A |  | 100% |  |  |  | start no earlier than 2026-07-26 09:00 | Бобренок В | 2h | 2h |
| 1717 | 3.140 | **розетки** |  | 0.25d | 2026-07-25 09:00 A | 2026-07-27 11:00 A |  | 100% |  |  |  |  |  | 6h | 6h |
| 1718 | 3.140.1 | Монтаж розетки для болера, где мойка экструдера, подключиться к резерву ШУ на экструдере | manual | 2h | 2026-07-25 09:00 A | 2026-07-25 11:00 A |  | 100% |  |  |  | start no earlier than 2026-07-25 09:00 | Бобренок В | 2h | 2h |
| 1719 | 3.140.2 | Монтаж розетки, где ворота выхода готовой продукции | manual | 2h | 2026-07-27 09:00 A | 2026-07-27 11:00 A |  | 100% |  |  |  |  | Некрасов А; Труфанов А | 4h | 4h |
| 1720 | 3.141 | **Дражжировка** |  | 0d | 2026-07-26 09:00 A | 2026-07-26 11:00 A |  | 100% |  |  |  |  |  | 2h | 2h |
| 1721 | 3.141.1 | Устранить течь за раковиной. Вода перекрывается на потолке возле главной вентилляции | manual | 2h | 2026-07-26 09:00 A | 2026-07-26 11:00 A |  | 100% |  |  |  | start no earlier than 2026-07-26 09:00 | Бобренок В | 2h | 2h |
| 1722 | 3.142 | обшить стены вент камеры |  | 2d | 2026-05-06 09:00 A | 2026-05-07 18:00 A |  | 100% |  |  |  | start no earlier than 2026-05-06 09:00 | Олег; Некрасов А | 32h | 32h |
| 1723 | 3.143 | убрать металл 100*100 в зону охладителя или корридор |  | 1h | 2026-03-02 09:00 A | 2026-03-02 10:00 A |  | 100% |  |  |  | start no earlier than 2026-03-02 09:00 | Некрасов А; Труфанов А | 2h | 2h |
| 1724 | 4 | **4 склад** |  | 109.75d | 2026-03-13 09:00 A | 2026-07-15 16:00 |  | 100% |  | 2026-07-29 11:00 |  |  |  | 93.25h | 93.25h |
| 1725 | 4.1 | реверс направления кнопок движения вперед-назад ричтрака |  | 2h | 2026-07-14 08:00 A | 2026-07-14 11:00 A |  | 100% |  |  |  | start no earlier than 2026-07-14 08:00 | Дедов В | 2h | 2h |
| 1726 | 4.2 | 2 ветки не работают светильники -разобраться |  | 1h | 2026-07-02 09:00 A | 2026-07-02 10:00 A |  | 100% |  |  |  | start no earlier than 2026-07-02 09:00 | Тимофеев В | 1h | 1h |
| 1727 | 4.3 | Выяснить почему перегорают светильники |  | 2h | 2026-07-29 08:00 A | 2026-07-29 11:00 A |  | 100% |  |  |  | start no earlier than 2026-07-29 08:00 | Дедов В | 2h | 2h |
| 1728 | 4.4 | замена светильников |  | 8h | 2026-04-17 09:00 A | 2026-04-17 18:00 A |  | 100% |  |  |  | start no earlier than 2026-04-17 08:00 | Некрасов А; Труфанов А | 16h | 16h |
| 1729 | 4.5 | сборка рохли 1шт |  | 1h | 2026-03-13 09:00 A | 2026-03-13 10:00 A |  | 100% |  |  |  | start no earlier than 2026-03-13 09:00 | Тимофеев В | 1h | 1h |
| 1730 | 4.6 | ремонт обрамление погрузочной рампы |  | 4h | 2026-05-28 09:00 A | 2026-05-28 13:00 A |  | 100% |  |  |  | start no earlier than 2026-05-28 09:00 | Олег | 4h | 4h |
| 1731 | 4.7 | замена неисправных светильников |  | 1d | 2026-03-14 09:00 A | 2026-03-16 18:00 A |  | 100% |  |  |  | start no earlier than 2026-03-14 09:00 | Некрасов А; Бобренок В | 15h | 15h |
| 1732 | 4.8 | **замена неисправных светильников** |  | 87.75d | 2026-03-16 09:00 A | 2026-07-15 16:00 A |  | 100% |  |  |  |  |  | 52.25h | 52.25h |
| 1733 | 4.8.1 | заявка светильники |  | 15min | 2026-03-16 09:00 A | 2026-03-16 09:15 A |  | 100% |  |  |  | start no earlier than 2026-03-16 09:00 | Шуранов Ю | 0.25h | 0.25h |
| 1734 | 4.8.2 | доставка |  | 5d | 2026-03-16 09:15 A | 2026-03-23 09:15 A | 1733 | 100% |  |  |  | start no earlier than 2026-03-12 08:00 | Карабанов | 40h | 40h |
| 1735 | 4.8.3 | замена |  | 6h | 2026-07-15 09:00 A | 2026-07-15 16:00 A | 1734 | 100% |  |  |  | start no earlier than 2026-07-15 09:00 | Некрасов А; Труфанов А | 12h | 12h |
| 1736 | 5 | **5 цех** |  | 968.25d? | 2023-05-29 09:00 A | 2027-02-02 11:00 |  | 62% | 365.66d? |  | 26.34d |  |  | 1852.75h | 1144.25h |
| 1737 | 5.1 | на 2 этаж раковина Установка смесителей (краны) с гибкой подводкой, получить на складе |  | 1h | 2026-09-21 09:00 A | 2026-09-21 10:00 A |  | 100% |  |  |  | start no earlier than 2026-09-21 09:00 | Некрасов А | 1h | 1h |
| 1738 | 5.2 | ремонт дека от вибросито |  | 3h | 2026-09-12 09:00 A | 2026-09-12 12:00 A |  | 100% |  |  |  | start no earlier than 2026-09-12 09:00 | Макаревич А | 3h | 3h |

| ID | WBS | Task | Type | Duration | Start | Finish | Predecessors | Complete | Remaining | Total slack | Free slack | Constraint | Resources | Work | Actual work |
| --- | --- | --- | --- | --- | --- | --- | --- | --- | --- | --- | --- | --- | --- | --- | --- |
| 1739 | 5.3 | **установить зажим троса на тельфер** |  | 28d? | 2026-09-03 09:00 A | 2026-10-01 18:00 |  | 3% | 27.18d? | 113.59d |  |  |  | 8.5h | 0.25h |
| 1740 | 5.3.1 | заявка |  | 15min | 2026-09-03 09:00 A | 2026-09-03 09:15 A |  | 100% |  |  |  | start no earlier than 2026-09-03 09:00 | Зорькин В | 0.25h | 0.25h |
| 1741 | 5.3.2 | контроль доставки |  | 15min | 2026-09-24 11:00 | 2026-09-24 11:15 | 1028FS+5d |  |  | 120.31d | 6.72d | start no earlier than 2026-09-11 09:00 | Зорькин В | 0.25h |  |
| 1742 | 5.3.3 | монтаж |  | 1d? | 2026-10-01 09:00 | 2026-10-01 18:00 | 1029FS+1d, 1741 |  |  | 113.59d |  | start no earlier than 2026-10-01 09:00 | Тимофеев В | 8h |  |
| 1743 | 5.4 | **ремонт насос водоснабжения** |  | 67.25d | 2026-09-03 09:00 A | 2026-11-26 11:00 A |  | 100% |  |  |  |  |  | 4.5h | 4.5h |
| 1744 | 5.4.1 | перекрутить американку для удобного обслуживания |  | 2h | 2026-11-26 09:00 A | 2026-11-26 11:00 A |  | 100% |  |  |  | start no earlier than 2026-11-26 09:00 | Макаревич А | 2h | 2h |
| 1745 | 5.4.2 | Сказать параметры, шильдик насосной станции передать зорькину |  | 15min | 2026-09-03 09:00 A | 2026-09-03 09:15 A |  | 100% |  |  |  | start no earlier than 2026-09-03 09:00 | Тимофеев В | 0.25h | 0.25h |
| 1746 | 5.4.3 | конртроль поставки |  | 15min | 2026-09-10 09:00 A | 2026-09-10 09:15 A | 1745 | 100% |  |  |  | start no earlier than 2026-09-10 09:00 | Зорькин В | 0.25h | 0.25h |
| 1747 | 5.4.4 | замена |  | 1h | 2026-09-11 09:15 A | 2026-09-11 10:15 A | 1746FS+1d | 100% |  |  |  | start no earlier than 2026-09-11 09:00 | Некрасов А; Макаревич А | 2h | 2h |
| 1748 | 5.5 | воставноить заземление на обоих ситах |  | 2h | 2026-09-04 09:00 A | 2026-09-04 11:00 A |  | 100% |  |  |  | start no earlier than 2026-09-04 09:00 | Бобренок В | 2h | 2h |
| 1749 | 5.6 | востановить контакт пульт тельфера у стены (переменный контакт при движении кабеля у пульта) |  | 1h | 2026-09-03 09:00 A | 2026-09-03 10:00 A |  | 100% |  |  |  | start no earlier than 2026-09-03 08:00 | Бобренок В | 1h | 1h |
| 1750 | 5.7 | подключить Олегу сварочный автомат |  | 1h | 2026-08-31 09:00 A | 2026-08-31 10:00 A |  | 100% |  |  |  | start no earlier than 2026-08-31 09:00 | Тимофеев В | 1h | 1h |
| 1751 | 5.8 | **подготовить сетку на мал дробилку 3 и 4мм** |  | 11.12d | 2026-09-12 09:00 A | 2026-09-23 10:00 A |  | 100% |  |  |  |  |  | 1.5h | 1.5h |
| 1752 | 5.8.1 | проверка отстатков сетки на складах |  | 30min | 2026-09-12 09:00 A | 2026-09-12 09:30 A |  | 100% |  |  |  | start no earlier than 2026-09-12 09:00 | Макаревич А | 0.5h | 0.5h |
| 1753 | 5.8.2 | вырезатиь сетку в размер |  | 1h | 2026-09-23 09:00 A | 2026-09-23 10:00 A | 1752FS+1d | 100% |  |  |  | start no earlier than 2026-09-29 09:00 | Тимофеев В | 1h | 1h |
| 1754 | 5.9 | ревизия шнека |  | 3h | 2026-08-17 09:00 A | 2026-08-17 12:00 A |  | 100% |  |  |  | start no earlier than 2026-08-17 09:00 | Бобренок В; Некрасов А | 6h | 6h |
| 1755 | 5.10 | **свет в туалет передать крепление светильника** |  | 1.12d | 2026-08-14 09:00 A | 2026-08-17 10:00 A |  | 100% |  |  |  |  |  | 2.25h | 2.25h |
| 1756 | 5.10.1 | проверить наличие светильника с боковым монтажем |  | 15min | 2026-08-14 09:00 A | 2026-08-14 09:15 A |  | 100% |  |  |  | start no earlier than 2026-08-14 09:00 | Домоводов К | 0.25h | 0.25h |
| 1757 | 5.10.2 | замена светильника / или закрепить |  | 1h | 2026-08-17 09:00 A | 2026-08-17 10:00 A | 1756 | 100% |  |  |  | start no earlier than 2026-08-15 09:00 | Бундин В | 1h | 1h |
| 1758 | 5.10.3 | закрепить светильник в коридоре -вход в туалет |  | 1h | 2026-08-17 09:00 A | 2026-08-17 10:00 A |  | 100% |  |  |  | start no earlier than 2026-08-17 09:00 | Бундин В | 1h | 1h |
| 1759 | 5.11 | трещина вибросито №2 1см ремонт |  | 6h | 2026-08-27 09:00 A | 2026-08-27 16:00 A |  | 100% |  |  |  | start no earlier than 2026-08-27 09:00 | Макаревич А | 6h | 6h |
| 1760 | 5.12 | трещина вибросито №1 кольцо. ремонт |  | 4h | 2026-08-28 09:00 A | 2026-08-28 13:00 A |  | 100% |  |  |  | start no earlier than 2026-08-28 09:00 | Макаревич А | 4h | 4h |
| 1761 | 5.13 | **проект новая дробилка** |  | 40.03d | 2026-08-21 09:00 A | 2026-10-07 09:15 |  | 17% | 33.37d | 110.56d |  |  |  | 144.25h | 24h |
| 1762 | 5.13.1 | **кабель для доп мощности** |  | 40.03d | 2026-08-21 09:00 A | 2026-10-07 09:15 |  | 17% | 33.37d | 110.56d |  |  |  | 144.25h | 24h |
| 1763 | 5.13.1.1 | составить ТЗ на монтаж кабеля |  | 3d | 2026-08-21 09:00 A | 2026-08-25 18:00 A |  | 100% |  |  |  | start no earlier than 2026-08-21 09:00 | Домоводов К | 24h | 24h |
| 1764 | 5.13.1.2 | получить КП / счет договор | milestone | 0d | 2026-09-09 09:00 | 2026-09-09 09:00 | 1763FS+2d |  |  | 110.56d | 0d | start no earlier than 2026-09-09 09:00 | Домоводов К |  |  |
| 1765 | 5.13.1.3 | предоплата |  | 15min | 2026-09-10 09:00 | 2026-09-10 09:15 | 1764FS+1d |  |  | 110.56d | 0d | start no earlier than 2026-08-10 08:00 | Домоводов К | 0.25h |  |
| 1766 | 5.13.1.4 | монтаж |  | 15d | 2026-09-20 09:15 | 2026-10-07 09:15 | 1765FS+10d |  |  | 110.56d |  | start no earlier than 2026-08-10 08:00 | Подрядчик | 120h |  |

| ID | WBS | Task | Type | Duration | Start | Finish | Predecessors | Complete | Remaining | Total slack | Free slack | Constraint | Resources | Work | Actual work |
| --- | --- | --- | --- | --- | --- | --- | --- | --- | --- | --- | --- | --- | --- | --- | --- |
| 1767 | 5.14 | **монтаж вода в 5ц** |  | 36.75d | 2026-08-10 08:00 A | 2026-09-22 16:00 |  | 80% | 7.18d | 122.84d |  |  |  | 128.08h | 106h |
| 1768 | 5.14.1 | Подключение греющего кабеля |  | 3h | 2026-09-16 09:00 A | 2026-09-16 12:00 A |  | 100% |  |  |  | start no earlier than 2026-09-16 09:00 | Некрасов А; Труфанов А | 6h | 6h |
| 1769 | 5.14.2 | подклюючить воду на прямую |  | 2h | 2026-09-14 09:00 A | 2026-09-14 11:00 A |  | 100% |  |  |  | start no earlier than 2026-09-15 09:00 | Тимофеев В | 2h | 2h |
| 1770 | 5.14.3 | Все доделать/подключить |  | 6h | 2026-09-18 09:00 A | 2026-09-18 16:00 A |  | 100% |  |  |  | start no earlier than 2026-09-18 09:00 | Труфанов А; Некрасов А | 12h | 12h |
| 1771 | 5.14.4 | установить в конце линии расширительный бак / защита от гидроудара |  | 2h | 2026-09-21 09:00 A | 2026-09-21 11:00 A |  | 100% |  |  |  | start no earlier than 2026-09-21 09:00 | Труфанов А; Некрасов А | 4h | 4h |
| 1772 | 5.14.5 | Установка точек воды для пожврного гидранта и набора воды для поломоечной машинки цех 3,4,5а и 5 |  | 6h | 2026-09-22 09:00 A | 2026-09-22 16:00 A |  | 100% |  |  |  | start no earlier than 2026-09-22 09:00 | Труфанов А; Некрасов А | 12h | 12h |
| 1773 | 5.14.6 | переключение линии "без бачка" |  | 2h | 2026-09-22 09:00 A | 2026-09-22 11:00 A | 1771 | 100% |  |  |  | start no earlier than 2026-09-22 09:00 | Труфанов А; Некрасов А | 4h | 4h |
| 1774 | 5.14.7 | тестирование системы |  | 2h | 2026-09-21 09:00 A | 2026-09-21 11:00 A | 1773 | 100% |  |  |  | start no earlier than 2026-09-18 08:00 | Труфанов А; Некрасов А | 4h | 4h |
| 1775 | 5.14.8 | выяснить возможность обмена тройников 1+1/4-1/2 на 3/4-1/2 |  | 15min | 2026-09-21 09:00 A | 2026-09-21 09:15 A |  | 100% |  |  |  | start no earlier than 2026-09-21 09:00 | Зорькин В | 0.25h | 0.25h |
| 1776 | 5.14.9 | Прокнуть греющий кабель | manual | 3h | 2026-09-16 09:00 A | 2026-09-16 12:00 A |  | 100% |  |  |  |  | Некрасов А; Труфанов А | 6h | 6h |
| 1777 | 5.14.10 | **монтаж трассы по 3ц** |  | 4.5d | 2026-08-11 09:00 A | 2026-08-17 13:00 A |  | 100% |  |  |  |  |  | 16.5h | 16.5h |
| 1778 | 5.14.10.1 | заявка хомуты сантех - получить дату поставки |  | 15min | 2026-08-11 09:00 A | 2026-08-11 09:15 A |  | 100% |  |  |  | start no earlier than 2026-08-11 09:00 | Домоводов К | 0.25h | 0.25h |
| 1779 | 5.14.10.2 | контроль доставки |  | 15min | 2026-08-14 09:15 A | 2026-08-14 09:30 A | 1778FS+3d | 100% |  |  |  | start no earlier than 2026-08-10 08:00 | Зорькин В | 0.25h | 0.25h |
| 1780 | 5.14.10.3 | монтаж продложть |  | 4h | 2026-08-14 09:30 A | 2026-08-14 14:30 A | 1779 | 100% |  |  |  | start no earlier than 2026-08-10 08:00 | Некрасов А; Бундин В | 8h | 8h |
| 1781 | 5.14.10.4 | монтаж продложть |  | 4h | 2026-08-17 09:00 A | 2026-08-17 13:00 A | 1779 | 100% |  |  |  | start no earlier than 2026-08-17 09:00 | Некрасов А; Бобренок В | 8h | 8h |
| 1782 | 5.14.11 | **монтаж труба в земле между 3 и 4ц** |  | 30.75d | 2026-08-10 08:00 A | 2026-09-16 16:00 |  | 66% | 10.39d | 128.84d |  |  |  | 19.08h | 15h |
| 1783 | 5.14.11.1 | монтаж ф32 в ф40 |  | 4h | 2026-08-10 08:00 A | 2026-08-10 13:00 A |  | 100% |  |  |  | start no earlier than 2026-08-10 08:00 | Некрасов А; Макаревич А | 8h | 8h |
| 1784 | 5.14.11.2 | заявка греющий кабель внтуреннего монтажа + |  | 1h | 2026-08-11 09:00 A | 2026-08-11 10:00 A | 1783 | 100% |  |  |  | start no earlier than 2026-08-11 09:00 | Домоводов К | 1h | 1h |
| 1785 | 5.14.11.3 | заявка защита УЗО |  | 1h | 2026-08-24 09:00 | 2026-08-24 10:00 |  |  |  | 149.46d | 4.88d | start no earlier than 2026-08-24 09:00 | Зорькин В | 1h |  |
| 1786 | 5.14.11.4 | контоль доставка |  | 5min | 2026-08-31 09:00 | 2026-08-31 09:05 | 1784FS+5d, 1785 |  |  | 144.58d |  | start no earlier than 2026-08-31 09:00 | Зорькин В | 0.08h |  |
| 1787 | 5.14.11.5 | монтаж кабеля |  | 3h | 2026-09-16 12:00 A | 2026-09-16 16:00 A | 1786FS+1d, 1768 | 100% |  |  |  | start no earlier than 2026-09-16 09:00 | Некрасов А; Макаревич А | 6h | 6h |
| 1788 | 5.14.11.6 | монтаж щиток кабеля с УЗО |  | 3h | 2026-09-14 09:00 | 2026-09-14 12:00 |  |  |  | 131.22d |  | start no earlier than 2026-09-14 09:00 | Дедов В | 3h |  |
| 1789 | 5.14.12 | **монтаж трассы по воздуху м/д 4 и 5А** |  | 9.5d | 2026-08-11 09:00 A | 2026-08-24 13:00 |  | 24% | 7.24d | 149.09d |  |  |  | 9.25h | 1.25h |
| 1790 | 5.14.12.1 | подготовка материал |  | 1h | 2026-08-11 09:00 A | 2026-08-11 10:00 A |  | 100% |  |  |  | start no earlier than 2026-08-11 09:00 | Некрасов А; Макаревич А | 1h | 1h |
| 1791 | 5.14.12.2 | контроль поставки рым 10 |  | 15min | 2026-08-21 09:00 A | 2026-08-21 09:15 A |  | 100% |  |  |  | start no earlier than 2026-08-21 09:00 | Зорькин В | 0.25h | 0.25h |
| 1792 | 5.14.12.3 | монтаж |  | 4h | 2026-08-24 09:00 | 2026-08-24 13:00 | 1791 |  |  | 149.09d |  | start no earlier than 2026-08-24 09:00 | Некрасов А; Тимофеев В | 8h |  |
| 1793 | 5.14.13 | монтаж щиток греющего кабеля по воздуху |  | 4h | 2026-09-16 09:00 A | 2026-09-16 13:00 A |  | 100% |  |  |  | start no earlier than 2026-09-16 09:00 | Труфанов А | 4h | 4h |
| 1794 | 5.14.14 | монтаж трассы по 4ц |  | 6h | 2026-08-18 09:00 A | 2026-08-18 16:00 A | 1779 | 100% |  |  |  | start no earlier than 2026-08-18 09:00 | Некрасов А; Макаревич А | 11h | 11h |
| 1795 | 5.14.15 | монтаж трассы по 5ц |  | 4h | 2026-08-19 09:00 A | 2026-08-19 13:00 A | 1794 | 100% |  |  |  | start no earlier than 2026-08-19 09:00 | Некрасов А; Макаревич А | 8h | 8h |
| 1796 | 5.14.16 | монтаж трассы по 5ц |  | 6h | 2026-08-24 09:00 | 2026-08-24 16:00 | 1794 |  |  | 148.84d |  | start no earlier than 2026-08-24 09:00 | Некрасов А; Макаревич А | 10h |  |

| ID | WBS | Task | Type | Duration | Start | Finish | Predecessors | Complete | Remaining | Actual finish | Total slack | Constraint | Resources | Work | Actual work |
| --- | --- | --- | --- | --- | --- | --- | --- | --- | --- | --- | --- | --- | --- | --- | --- |
| 1797 | 5.15 | **монтаж тепловые пушки подвесные 5 цех** |  | 40d | 2026-08-21 09:00 A | 2026-10-06 18:00 |  | 36% | 25.6d |  | 110.59d |  |  | 41h | 9h |
| 1798 | 5.15.1 | составить схему монтажа |  | 4h | 2026-08-26 09:00 A | 2026-08-26 13:00 A |  | 100% |  |  |  | start no earlier than 2026-08-26 09:00 | Зорькин В | 4h | 4h |
| 1799 | 5.15.2 | заявка на тепловые пушки вулкан |  | 2h | 2026-08-21 09:00 A | 2026-08-21 11:00 A |  | 100% |  |  |  | start no earlier than 2026-08-21 09:00 | Зорькин В | 2h | 2h |
| 1800 | 5.15.3 | контроль остатки нерж труба, фтинги |  | 2h | 2026-09-07 09:00 A | 2026-09-07 11:00 A | 1799 | 100% |  |  |  | start no earlier than 2026-09-07 09:00 | Зорькин В | 2h | 2h |
| 1801 | 5.15.4 | контроль доставки |  | 1h | 2026-09-21 09:00 A | 2026-09-21 10:00 A | 1800FS+7d | 100% |  |  |  | start no earlier than 2026-09-21 09:00 | Зорькин В | 1h | 1h |
| 1802 | 5.15.5 | монтаж |  | 2d | 2026-10-05 09:00 | 2026-10-06 18:00 | 1801FS+1d |  |  |  | 110.59d | start no earlier than 2026-10-05 09:00 | Некрасов А; Труфанов А | 32h |  |
| 1803 | 5.16 | замена светильника перегоревшего у Большакова в кабинете |  | 2h | 2026-08-06 09:00 A | 2026-08-06 11:00 A |  | 100% |  |  |  | start no earlier than 2026-08-07 09:00 | Труфанов А | 2h | 2h |
| 1804 | 5.17 | устранить утечку воды в душе |  | 1h | 2026-08-06 09:00 A | 2026-08-06 10:00 A |  | 100% |  |  |  | start no earlier than 2026-08-06 08:00 | Бундин В | 1h | 1h |
| 1805 | 5.18 | **установить унитаз на 3 этаже** |  | 3.38d? | 2026-08-04 09:00 A | 2026-08-07 12:00 A |  | 100% |  |  |  |  | Бобренок В | 38h | 38h |
| 1806 | 5.18.1 | заказать гофру и гибкую вставку |  | 1d? | 2026-08-04 09:00 A | 2026-08-04 18:00 A |  | 100% |  |  |  | start no earlier than 2026-08-04 08:00 | Шуранов Ю | 8h | 8h |
| 1807 | 5.18.2 | установка унитаза (гофротруба и гибкая подводка и коронка у Большакова) коронку вернуть Большакову |  | 3h | 2026-08-07 09:00 A | 2026-08-07 12:00 A |  | 100% |  |  |  | start no earlier than 2026-08-07 09:00 | Труфанов А | 3h | 3h |
| 1808 | 5.19 | монтаж свет в туалете 3 этаж (оператора дадут в помощь) | manual | 6h | 2026-08-09 09:00 A | 2026-08-09 16:00 A |  | 100% |  |  |  | start no earlier than 2026-08-09 09:00 | Бобренок В | 6h | 6h |
| 1809 | 5.20 | прикрутить смотровые окна на дробилке, не хватает саморезов- просыпается сырье |  | 1h | 2026-08-02 09:00 A | 2026-08-03 10:00 A |  | 100% |  |  |  | start no earlier than 2026-08-02 09:00 | Макаревич А | 1h | 1h |
| 1810 | 5.21 | сборка ограничиетелей на сетку №2 для сито из лазера |  | 4h | 2026-07-17 09:00 A | 2026-07-17 13:00 A |  | 100% |  |  |  | start no earlier than 2026-07-17 09:00 | Макаревич А | 4h | 4h |
| 1811 | 5.22 | ремонт сетки, хомуты с 5ц |  | 2h | 2026-07-15 09:00 A | 2026-07-15 11:00 A |  | 100% |  |  |  | start no earlier than 2026-07-15 09:00 | Бундин В | 2h | 2h |
| 1812 | 5.23 | вырезать сетку 2мм на большую дробилку |  | 2h | 2026-07-15 09:00 A | 2026-07-15 11:00 A |  | 100% |  |  |  | start no earlier than 2026-07-15 09:00 | Бобренок В | 2h | 2h |
| 1813 | 5.24 | заменаить ножи на мал дробилке |  | 6h | 2026-07-06 08:00 A | 2026-07-06 16:00 A |  | 100% |  |  |  | start no earlier than 2026-07-06 08:00 | Дедов В | 6h | 6h |
| 1814 | 5.25 | заварить хомут от деко 5 ц. в слесарке |  | 2h | 2026-07-11 09:00 A | 2026-07-13 11:00 A |  | 100% |  |  |  | start no earlier than 2026-07-11 09:00 | Макаревич А | 2h | 2h |
| 1815 | 5.26 | Дефектовка кнопок растаривателя, ремонт, клинит кнопку |  | 30min | 2026-07-06 08:00 A | 2026-07-06 09:30 A |  | 100% |  |  |  | start no earlier than 2026-07-06 08:00 | Дедов В | 0.5h | 0.5h |
| 1816 | 5.27 | сито просечка с лазера - доплнить 4шт до 6-8 уголоков ограничителей. |  | 2h | 2026-06-26 08:00 A | 2026-06-26 11:00 A |  | 100% |  |  |  | start no earlier than 2026-06-26 08:00 | Макаревич А | 2h | 2h |
| 1817 | 5.28 | просечки нерж. наварить уголки, чтобы не падало внутрь |  | 2h | 2026-06-25 08:00 A | 2026-06-25 11:00 A |  | 100% |  |  |  | start no earlier than 2026-06-25 08:00 | Макаревич А | 2h | 2h |
| 1818 | 5.29 | на поворотную кнопку реверса шнека №1 установить бокс (взять на складе) |  | 1h | 2026-06-24 09:00 A | 2026-06-24 10:00 A |  | 100% |  |  |  | start no earlier than 2026-06-24 09:00 | Труфанов А | 1h | 1h |
| 1819 | 5.30 | развернуть ножи на большой дробилке, если не успеваем передаем по смене |  | 3h | 2026-06-23 08:00 A | 2026-06-23 12:00 A |  | 100% |  |  |  | start no earlier than 2026-06-23 08:00 | Труфанов А; Макаревич А | 6h | 6h |
| 1820 | 5.31 | **протянуть все болтовые соединения: шиберы растаривателей, металлоконструкции под бункера и т.д. если нет болта - прикручиваем** |  | 3h? | 2026-06-23 09:00 A | 2026-06-23 12:00 |  | 100% |  | 2026-06-23 18:00 |  |  | Труфанов А | 11h | 11h |
| 1821 | 5.31.1 | заказать краску |  | 1d? | 2026-06-23 09:00 A | 2026-06-23 18:00 A |  | 100% |  |  |  | start no earlier than 2026-06-23 08:00 | Шуранов Ю | 8h | 8h |
| 1822 | 5.32 | проверить откуда гайку нашли на магните, растариватель-дробилка -шнеки -крепление магнитов |  | 1h | 2026-06-22 09:00 A | 2026-06-22 10:00 A |  | 100% |  |  |  | start no earlier than 2026-06-22 08:00 | Бундин В | 1h | 1h |

| ID | WBS | Task | Duration | Start | Finish | Predecessors | Complete | Remaining | Total slack | Free slack | Constraint | Resources | Work | Actual work |
| --- | --- | --- | --- | --- | --- | --- | --- | --- | --- | --- | --- | --- | --- | --- |
| 1823 | 5.33 | **закрепить штурвал на растаривателе 1** | 1d? | 2026-06-23 09:00 A | 2026-06-23 18:00 A |  | 100% |  |  |  |  | Бундин В | 16h | 16h |
| 1824 | 5.33.1 | заказываем растариватель | 1d? | 2026-06-23 09:00 A | 2026-06-23 18:00 A |  | 100% |  |  |  | start no earlier than 2026-06-23 09:00 | Шуранов Ю | 8h | 8h |
| 1825 | 5.34 | заварить просеиватель ближе к стеллажам и на правом (расскажу как) | 3h | 2026-06-11 09:00 A | 2026-06-11 12:00 A |  | 100% |  |  |  | start no earlier than 2026-06-11 09:00 | Бундин В | 3h | 3h |
| 1826 | 5.35 | ремонт просечку с вибросито, передать в 5ц | 2h | 2026-06-12 09:00 A | 2026-06-12 11:00 A |  | 100% |  |  |  | start no earlier than 2026-06-12 09:00 | Бундин В | 2h | 2h |
| 1827 | 5.36 | ремонт хомут с вибросито | 2h | 2026-06-05 09:00 A | 2026-06-05 11:00 A |  | 100% |  |  |  | start no earlier than 2026-06-05 08:00 | Бундин В | 2h | 2h |
| 1828 | 5.37 | заварить хомут от деко 5 ц. в слесарке | 2h | 2026-07-14 09:00 A | 2026-07-14 11:00 A |  | 100% |  |  |  | start no earlier than 2026-07-14 09:00 | Бундин В | 2h | 2h |
| 1829 | 5.38 | **востановить коробку тельфера** | 180.25d | 2026-06-04 09:00 A | 2027-02-02 11:00 |  | 59% | 73.87d | 26.34d |  |  |  | 5.08h | 3h |
| 1830 | 5.38.1 | найти производителя тельфера и выяснить марку коробку / найти в продаже подходящий артикул | 2h | 2026-06-04 09:00 A | 2026-06-04 11:00 A |  | 100% |  |  |  | start no earlier than 2026-06-04 09:00 | Шуранов Ю | 2h | 2h |
| 1831 | 5.38.2 | заявка | 1h | 2026-06-05 09:00 A | 2026-06-05 10:00 A |  | 100% |  |  |  | start no earlier than 2026-06-05 09:00 | Шуранов Ю | 1h | 1h |
| 1832 | 5.38.3 | доставка контроль | 5min | 2026-09-18 09:00 | 2026-09-18 09:05 |  |  |  | 127.33d | 100.99d | start no earlier than 2026-09-18 09:00 | Домоводов К | 0.08h |  |
| 1833 | 5.38.4 | замена | 2h | 2027-02-02 09:00 | 2027-02-02 11:00 | 1832 |  |  | 26.34d |  | start no earlier than 2027-02-02 09:00 | Некрасов А | 2h |  |
| 1834 | 5.39 | замена пускатель тельфер 24дц / найти/изготовить + установить крышку контакторов / доработать крепеж кабеля к тросу | 1h | 2026-05-27 09:00 A | 2026-05-27 10:00 A |  | 100% |  |  |  | start no earlier than 2026-05-27 09:00 | Некрасов А; Бундин В | 2h | 2h |
| 1835 | 5.40 | проверка всех банок АКБ штабелера / замена неисправных | 2h | 2026-05-30 09:00 A | 2026-06-01 11:00 A |  | 100% |  |  |  | start no earlier than 2026-05-30 09:00 | Бобренок В | 2h | 2h |
| 1836 | 5.41 | посмотреть что с тельфером на дробилке | 1h | 2026-05-26 09:00 A | 2026-05-26 10:00 A |  | 100% |  |  |  | start no earlier than 2026-05-26 09:00 | Некрасов А | 1h | 1h |
| 1837 | 5.42 | приварить магниты на сито | 0.5h | 2026-05-26 09:00 A | 2026-05-26 09:30 A |  | 100% |  |  |  | start no earlier than 2026-05-26 09:00 | Некрасов А | 0.5h | 0.5h |
| 1838 | 5.43 | заварить растариватель №2 | 4h | 2026-05-25 08:00 A | 2026-05-25 13:00 A |  | 100% |  |  |  | start no earlier than 2026-05-25 08:00 | Тимофеев В; Некрасов А | 7h | 7h |
| 1839 | 5.44 | уложить красиво кабель в гофре зона дробилки | 1h | 2026-05-19 09:00 A | 2026-05-19 10:00 A |  | 100% |  |  |  | start no earlier than 2026-05-19 09:00 | Бундин В; Некрасов А | 2h | 2h |
| 1840 | 5.45 | заварить 2 просечки от сито и отправить все на 5 цех | 1h | 2026-05-19 09:00 A | 2026-05-19 10:00 A |  | 100% |  |  |  | start no earlier than 2026-05-19 09:00 | Бундин В | 1h | 1h |
| 1841 | 5.46 | сделать дублирующий пост (вкл. И выкл. Смесителя) на мезонине дробилки | 4h | 2026-05-18 08:00 A | 2026-05-18 13:00 A |  | 100% |  |  |  | start no earlier than 2026-05-18 08:00 | Дедов В | 4h | 4h |
| 1842 | 5.47 | прошприцевать сам двигатель дробилки | 1h | 2026-05-19 09:00 A | 2026-05-19 10:00 A |  | 100% |  |  |  | start no earlier than 2026-05-19 09:00 | Некрасов А; Бундин В | 2h | 2h |
| 1843 | 5.48 | **сборка схемы блокировки дробилки при открытом люке** | 7.25d? | 2026-05-17 09:00 A | 2026-05-27 11:00 A |  | 100% |  |  |  |  |  | 17h | 17h |
| 1844 | 5.48.1 | монтаж кабель | 4h | 2026-05-17 09:00 A | 2026-05-18 13:00 A |  | 100% |  |  |  | start no earlier than 2026-05-17 09:00 | Макаревич А | 4h | 4h |
| 1845 | 5.48.2 | сборка схема | 2h | 2026-05-27 09:00 A | 2026-05-27 11:00 A | 1844 | 100% |  |  |  | start no earlier than 2026-05-27 09:00 | Дедов В | 2h | 2h |
| 1846 | 5.48.3 | заказать концевики | 1d? | 2026-05-25 09:00 A | 2026-05-25 18:00 A |  | 100% |  |  |  | start no earlier than 2026-05-25 08:00 | Шуранов Ю | 8h | 8h |
| 1847 | 5.48.4 | доделать схему блокировки- концевики LA167-Z8/122 на складе | 3h | 2026-05-26 09:00 A | 2026-05-26 12:00 A |  | 100% |  |  |  | start no earlier than 2026-05-26 09:00 | Дедов В | 3h | 3h |
| 1848 | 5.49 | проверка центровки мотора после замены подшипнка + замена подшипник задний | 4h | 2026-05-12 08:00 A | 2026-05-12 13:00 A |  | 100% |  |  |  | start no earlier than 2026-05-12 08:00 | Тимофеев В; Бобренок В | 8h | 8h |
| 1849 | 5.50 | заварить сито | 2h | 2026-05-08 08:00 A | 2026-05-08 11:00 A |  | 100% |  |  |  | start no earlier than 2026-05-08 08:00 | Макаревич А | 2h | 2h |
| 1850 | 5.51 | закрепить штурвал, чтобы не болтался на растаривателе 1 | 1h | 2026-05-08 08:00 A | 2026-05-08 10:00 A |  | 100% |  |  |  | start no earlier than 2026-05-08 08:00 | Макаревич А | 1h | 1h |
| 1851 | 5.52 | посмотреть компрессор (если проблема в предохранителе- то взять у меня на столе)пароль8989 | 1h | 2026-05-08 08:00 A | 2026-05-08 10:00 A |  | 100% |  |  |  | start no earlier than 2026-05-08 08:00 | Дедов В | 1h | 1h |
| 1852 | 5.53 | проверить на 2х котлах давление в системе отопления- где нужно долить воды. И слить воду система отопления 5а цех | 2h | 2026-05-06 08:00 A | 2026-05-06 11:00 A |  | 100% |  |  |  | start no earlier than 2026-05-06 08:00 | Бобренок В | 2h | 2h |

| ID | WBS | Task | Type | Duration | Start | Finish | Predecessors | Complete | Actual start | Actual finish | Total slack | Constraint | Resources | Work | Actual work |
| --- | --- | --- | --- | --- | --- | --- | --- | --- | --- | --- | --- | --- | --- | --- | --- |
| 1853 | 5.54 | **ремонт сито (попробовать заклеить эпоксидкой) / ремонт у производсителя** |  | 13d | 2026-05-13 09:00 A | 2026-05-29 18:00 A |  | 100% |  |  |  |  |  | 0.75h | 0.75h |
| 1854 | 5.54.1 | отправить сито на ремонт производителю |  | 30min | 2026-05-13 09:00 A | 2026-05-13 09:30 A |  | 100% |  |  |  | start no earlier than 2026-05-13 09:00 | Шуранов Ю | 0.5h | 0.5h |
| 1855 | 5.54.2 | контроль доставки |  | 15min | 2026-05-29 17:45 A | 2026-05-29 18:00 A | 1854SF+15d | 100% |  |  |  | start no earlier than 2026-05-12 08:00 | Шуранов Ю | 0.25h | 0.25h |
| 1856 | 5.55 | зачистить приемный бункер после дробилке болгаркой |  | 1h | 2026-04-30 08:00 A | 2026-04-30 10:00 A |  | 100% |  |  |  | start no earlier than 2026-04-30 08:00 | Дедов В | 1h | 1h |
| 1857 | 5.56 | **ремонт стиральной машинки / шум подшипника** |  | 1d? | 2026-04-27 09:00 | 2026-04-27 18:00 |  |  |  |  | 233.59d |  |  | 8h |  |
| 1858 | 5.56.1 | договор |  | 1d? | 2026-04-27 09:00 | 2026-04-27 18:00 |  |  |  |  | 233.59d | start no earlier than 2026-04-27 08:00 | Шуранов Ю | 8h |  |
| 1859 | 5.57 | **ремонт утечки с системы отопления** |  | 1.12d | 2026-05-04 09:00 | 2026-05-05 10:00 |  | 100% | 2026-05-07 09:00 | 2026-05-08 10:00 |  |  |  | 10h | 10h |
| 1860 | 5.57.1 | слив воды |  | 4h | 2026-05-07 09:00 A | 2026-05-07 13:00 A |  | 100% |  |  |  | start no earlier than 2026-05-07 09:00 | Макаревич А | 4h | 4h |
| 1861 | 5.57.2 | ремонт утечки |  | 2h | 2026-05-07 13:00 A | 2026-05-07 16:00 A | 1860 | 100% |  |  |  | start no earlier than 2026-04-27 08:00 | Макаревич А | 2h | 2h |
| 1862 | 5.57.3 | заправить воду / опресовать |  | 4h | 2026-05-07 15:00 A | 2026-05-08 10:00 A | 1861 | 100% |  |  |  | start no earlier than 2026-04-27 08:00 | Макаревич А | 4h | 4h |
| 1863 | 5.58 | долить в систему отопления воды цех 5а, электрокотел не включаем. Работаем на газ котле |  | 1h | 2026-04-24 09:00 A | 2026-04-24 10:00 A |  | 100% |  |  |  | start no earlier than 2026-04-24 08:00 | Бундин В | 1h | 1h |
| 1864 | 5.59 | вывезти шнек на синий склад |  | 1h | 2026-04-23 09:00 A | 2026-04-23 10:00 A |  | 100% |  |  |  | start no earlier than 2026-04-24 09:00 | Бобренок В; Тимофеев В | 2h | 2h |
| 1865 | 5.60 | взять на зажима для троса на складе и натянуть трос на воротах 5а |  | 2h | 2026-04-25 09:00 A | 2026-04-27 11:00 A |  | 100% |  |  |  | start no earlier than 2026-04-25 09:00 | Макаревич А | 2h | 2h |
| 1866 | 5.61 | убавить температуры на газ котлах |  | 1h | 2026-04-24 09:00 A | 2026-04-24 10:00 A |  | 100% |  |  |  | start no earlier than 2026-04-24 09:00 | Шуранов Ю | 1h | 1h |
| 1867 | 5.62 | заварить сито и хомуты |  | 1h | 2026-04-24 09:00 A | 2026-04-24 10:00 A |  | 100% |  |  |  | start no earlier than 2026-04-24 09:00 | Тимофеев В | 1h | 1h |
| 1868 | 5.63 | проверка вибросит детальный осмотр с полной разборкой / ремонт трещин |  | 4h | 2026-04-21 09:00 A | 2026-04-21 13:00 A |  | 100% |  |  |  | start no earlier than 2026-04-21 09:00 | Бундин В | 4h | 4h |
| 1869 | 5.64 | протяжка анкеров стеллажей, болтается |  | 2h | 2026-04-20 09:00 A | 2026-04-20 11:00 A |  | 100% |  |  |  | start no earlier than 2026-04-20 09:00 | Макаревич А | 2h | 2h |
| 1870 | 5.65 | замена потускневших ламп в инсекютере. Мастеру сообщить кол-во. б/у складывать в коробку |  | 2h | 2026-05-06 09:00 A | 2026-05-06 11:00 A |  | 100% |  |  |  | start no earlier than 2026-05-06 09:00 | Бобренок В | 2h | 2h |
| 1871 | 5.66 | переворачиваем молотки дробилка |  | 4h | 2026-04-15 09:00 A | 2026-04-15 13:00 A |  | 100% |  |  |  | start no earlier than 2026-04-17 08:00 | Макаревич А; Тимофеев В | 8h | 8h |
| 1872 | 5.67 | завершить работы по примыканию к кровли 5А (излишки изоспан) |  | 1d? | 2026-06-19 09:00 | 2026-06-19 18:00 |  |  |  |  | 194.59d | start no earlier than 2026-06-19 09:00 | Олег | 8h |  |
| 1873 | 5.68 | монтаж тамбур для завоза навесок |  | 10d | 2026-04-16 09:00 | 2026-04-29 18:00 |  |  |  |  | 231.59d | start no earlier than 2026-04-16 08:00 | Некрасов А; Олег | 160h |  |
| 1874 | 5.69 | вырезать верхушку еврокуба возле мусорки, будет туда засыпать отсев для дворника | manual | 1h | 2026-04-18 09:00 A | 2026-04-18 10:00 A |  | 100% |  |  |  | start no earlier than 2026-04-18 09:00 | Макаревич А | 1h | 1h |
| 1875 | 5.70 | заварить хомуты и сетки от сито |  | 1h | 2026-04-14 09:00 A | 2026-04-14 10:00 A |  | 100% |  |  |  | start no earlier than 2026-04-14 08:00 | Труфанов А | 1h | 1h |
| 1876 | 5.71 | проверить дист. Воду на штабелере, если нужно долить (фото модели акб) |  | 1h | 2026-04-13 09:00 A | 2026-04-13 10:00 A |  | 100% |  |  |  | start no earlier than 2026-04-13 08:00 | Бундин В | 1h | 1h |
| 1877 | 5.72 | установка шнека отремонтированного обратно на дробилку |  | 6h | 2026-04-21 09:00 A | 2026-04-21 16:00 A |  | 100% |  |  |  | start no earlier than 2026-04-21 09:00 | Некрасов А; Труфанов А | 12h | 12h |
| 1878 | 5.73 | установка бойлера отремонтированного в туалет, а с туалета на 2 этаж, мастер выделит человека в помощь |  | 4h | 2026-04-13 09:00 A | 2026-04-13 13:00 A |  | 100% |  |  |  | start no earlier than 2026-04-13 09:00 | Труфанов А | 4h | 4h |
| 1879 | 5.74 | замена паука на расстаривателе- высокие бэги не могут поднять до конца |  | 1h | 2026-04-10 08:00 A | 2026-04-10 10:00 A |  | 100% |  |  |  | start no earlier than 2026-04-10 08:00 | Тимофеев В | 1h | 1h |

| ID | WBS | Task | Type | Duration | Start | Finish | Predecessors | Complete | Actual start | Actual finish | Constraint | Resources | Work | Actual work |
| --- | --- | --- | --- | --- | --- | --- | --- | --- | --- | --- | --- | --- | --- | --- |
| 1880 | 5.75 | **получить насос Wilo, установить на 1 газовый котел** |  | 0.12d | 2026-04-10 09:00 A | 2026-04-10 10:00 A |  | 100% |  |  |  | Бундин В | 2h | 2h |
| 1881 | 5.75.1 | проверить направление подачи воды, посмотреть по аналогии 2 котла |  | 1h | 2026-04-10 09:00 A | 2026-04-10 10:00 A |  | 100% |  |  | start no earlier than 2026-04-10 09:00 | Тимофеев В | 1h | 1h |
| 1882 | 5.76 | ремот сеток с сито |  | 2h | 2026-04-06 09:00 A | 2026-04-06 11:00 A |  | 100% |  |  | start no earlier than 2026-04-06 08:00 | Труфанов А | 2h | 2h |
| 1883 | 5.77 | на выходах из сито №1 и №2 установить сетки с бортиками |  | 2h | 2026-04-06 09:00 A | 2026-04-06 11:00 A |  | 100% |  |  | start no earlier than 2026-04-06 08:00 | Труфанов А | 2h | 2h |
| 1884 | 5.78 | сыпит сырье с дробилки (вход) |  | 2h | 2026-06-15 09:00 A | 2026-06-15 11:00 A |  | 100% |  |  | start no earlier than 2026-06-13 09:00 | Некрасов А; Труфанов А | 4h | 4h |
| 1885 | 5.79 | востановить ручной штурвал заслонки на растаривателе дробилки |  | 1h | 2026-04-02 08:00 A | 2026-04-02 10:00 A |  | 100% |  |  | start no earlier than 2026-04-02 08:00 | Бобренок В | 1h | 1h |
| 1886 | 5.80 | изготовить штурвал заслонки на растариватель вибросита у стены |  | 2h | 2026-04-13 09:00 A | 2026-04-13 11:00 A |  | 100% |  |  | start no earlier than 2026-04-13 09:00 | Труфанов А | 2h | 2h |
| 1887 | 5.81 | монтаж отбойников | manual | 6h | 2026-04-18 09:00 A | 2026-04-18 16:00 A |  | 100% |  |  | start no earlier than 2026-04-18 09:00 | Бобренок В | 6h | 6h |
| 1888 | 5.82 | **ремонт шкаф управления шнеком 1 растариватель (замена щитка взять на складе)** |  | 13.5d? | 2026-04-21 09:00 | 2026-05-07 13:00 |  | 100% | 2026-04-17 09:00 | 2026-04-29 09:30 |  |  | 91.75h | 91.75h |
| 1889 | 5.82.1 | вывод кнопки управления частотником на ШУ (если нужно замена частотника) с мастером согласовать остановку |  | 5h | 2026-04-20 09:00 A | 2026-04-20 15:00 A |  | 100% |  |  | start no earlier than 2026-04-20 09:00 | Дедов В | 5h | 5h |
| 1890 | 5.82.2 | установить кнопочный пост |  | 2h | 2026-04-21 09:00 A | 2026-04-21 11:00 A |  | 100% |  |  | start no earlier than 2026-04-21 09:00 | Дедов В | 2h | 2h |
| 1891 | 5.82.3 | заявка кнопка SB7 |  | 15min | 2026-04-21 09:00 A | 2026-04-21 09:15 A |  | 100% |  |  | start no earlier than 2026-04-21 09:00 | Зорькин В | 0.25h | 0.25h |
| 1892 | 5.82.4 | доставка |  | 5d | 2026-04-21 09:15 A | 2026-04-28 09:15 A | 1891 | 100% |  |  | start no earlier than 2026-04-20 08:00 | Карабанов | 40h | 40h |
| 1893 | 5.82.5 | замена |  | 1h | 2026-04-27 09:15 A | 2026-04-27 10:15 A | 1892 | 100% |  |  | start no earlier than 2026-04-20 08:00 | Дедов В | 1h | 1h |
| 1894 | 5.82.6 | ремонт корпус |  | 1h | 2026-04-17 09:00 A | 2026-04-17 10:00 A | 1889 | 100% |  |  | start no earlier than 2026-04-09 09:00 | Труфанов А | 1h | 1h |
| 1895 | 5.82.7 | **замена корпус** |  | 6.06d | 2026-04-21 09:00 A | 2026-04-29 09:30 A |  | 100% |  |  |  |  | 42.5h | 42.5h |
| 1896 | 5.82.7.1 | заявка |  | 30min | 2026-04-21 09:00 A | 2026-04-21 09:30 A |  | 100% |  |  | start no earlier than 2026-03-31 08:00 | Зорькин В | 0.5h | 0.5h |
| 1897 | 5.82.7.2 | доставка |  | 5d | 2026-04-21 09:30 A | 2026-04-29 09:30 A | 1896 | 100% |  |  | start no earlier than 2026-03-31 08:00 | Карабанов | 40h | 40h |
| 1898 | 5.82.7.3 | замена |  | 2h | 2026-04-28 09:30 A | 2026-04-28 11:30 A | 1897 | 100% |  |  | start no earlier than 2026-04-14 09:00 | Тимофеев В | 2h | 2h |
| 1899 | 5.83 | получить фланец на складе NMRV040 и установить мотор-редуктор на расстаривателе №1 |  | 2h | 2026-04-28 09:00 A | 2026-04-28 11:00 A |  | 100% |  |  | start no earlier than 2026-04-28 09:00 | Бундин В | 2h | 2h |
| 1900 | 5.84 | убрать красный скотч везде в дробилке, сделать крепление фильтра с малой дробилки на ленточный хомут |  | 3h | 2026-03-27 09:00 A | 2026-03-27 12:00 A |  | 100% |  |  | start no earlier than 2026-03-27 08:00 | Труфанов А | 3h | 3h |
| 1901 | 5.85 | ремонт вибросито |  | 4h | 2026-03-27 08:00 A | 2026-03-27 13:00 A |  | 100% |  |  | start no earlier than 2026-03-27 08:00 | Тимофеев В; Некрасов А | 7h | 7h |
| 1902 | 5.86 | заварить сито возле слесарки (2 шт) и деки 2 шт |  | 3h | 2026-03-26 09:00 A | 2026-03-26 12:00 A |  | 100% |  |  | start no earlier than 2026-03-26 08:00 | Труфанов А | 3h | 3h |
| 1903 | 5.87 | сделать отбойник на входную дверь |  | 1h | 2026-03-28 09:00 A | 2026-03-30 10:00 A |  | 100% |  |  | start no earlier than 2026-03-28 09:00 | Бундин В | 1h | 1h |
| 1904 | 5.88 | сделать трап в курилку |  | 3h | 2026-04-01 09:00 A | 2026-04-01 12:00 A |  | 100% |  |  | start no earlier than 2026-04-01 09:00 | Бундин В | 3h | 3h |
| 1905 | 5.89 | заварить бункер дробилки |  | 2h | 2026-03-24 09:00 A | 2026-03-24 11:00 A |  | 100% |  |  | start no earlier than 2026-03-24 09:00 | Некрасов А; Труфанов А | 4h | 4h |
| 1906 | 5.90 | перенос металл с торца стеллажа напротив ВРУ / на син склад |  | 1h | 2026-03-25 09:00 A | 2026-03-25 10:00 A |  | 100% |  |  | start no earlier than 2026-03-25 09:00 | Бобренок В | 1h | 1h |
| 1907 | 5.91 | пульт управления шибером растариватель правый демонтаж красный скотч / закрепить |  | 1h | 2026-03-22 09:00 A | 2026-03-23 10:00 A |  | 100% |  |  | start no earlier than 2026-03-22 09:00 | Бобренок В | 1h | 1h |
| 1908 | 5.92 | установить корпус на переключатель реверса шнек растаривателя правый / продуть от пыли контакты |  | 30min | 2026-03-22 09:00 A | 2026-03-23 09:30 A |  | 100% |  |  | start no earlier than 2026-03-22 09:00 | Бобренок В | 0.5h | 0.5h |
| 1909 | 5.93 | демонтаж розетки без крышки 2 этаж щиток в фае |  | 30min | 2026-03-25 09:00 A | 2026-03-25 09:30 A |  | 100% |  |  | start no earlier than 2026-03-25 09:00 | Бобренок В | 0.5h | 0.5h |
| 1910 | 5.94 | подлючить розетку для зарядки нового АКБ для штабелера Ц.5А |  | 2h | 2026-03-21 09:00 A | 2026-03-23 11:00 A |  | 100% |  |  | start no earlier than 2026-03-21 09:00 | Дедов В | 2h | 2h |

| ID | WBS | Task | Type | Duration | Start | Finish | Predecessors | Complete | Total slack | Free slack | Constraint | Resources | Work | Actual work |
| --- | --- | --- | --- | --- | --- | --- | --- | --- | --- | --- | --- | --- | --- | --- |
| 1911 | 5.95 | **ремонт шнек с дробилки** |  | 11.75d | 2026-03-17 09:00 A | 2026-04-01 16:00 A |  | 100% |  |  |  |  | 7h | 7h |
| 1912 | 5.95.1 | орг пескоструйка корпус шнека - отправить |  | 1h | 2026-03-17 09:00 A | 2026-03-17 10:00 A |  | 100% |  |  | start no earlier than 2026-03-17 08:00 | Шуранов Ю | 1h | 1h |
| 1913 | 5.95.2 | сборка шнека с ремонта |  | 6h | 2026-04-01 09:00 A | 2026-04-01 16:00 A | 1912 | 100% |  |  | start no earlier than 2026-04-01 09:00 | Некрасов А | 6h | 6h |
| 1914 | 5.96 | установить уплотнения на гофра без красн скотча |  | 4h | 2026-03-20 09:00 A | 2026-03-20 13:00 A |  | 100% |  |  | start no earlier than 2026-03-20 09:00 | Некрасов А; Труфанов А | 8h | 8h |
| 1915 | 5.97 | добавить воду в 4 газ. Котел проверить реальное давление в системе |  | 2h | 2026-03-19 08:00 A | 2026-03-19 11:00 A |  | 100% |  |  | start no earlier than 2026-03-19 08:00 | Бундин В | 2h | 2h |
| 1916 | 5.98 | сменить палярность вращения дробилки / сточило ножи |  | 1h | 2026-03-16 09:00 A | 2026-03-16 10:00 A |  | 100% |  |  | start no earlier than 2026-03-16 09:00 | Труфанов А; Некрасов А | 2h | 2h |
| 1917 | 5.99 | **устанвить ИБП на клапан газ** |  | 0.03d | 2026-03-16 09:00 A | 2026-03-16 09:15 A |  | 100% |  |  |  |  | 0.25h | 0.25h |
| 1918 | 5.99.1 | координация сроков выполнения с газовщиком |  | 15min | 2026-03-16 09:00 A | 2026-03-16 09:15 A |  | 100% |  |  | start no earlier than 2026-03-16 09:00 | Шуранов Ю | 0.25h | 0.25h |
| 1919 | 5.100 | **установить вентилятор с клапаном и фильтром** |  | 11.03d? | 2026-03-18 09:00 | 2026-04-02 09:15 |  |  | 251.56d |  |  |  | 88.25h |  |
| 1920 | 5.100.1 | получить сммету / счет |  | 15min | 2026-03-18 09:00 | 2026-03-18 09:15 |  |  | 251.56d | 0d | start no earlier than 2026-03-18 09:00 | Домоводов К | 0.25h |  |
| 1921 | 5.100.2 | изготовление поставка |  | 10d | 2026-03-18 09:15 | 2026-04-01 09:15 | 1920 |  | 251.56d | 0d | start no earlier than 2026-03-17 08:00 | оплот | 80h |  |
| 1922 | 5.100.3 | монтаж |  | 1d? | 2026-04-01 09:15 | 2026-04-02 09:15 | 1921 |  | 251.56d |  | start no earlier than 2026-03-17 08:00 | оплот | 8h |  |
| 1923 | 5.101 | закрыть отвертстие от демонтированной аспирации фильтротканью. Временно, до изг фильтра |  | 1h | 2026-03-13 08:00 A | 2026-03-13 10:00 A |  | 100% |  |  | start no earlier than 2026-03-13 08:00 | Дедов В | 1h | 1h |
| 1924 | 5.102 | **на отверстие от демонтированной оспирации установить фильтр** |  | 7.01d | 2026-03-20 09:00 A | 2026-03-31 09:05 A |  | 100% |  |  |  |  | 2.08h | 2.08h |
| 1925 | 5.102.1 | получить фильтры |  | 5min | 2026-03-31 09:00 A | 2026-03-31 09:05 A |  | 100% |  |  | start no earlier than 2026-03-31 09:00 | Шуранов Ю | 0.08h | 0.08h |
| 1926 | 5.102.2 | монтаж |  | 1h | 2026-03-20 09:00 A | 2026-03-20 10:00 A | 1925FS+1d | 100% |  |  | start no earlier than 2026-03-20 09:00 | Некрасов А; Труфанов А | 2h | 2h |
| 1927 | 5.103 | **устранить ржавчину шнека после дробилки** |  | 1d? | 2026-03-16 09:00 A | 2026-03-16 18:00 A |  | 100% |  |  |  |  | 16h | 16h |
| 1928 | 5.103.1 | полная разборка / зачистка / сборка |  | 1d? | 2026-03-16 09:00 A | 2026-03-16 18:00 A |  | 100% |  |  | start no earlier than 2026-03-16 09:00 | Труфанов А; Некрасов А | 16h | 16h |
| 1929 | 5.103.2 | согласовать чем можно покрыть шнек внутри | milestone | 0d | 2026-03-16 09:00 A | 2026-03-16 09:00 A |  | 100% |  |  | start no earlier than 2026-03-16 09:00 | Домоводов К |  |  |
| 1930 | 5.104 | заменаить гидро АКБ на насосной станции / замена мебраны и золотника |  | 2h | 2026-03-15 09:00 A | 2026-03-16 11:00 A |  | 100% |  |  | start no earlier than 2026-03-15 09:00 | Бундин В | 2h | 2h |
| 1931 | 5.105 | устарнить выдавливание материала с шнека №1 узел дробилки |  | 4h | 2026-03-13 09:00 A | 2026-03-13 13:00 A |  | 100% |  |  | start no earlier than 2026-03-13 09:00 | Тимофеев В; Бундин В | 8h | 8h |
| 1932 | 5.106 | проверить обр клапан бойлер в гардеробе. Стреляет |  | 30min | 2026-03-13 09:00 A | 2026-03-13 09:30 A |  | 100% |  |  | start no earlier than 2026-03-13 09:00 | Бундин В | 0.5h | 0.5h |
| 1933 | 5.107 | долить дистилят в АКБ штабелер свинцовый |  | 1h | 2026-03-11 09:00 A | 2026-03-11 10:00 A |  | 100% |  |  | start no earlier than 2026-03-11 09:00 | Макаревич А | 1h | 1h |
| 1934 | 5.108 | **замена бойлер туалет** |  | 16.25d | 2026-03-23 09:00 A | 2026-04-14 11:00 A |  | 100% |  |  |  |  | 82.25h | 82.25h |
| 1935 | 5.108.1 | заявка бойлер |  | 15min | 2026-03-23 09:00 A | 2026-03-23 09:15 A |  | 100% |  |  | start no earlier than 2026-03-23 09:00 | Шуранов Ю | 0.25h | 0.25h |
| 1936 | 5.108.2 | доставка |  | 10d | 2026-03-30 09:00 A | 2026-04-10 18:00 A | 1935 | 100% |  |  | start no earlier than 2026-03-29 09:00 | Карабанов | 80h | 80h |
| 1937 | 5.108.3 | монтаж |  | 2h | 2026-04-14 09:00 A | 2026-04-14 11:00 A | 1936 | 100% |  |  | start no earlier than 2026-03-12 08:00 | Тимофеев В | 2h | 2h |
| 1938 | 5.109 | ремонт хомут с вибросито |  | 1h | 2026-03-10 09:00 A | 2026-03-10 10:00 A |  | 100% |  |  | start no earlier than 2026-03-10 09:00 | Макаревич А | 1h | 1h |
| 1939 | 5.110 | Заварить деку на сито |  | 2h | 2026-03-06 09:00 A | 2026-03-06 11:00 A |  | 100% |  |  | start no earlier than 2026-03-06 09:00 | Тимофеев В | 2h | 2h |
| 1940 | 5.111 | Замена двойной розетки (созвон с Шурановым) или спросить у мастера |  | 1h | 2026-03-05 08:00 A | 2026-03-05 10:00 A |  | 100% |  |  | start no earlier than 2026-03-05 08:00 | Дедов В | 1h | 1h |
| 1941 | 5.112 | ошибка Е10 стиральная машинка |  | 1h | 2026-03-04 09:00 A | 2026-03-04 10:00 A |  | 100% |  |  | start no earlier than 2026-03-04 09:00 | Дедов В | 1h | 1h |
| 1942 | 5.113 | ремонт сито, сварка шов |  | 2h | 2026-03-03 09:00 A | 2026-03-03 11:00 A |  | 100% |  |  | start no earlier than 2026-03-03 09:00 | Макаревич А | 2h | 2h |
| 1943 | 5.114 | ремонт растариватель №1 + установить косынки |  | 2h | 2026-03-03 09:00 A | 2026-03-03 11:00 A |  | 100% |  |  | start no earlier than 2026-03-03 09:00 | Некрасов А; Труфанов А | 4h | 4h |

| ID | WBS | Task | Duration | Start | Finish | Predecessors | Complete | Remaining | Actual start | Total slack | Constraint | Resources | Work | Actual work |
| --- | --- | --- | --- | --- | --- | --- | --- | --- | --- | --- | --- | --- | --- | --- |
| 1944 | 5.115 | **ремонт растаривателя №3 - клинит заслонку** | 97.81d | 2026-04-20 09:00 A | 2026-09-02 16:30 |  | 87% | 13.01d |  | 141.78d |  |  | 16.92h | 14.67h |
| 1945 | 5.115.1 | установка ручной штурвал управления шибером | 2h | 2026-04-20 09:00 A | 2026-04-20 11:00 A |  | 100% |  |  |  | start no earlier than 2026-04-20 09:00 | Бундин В | 2h | 2h |
| 1946 | 5.115.2 | контроль поставка Зип - оплачивали или нет? | 10min | 2026-08-12 09:00 A | 2026-08-12 09:10 A |  | 100% |  |  |  | start no earlier than 2026-08-12 09:00 | Зорькин В | 0.17h | 0.17h |
| 1947 | 5.115.3 | получить счет | 15min | 2026-08-13 09:00 A | 2026-08-13 09:15 A |  | 100% |  |  |  | start no earlier than 2026-08-13 09:00 | Домоводов К | 0.25h | 0.25h |
| 1948 | 5.115.4 | контроль поставки | 15min | 2026-08-31 09:15 | 2026-08-31 09:30 | 1947FS+12d |  |  |  | 144.53d | start no earlier than 2026-08-31 09:00 | Зорькин В | 0.25h |  |
| 1949 | 5.115.5 | приемка | 15min | 2026-09-01 09:30 A | 2026-09-01 09:45 A | 1948FS+1d | 100% |  |  |  | start no earlier than 2026-08-31 09:00 | Зорькин В | 0.25h | 0.25h |
| 1950 | 5.115.6 | замена | 4h | 2026-09-02 09:30 A | 2026-09-02 14:30 A | 1949FS+1d | 100% |  |  |  | start no earlier than 2026-08-12 09:00 | Тимофеев В | 4h | 4h |
| 1951 | 5.115.7 | Ремонт паука с растаривателя, оценить состояние. | 2h | 2026-09-02 09:00 A | 2026-09-02 11:00 A |  | 100% |  |  |  | start no earlier than 2026-09-02 09:00 | Тимофеев В | 2h | 2h |
| 1952 | 5.115.8 | установить фланец на редуктор NMRV050 | 2h | 2026-05-18 09:00 A | 2026-05-18 11:00 A |  | 100% |  |  |  | start no earlier than 2026-05-20 09:00 | Бобренок В | 2h | 2h |
| 1953 | 5.115.9 | настройка тепловое реле, настройка концевиков | 2h | 2026-09-02 14:30 | 2026-09-02 16:30 | 1950, 1952 |  |  |  | 141.78d | start no earlier than 2026-05-08 09:00 | Дедов В | 2h |  |
| 1954 | 5.115.10 | доработка пластины, которая клинит | 4h | 2026-05-07 09:00 A | 2026-05-07 13:00 A |  | 100% |  |  |  | start no earlier than 2026-05-07 09:00 | Тимофеев В | 4h | 4h |
| 1955 | 5.116 | **установить курилку на раму. Изготовить лавочку** | 19.25d? | 2026-02-28 09:00 A | 2026-03-27 11:00 A |  | 100% |  |  |  |  |  | 27h | 27h |
| 1956 | 5.116.1 | сделать удлинители для синей платформы, на которые встанет курилка | 1d? | 2026-02-28 09:00 A | 2026-03-02 18:00 A |  | 100% |  |  |  | start no earlier than 2026-02-28 09:00 | Макаревич А | 8h | 8h |
| 1957 | 5.116.2 | закрыть отверстие в полу жзелезом | 1h | 2026-03-13 09:00 A | 2026-03-13 10:00 A |  | 100% |  |  |  | start no earlier than 2026-03-13 09:00 | Некрасов А; Труфанов А | 2h | 2h |
| 1958 | 5.116.3 | монтаж фанера на лавочку | 2h | 2026-03-27 09:00 A | 2026-03-27 11:00 A | 1957 | 100% |  |  |  | start no earlier than 2026-03-27 09:00 |  |  |  |
| 1959 | 5.116.4 | поворот курилки к стене, от ветра | 1h | 2026-03-20 09:00 A | 2026-03-20 10:00 A |  | 100% |  |  |  | start no earlier than 2026-03-20 09:00 | Некрасов А | 1h | 1h |
| 1960 | 5.116.5 | изготовить трап входной | 4h | 2026-03-20 10:00 A | 2026-03-20 15:00 A | 1959 | 100% |  |  |  | start no earlier than 2026-03-12 08:00 | Некрасов А | 4h | 4h |
| 1961 | 5.116.6 | изготовить лавку по периметру курилки. На железо будет потом доска или пенка. Металл с остатков 3ц или с синего склада | 1d? | 2026-03-01 09:00 A | 2026-03-02 18:00 A |  | 100% |  |  |  | start no earlier than 2026-03-01 09:00 | Макаревич А | 8h | 8h |
| 1962 | 5.116.7 | приготовить ручки за которые будет толпа поднимать руками курилку | 2h | 2026-03-09 09:00 A | 2026-03-09 11:00 A |  | 100% |  |  |  | start no earlier than 2026-03-09 09:00 | Некрасов А; Труфанов А | 4h | 4h |
| 1963 | 5.117 | ТО штабелеров - обрезать нитки. Дефектовка подшипников, указать в отчете состояние | 2h | 2026-03-01 09:00 A | 2026-03-02 11:00 A |  | 100% |  |  |  | start no earlier than 2026-03-01 09:00 | Макаревич А | 2h | 2h |
| 1964 | 5.118 | **штабелер - замена ролик мачты. Подшипник котка** | 0.01d | 2026-03-03 09:00 A | 2026-03-03 09:05 A |  | 100% |  |  |  |  |  | 0.17h | 0.17h |
| 1965 | 5.118.1 | контроль | 5min | 2026-03-03 09:00 A | 2026-03-03 09:05 A |  | 100% |  |  |  | start no earlier than 2026-03-03 09:00 | Зорькин В; Тракресурс | 0.17h | 0.17h |
| 1966 | 5.119 | **установить стеллажи для архив образцов** | 25.06d? | 2026-03-03 09:00 | 2026-04-07 09:30 A |  | 100% |  | 2026-03-05 09:00 |  |  |  | 227.25h | 227.25h |
| 1967 | 5.119.1 | монтаж освещение | 4h | 2026-03-06 09:00 A | 2026-03-06 13:00 A |  | 100% |  |  |  | start no earlier than 2026-03-06 09:00 | Некрасов А; Труфанов А | 8h | 8h |

| ID | WBS | Task | Duration | Start | Finish | Predecessors | Complete | Actual start | Actual finish | Constraint | Resources | Work | Actual work |
| --- | --- | --- | --- | --- | --- | --- | --- | --- | --- | --- | --- | --- | --- |
| 1968 | 5.119.2 | **покрасить стеллажи** | 12.02d | 2026-03-06 14:00 A | 2026-03-24 14:10 A | 1967 | 100% |  |  |  |  | 92.17h | 92.17h |
| 1969 | 5.119.2.1 | Заказать краску не пахнущую для радиаторов | 10min | 2026-03-06 14:00 A | 2026-03-06 14:10 A |  | 100% |  |  | start no earlier than 2026-03-03 09:00 | Зорькин В | 0.17h | 0.17h |
| 1970 | 5.119.2.2 | Доставка | 10d | 2026-03-06 14:10 A | 2026-03-24 14:10 A | 1969 | 100% |  |  | start no earlier than 2026-03-03 09:00 | Карабанов | 80h | 80h |
| 1971 | 5.119.2.3 | покраска | 4h | 2026-03-06 14:00 A | 2026-03-06 18:00 A |  | 100% |  |  | start no earlier than 2026-03-06 09:00 | Некрасов А; Труфанов А | 8h | 8h |
| 1972 | 5.119.2.4 | покраска | 4h | 2026-03-06 14:00 A | 2026-03-06 18:00 A |  | 100% |  |  | start no earlier than 2026-03-06 09:00 | Бундин В | 4h | 4h |
| 1973 | 5.119.3 | занести стеллажи в кабинеты с работниками 5ц | 4h | 2026-03-09 09:00 A | 2026-03-09 13:00 A | 1975 | 100% |  |  | start no earlier than 2026-03-09 09:00 | Бобренок В | 4h | 4h |
| 1974 | 5.119.4 | сборка стеллажей | 4h | 2026-03-13 09:00 A | 2026-03-13 13:00 A |  | 100% |  |  | start no earlier than 2026-03-13 09:00 | Труфанов А; Некрасов А | 8h | 8h |
| 1975 | 5.119.5 | монтаж доп полок с уголка | 4h | 2026-03-08 09:00 A | 2026-03-09 13:00 A | 1976 | 100% |  |  | start no earlier than 2026-03-08 09:00 | Бобренок В | 4h | 4h |
| 1976 | 5.119.6 | напилить фанеру на стеллажи | 8h | 2026-03-15 09:00 A | 2026-03-16 18:00 A |  | 100% |  |  | start no earlier than 2026-03-15 09:00 | Бундин В | 8h | 8h |
| 1977 | 5.119.7 | напилить фанеру на стеллажи | 4h | 2026-03-16 09:00 A | 2026-03-16 13:00 A |  | 100% |  |  | start no earlier than 2026-03-16 09:00 | Макаревич А; Тимофеев В | 8h | 8h |
| 1978 | 5.119.8 | **монтаж двери** | 8.06d? | 2026-03-03 09:00 | 2026-03-11 09:30 |  | 100% | 2026-03-05 09:00 | 2026-04-07 09:30 |  |  | 95.08h | 95.08h |
| 1979 | 5.119.8.1 | заявка фурнитуры | 30min | 2026-03-05 09:00 A | 2026-03-05 09:30 A |  | 100% |  |  | start no earlier than 2026-03-05 09:00 | Зорькин В | 0.5h | 0.5h |
| 1980 | 5.119.8.2 | получить коробку на дверь / контроолль поставки | 5min | 2026-03-18 09:00 A | 2026-03-18 09:05 A |  | 100% |  |  | start no earlier than 2026-03-18 09:00 | Зорькин В | 0.08h | 0.08h |
| 1981 | 5.119.8.3 | монтаж 2 двери | 4h | 2026-03-20 09:00 A | 2026-03-20 13:00 A |  | 100% |  |  | start no earlier than 2026-03-20 09:00 | Тимофеев В; Бундин В | 8h | 8h |
| 1982 | 5.119.8.4 | монтаж замка и ручек | 2h | 2026-03-24 09:00 A | 2026-03-24 11:00 A |  | 100% |  |  | start no earlier than 2026-03-24 09:00 | Тимофеев В | 2h | 2h |
| 1983 | 5.119.8.5 | **монтаж наличноков** | 10.06d | 2026-03-24 09:00 A | 2026-04-07 09:30 A |  | 100% |  |  |  |  | 84.5h | 84.5h |
| 1984 | 5.119.8.5.1 | заявка на наличинки | 30min | 2026-03-24 09:00 A | 2026-03-24 09:30 A |  | 100% |  |  | start no earlier than 2026-03-24 09:00 | Зорькин В | 0.5h | 0.5h |
| 1985 | 5.119.8.5.2 | доставка | 10d | 2026-03-24 09:30 A | 2026-04-07 09:30 A | 1984 | 100% |  |  | start no earlier than 2026-03-20 08:00 | Карабанов | 80h | 80h |
| 1986 | 5.119.8.5.3 | монтаж | 4h | 2026-04-04 09:30 A | 2026-04-06 13:00 A | 1985 | 100% |  |  | start no earlier than 2026-03-20 08:00 | Тимофеев В | 4h | 4h |
| 1987 | 5.120 | **монтаж розеток для весов** | 83d | 2026-03-02 09:00 A | 2026-06-24 18:00 A |  | 100% |  |  |  |  | 98.5h | 98.5h |
| 1988 | 5.120.1 | составить план монтажа, расчет материалов | 30min | 2026-03-02 09:00 A | 2026-03-02 09:30 A |  | 100% |  |  | start no earlier than 2026-03-02 09:00 | Некрасов А; Зорькин В; Труфанов А | 1.5h | 1.5h |
| 1989 | 5.120.2 | заявка трос/ талреп | 30min | 2026-03-02 09:30 A | 2026-03-02 10:00 A | 1988 | 100% |  |  | start no earlier than 2026-02-27 08:00 | Зорькин В | 0.5h | 0.5h |
| 1990 | 5.120.3 | доставка | 10d | 2026-03-02 10:00 A | 2026-03-16 10:00 A | 1989 | 100% |  |  | start no earlier than 2026-02-27 08:00 | Карабанов | 80h | 80h |
| 1991 | 5.120.4 | комплектация | 30min | 2026-06-01 09:00 A | 2026-06-01 09:30 A |  | 100% |  |  | start no earlier than 2026-06-01 09:00 | Зорькин В | 0.5h | 0.5h |
| 1992 | 5.120.5 | монтаж | 8h | 2026-06-24 09:00 A | 2026-06-24 18:00 A | 1990 | 100% |  |  | start no earlier than 2026-06-24 09:00 | Тимофеев В; Макаревич А | 16h | 16h |

| ID | WBS | Task | Duration | Start | Finish | Predecessors | Complete | Remaining | Actual start | Total slack | Free slack | Constraint | Resources | Work | Actual work |
| --- | --- | --- | --- | --- | --- | --- | --- | --- | --- | --- | --- | --- | --- | --- | --- |
| 1993 | 5.121 | **установить кнопочный пост вентилятора в окно в доступную зону** | 5.06d | 2026-03-03 09:00 A | 2026-03-10 09:30 |  | 1% | 5.01d |  | 268.53d |  |  |  | 44.5h | 0.5h |
| 1994 | 5.121.1 | заявка частотник 0,5-0,75квт | 30min | 2026-03-03 09:00 A | 2026-03-03 09:30 A |  | 100% |  |  |  |  | start no earlier than 2026-03-03 09:00 | Зорькин В | 0.5h | 0.5h |
| 1995 | 5.121.2 | доставка | 5d | 2026-03-03 09:30 | 2026-03-10 09:30 | 1994 |  |  |  | 268.53d |  | start no earlier than 2026-02-27 08:00 | Карабанов | 40h |  |
| 1996 | 5.121.3 | монтаж | 4h | 2026-03-03 09:00 | 2026-03-03 13:00 |  |  |  |  | 273.09d |  | start no earlier than 2026-03-03 09:00 | Дедов В | 4h |  |
| 1997 | 5.122 | замена местами бойлер с раздевали и кухня | 2h | 2026-02-27 09:00 A | 2026-02-27 11:00 A |  | 100% |  |  |  |  | start no earlier than 2026-02-27 08:00 | Бундин В; Труфанов А | 4h | 4h |
| 1998 | 5.123 | **установить калорифер на 4 котел** | 11.12d? | 2026-10-12 09:00 | 2026-10-27 10:00 |  |  |  |  | 96.47d |  |  |  | 97h |  |
| 1999 | 5.123.1 | заявка | 1h | 2026-10-12 09:00 | 2026-10-12 10:00 |  |  |  |  | 96.47d | 0d | start no earlier than 2026-10-12 09:00 | Зорькин В | 1h |  |
| 2000 | 5.123.2 | доставка | 10d | 2026-10-12 10:00 | 2026-10-26 10:00 | 1999 |  |  |  | 96.47d | 0d | start no earlier than 2026-02-27 08:00 | Карабанов | 80h |  |
| 2001 | 5.123.3 | монтаж | 1d? | 2026-10-26 10:00 | 2026-10-27 10:00 | 2000 |  |  |  | 96.47d |  | start no earlier than 2026-02-27 08:00 | Некрасов А; Труфанов А | 16h |  |
| 2002 | 5.124 | **изготовить бункер нерж** | 77d? | 2026-06-06 09:00 | 2026-09-16 18:00 |  | 83% | 13.29d? | 2026-03-16 09:00 |  |  |  |  | 115.5h | 81.5h |
| 2003 | 5.124.1 | составить чертеж | 1h | 2026-03-16 09:00 A | 2026-03-16 10:00 A |  | 100% |  |  |  |  | start no earlier than 2026-03-16 09:00 | Зорькин В | 1h | 1h |
| 2004 | 5.124.2 | заявка на нерж | 30min | 2026-03-16 10:00 A | 2026-03-16 10:30 A | 2003 | 100% |  |  |  |  | start no earlier than 2026-02-27 08:00 | Зорькин В | 0.5h | 0.5h |
| 2005 | 5.124.3 | доставка | 10d | 2026-04-23 09:00 A | 2026-05-06 18:00 A | 2004 | 100% |  |  |  |  | start no earlier than 2026-04-23 09:00 | Карабанов | 80h | 80h |
| 2006 | 5.124.4 | проверка черетежей / подготовка к сборке | 1h | 2026-10-06 09:00 | 2026-10-06 10:00 |  |  |  |  | 109.47d | 0d | start no earlier than 2026-10-06 09:00 | Труфанов А; Зорькин В | 2h |  |
| 2007 | 5.124.5 | сборка | 2d | 2026-10-06 10:00 | 2026-10-08 10:00 | 2005, 2006 |  |  |  | 109.47d |  | start no earlier than 2026-10-05 09:00 | Некрасов А; Тимофеев В | 32h |  |
| 2008 | 5.125 | аудит по взрывоопасности 5ц | 1d? | 2025-09-03 09:00 | 2025-09-03 18:00 |  |  |  |  | 401.59d |  | start no earlier than 2025-09-03 09:00 |  |  |  |
| 2009 | 5.126 | **расширить прорем для проезда погрузчика** | 3d? | 2024-05-27 09:00 | 2024-05-29 18:00 |  |  |  |  | 731.59d |  |  |  | 24h |  |
| 2010 | 5.126.1 | перенос канализ трубы | 1d? | 2024-05-27 09:00 | 2024-05-27 18:00 |  |  |  |  | 731.59d | 0d | start no earlier than 2024-05-27 09:00 | Некрасов А | 8h |  |
| 2011 | 5.126.2 | монтаж закладных в прорем +400мм | 1d? | 2024-05-28 09:00 | 2024-05-28 18:00 | 2010 |  |  |  | 731.59d | 0d | start no earlier than 2024-05-17 09:00 | Некрасов А | 8h |  |
| 2012 | 5.126.3 | демонтаж /расширение | 1d? | 2024-05-29 09:00 | 2024-05-29 18:00 | 2011 |  |  |  | 731.59d |  | start no earlier than 2024-05-17 09:00 | Некрасов А | 8h |  |
| 2013 | 5.127 | подключить концевые выключатели шибера растаривателя | 2h | 2023-06-21 09:00 | 2023-06-21 11:00 |  |  |  |  | 977.34d |  | start no earlier than 2023-06-21 09:00 | Дедов В | 2h |  |
| 2014 | 5.128 | **установить сирену при включении тельфера** | 119d? | 2023-05-29 09:00 A | 2023-11-09 18:00 |  |  | 118.79d? |  | 875.59d |  |  |  | 48.08h | 0.08h |
| 2015 | 5.128.1 | заявка на сирену и кабель | 5min | 2023-05-29 09:00 A | 2023-05-29 09:05 A |  | 100% |  |  |  |  | start no earlier than 2023-05-29 09:00 | Лобанов И | 0.08h | 0.08h |
| 2016 | 5.128.2 | доставка | 5d | 2023-05-29 09:05 | 2023-06-05 09:05 | 2015 |  |  |  | 988.58d | 112.99d | start no earlier than 2023-05-22 09:00 | Малинина М | 40h |  |
| 2017 | 5.128.3 | монтаж | 1d? | 2023-11-09 09:00 | 2023-11-09 18:00 | 2016 |  |  |  | 875.59d |  | start no earlier than 2023-11-09 09:00 | Дедов В | 8h |  |
| 2018 | 5.129 | держак мешка для сбора отработанного корма лопатой, что бы второй не держал мешок | 1d? | 2026-05-04 09:00 | 2026-05-04 18:00 |  |  |  |  | 228.59d |  | start no earlier than 2026-05-04 09:00 | Тимофеев В | 8h |  |

| ID | WBS | Task | Duration | Start | Finish | Predecessors | Complete | Remaining | Total slack | Constraint | Resources | Work | Actual work |
| --- | --- | --- | --- | --- | --- | --- | --- | --- | --- | --- | --- | --- | --- |
| 2019 | 5.130 | **Замена насосной станции** | 9.25d | 2026-09-01 09:00 A | 2026-09-11 11:00 |  | 92% | 0.71d | 134.34d |  |  | 6.33h | 6h |
| 2020 | 5.130.1 | Замена насоса | 2h | 2026-09-01 09:00 A | 2026-09-01 11:00 A |  | 100% |  |  | start no earlier than 2026-09-01 09:00 | Бундин В | 2h | 2h |
| 2021 | 5.130.2 | Заявка на станцию | 15min | 2026-09-02 09:00 | 2026-09-02 09:15 |  |  |  | 142.56d | start no earlier than 2026-09-02 08:00 | Зорькин В | 0.25h |  |
| 2022 | 5.130.3 | контроль доставки | 5min | 2026-09-11 09:00 | 2026-09-11 09:05 |  |  |  | 134.58d | start no earlier than 2026-09-11 09:00 | Зорькин В | 0.08h |  |
| 2023 | 5.130.4 | установка новой насосной станции | 2h | 2026-09-11 09:00 A | 2026-09-11 11:00 A |  | 100% |  |  | start no earlier than 2026-09-11 09:00 | Некрасов А; Макаревич А | 4h | 4h |
| 2024 | 5.131 | Попытаться заварить деки и хомуты той проволокой по нерже, что есть у нас | 3h | 2026-07-28 08:00 A | 2026-07-28 12:00 A |  | 100% |  |  | start no earlier than 2026-07-28 08:00 | Макаревич А | 3h | 3h |
| 2025 | 5.132 | **5 цех** | 0.25d | 2026-04-07 09:00 A | 2026-04-07 11:00 A |  | 100% |  |  |  |  | 3.5h | 3.5h |
| 2026 | 5.132.1 | Установка сеток на сито | 1h | 2026-04-07 09:00 A | 2026-04-07 10:00 A |  | 100% |  |  | start no earlier than 2026-04-07 08:00 | Бундин В | 1h | 1h |
| 2027 | 5.132.2 | **2 цех** | 0.25d | 2026-04-07 09:00 A | 2026-04-07 11:00 A |  | 100% |  |  |  |  | 2.5h | 2.5h |
| 2028 | 5.132.2.1 | Взять шланг с мойки зона экструдера, установить на складе навесок цех 2, для набора воды в кубы | 30min | 2026-04-07 09:00 A | 2026-04-07 09:30 A |  | 100% |  |  | start no earlier than 2026-04-07 08:00 | Бундин В | 0.5h | 0.5h |
| 2029 | 5.132.2.2 | Посмотреть подачу воды на поломоечной машинке | 2h | 2026-04-07 09:00 A | 2026-04-07 11:00 A |  | 100% |  |  | start no earlier than 2026-04-07 08:00 | Бундин В | 2h | 2h |
| 2030 | 6 | **модернизация** | 982.5d? | 2023-06-07 09:00 A | 2027-03-03 13:00 |  | 48% | 507.64d? | 5.09d |  |  | 3394.67h | 2643.67h |
| 2031 | 6.1 | доработка нерж труб для парогенератора (антиэлектрод) | 1h | 2026-07-06 09:00 | 2026-07-06 10:00 |  |  |  | 184.47d | start no earlier than 2026-07-06 09:00 | Тимофеев В | 1h |  |
| 2032 | 6.2 | **Дражжировка 2 линия 1 цех** | 0.25d | 2026-07-29 08:00 A | 2026-07-29 11:00 A |  | 100% |  |  |  |  | 2h | 2h |
| 2033 | 6.2.1 | установка трубки с отверстиями, эксперимент | 2h | 2026-07-29 08:00 A | 2026-07-29 11:00 A |  | 100% |  |  | start no earlier than 2026-07-29 08:00 | Тимофеев В | 2h | 2h |
| 2034 | 6.3 | **поточные весы на входе в барабан жира** | 0.12d | 2026-06-15 09:00 A | 2026-06-15 10:00 A |  | 100% |  |  |  |  | 1h | 1h |
| 2035 | 6.3.1 | запрос КП у НОТИС - весы с дозатором / бункеры | 1h | 2026-06-15 09:00 A | 2026-06-15 10:00 A |  | 100% |  |  | start no earlier than 2026-06-15 09:00 | Зорькин В | 1h | 1h |
| 2036 | 6.4 | **устройство загрузки в смесители** | 0.12d | 2026-03-31 09:00 | 2026-03-31 10:00 |  |  |  | 253.47d |  |  | 1h |  |
| 2037 | 6.4.1 | подбор оборудования, запрос КП | 1h | 2026-03-31 09:00 | 2026-03-31 10:00 |  |  |  | 253.47d | start no earlier than 2026-03-31 08:00 | Зорькин В | 1h |  |
| 2038 | 6.5 | **определить параметры сушки гранулы лаб испытанием** | 6d | 2024-09-09 09:00 A | 2024-09-16 18:00 A |  | 100% |  |  |  |  | 16h | 16h |
| 2039 | 6.5.1 | изучить метод материал, физ законы процесса сушки. | 4h | 2024-09-09 09:00 A | 2024-09-09 13:00 A |  | 100% |  |  | start no earlier than 2024-09-09 09:00 | Зорькин В | 4h | 4h |
| 2040 | 6.5.2 | Определить набор средств измерения и оборыдования для лаб работы. | 4h | 2024-09-09 14:00 A | 2024-09-09 18:00 A | 2039 | 100% |  |  | start no earlier than 2024-09-09 09:00 | Зорькин В | 4h | 4h |
| 2041 | 6.5.3 | разрабоать пошаговый план лаб работы сушки 1кг продукта в термошкафу | 4h | 2024-09-16 09:00 A | 2024-09-16 13:00 A | 2040 | 100% |  |  | start no earlier than 2024-09-16 09:00 | Зорькин В | 4h | 4h |
| 2042 | 6.5.4 | определить зависимость времени сушки от температуры и влажности среды. | 4h | 2024-09-16 14:00 A | 2024-09-16 18:00 A | 2041 | 100% |  |  | start no earlier than 2024-09-06 08:00 | Зорькин В | 4h | 4h |

| ID | WBS | Task | Type | Duration | Start | Finish | Predecessors | Complete | Remaining | Total slack | Constraint | Resources | Work | Actual work |
| --- | --- | --- | --- | --- | --- | --- | --- | --- | --- | --- | --- | --- | --- | --- |
| 2043 | 6.6 | **станция фильтрации гидролизат с еврокуба в промежут емкость. Фильтр + насос** |  | 27.25d | 2026-03-13 09:00 A | 2026-04-21 11:00 A |  | 100% |  |  |  |  | 8h | 8h |
| 2044 | 6.6.1 | составить схему размещения насос / фильтр |  | 1h | 2026-03-13 09:00 A | 2026-03-13 10:00 A |  | 100% |  |  | start no earlier than 2026-03-13 09:00 | Зорькин В | 1h | 1h |
| 2045 | 6.6.2 | заявка фильтр 5" коллона + фитинги РР |  | 1h | 2026-03-13 10:00 A | 2026-03-13 11:00 A | 2044 | 100% |  |  | start no earlier than 2026-03-12 08:00 | Зорькин В | 1h | 1h |
| 2046 | 6.6.3 | доставка |  | 10d | 2026-03-13 11:00 A | 2026-03-27 11:00 A | 2045 | 100% |  |  | start no earlier than 2026-03-12 08:00 |  |  |  |
| 2047 | 6.6.4 | сборка насосная станция с фильром в 1ц |  | 4h | 2026-04-20 09:00 A | 2026-04-20 13:00 A | 2046 | 100% |  |  | start no earlier than 2026-04-20 09:00 | Тимофеев В | 4h | 4h |
| 2048 | 6.6.5 | оформление протокол испытаний |  | 2h | 2026-04-21 09:00 A | 2026-04-21 11:00 A |  | 100% |  |  | start no earlier than 2026-04-21 09:00 | Зорькин В | 2h | 2h |
| 2049 | 6.7 | **тест форсунки на гидролизат фильтрованный гидролизат** |  | 95.25d | 2026-04-21 11:00 A | 2026-09-01 13:00 | 2043 | 72% | 26.28d | 143.09d |  |  | 19h | 15h |
| 2050 | 6.7.1 | подготовить переходник |  | 2h | 2026-04-21 11:00 A | 2026-04-21 13:00 A |  | 100% |  |  | start no earlier than 2026-03-12 08:00 | Тимофеев В | 2h | 2h |
| 2051 | 6.7.2 | тестирование разных форсунок |  | 2h | 2026-04-21 13:00 A | 2026-04-21 16:00 A | 2050 | 100% |  |  | start no earlier than 2026-03-12 08:00 | Тимофеев В; Зорькин В | 4h | 4h |
| 2052 | 6.7.3 | контроль наличия фитингов для подключения насосной фильтровальной станции к еврокубу |  | 30min | 2026-04-24 08:00 A | 2026-04-24 09:30 A |  | 100% |  |  | start no earlier than 2026-04-24 08:00 | Зорькин В; Тимофеев В | 1h | 1h |
| 2053 | 6.7.4 | тест - наполнить канистру с куба гидролизатом через станцию+фильтр |  | 2h | 2026-04-27 09:00 A | 2026-04-27 11:00 A |  | 100% |  |  | start no earlier than 2026-04-27 09:00 | Зорькин В; Тимофеев В | 3h | 3h |
| 2054 | 6.7.5 | фильтрованный гдз распылить форсунками штатным насосом - забивакет |  | 4h | 2026-05-13 09:00 A | 2026-05-13 13:00 A | 2053 | 100% |  |  | start no earlier than 2026-05-13 09:00 | Зорькин В; Тимофеев В | 5h | 5h |
| 2055 | 6.7.6 | проект распыление моторчиком |  | 4h | 2026-09-01 09:00 | 2026-09-01 13:00 |  |  |  | 143.09d | start no earlier than 2026-09-01 09:00 | Домоводов К | 4h |  |
| 2056 | 6.8 | **станция фильтраци куринный жир с еврокуба в промежут емкость. Насос + фильтр** |  | 36.75d? | 2026-03-05 09:00 A | 2026-04-24 16:00 A |  | 100% |  |  |  |  | 46h | 46h |
| 2057 | 6.8.1 | подбор производительный насос и фильтр для жира. Закачка с еврокуба, перекачка через фильтр |  | 1d? | 2026-03-05 09:00 A | 2026-03-05 18:00 A |  | 100% |  |  | start no earlier than 2026-03-05 09:00 | Домоводов К; Зорькин В | 16h | 16h |
| 2058 | 6.8.2 | заявка материалы |  | 1d? | 2026-03-06 09:00 A | 2026-03-06 18:00 A | 2057 | 100% |  |  | start no earlier than 2026-02-27 08:00 | Зорькин В | 8h | 8h |
| 2059 | 6.8.3 | тест насосной станцией с фильтром |  | 1d? | 2026-04-20 09:00 A | 2026-04-20 18:00 A |  | 100% |  |  | start no earlier than 2026-04-20 09:00 | Зорькин В; Тимофеев В | 16h | 16h |
| 2060 | 6.8.4 | сборка второй станции для жира на БГ11А |  | 6h | 2026-04-24 08:00 A | 2026-04-24 16:00 A |  | 100% |  |  | start no earlier than 2026-04-24 08:00 | Тимофеев В | 6h | 6h |
| 2061 | 6.9 | **мешалка гидролизата** |  | 131.12d | 2026-03-03 09:00 A | 2026-09-02 10:00 A |  | 100% |  |  |  |  | 37.08h | 37.08h |
| 2062 | 6.9.1 | определить диаметр вала / где инструкция? Выяснить |  | 20min | 2026-08-28 09:00 A | 2026-08-28 09:20 A |  | 100% |  |  | start no earlier than 2026-08-28 09:00 | Зорькин В | 0.33h | 0.33h |
| 2063 | 6.9.2 | согласовать договор /оплата счет |  | 1h | 2026-03-03 09:00 A | 2026-03-03 10:00 A |  | 100% |  |  | start no earlier than 2026-03-03 09:00 | Домоводов К | 1h | 1h |
| 2064 | 6.9.3 | доставка | milestone | 0d | 2026-08-10 08:00 A | 2026-08-10 08:00 A |  | 100% |  |  | start no earlier than 2026-08-10 08:00 |  |  |  |
| 2065 | 6.9.4 | планирование технологии работы / какие нужны доработки |  | 15min | 2026-08-12 09:00 A | 2026-08-12 09:15 A |  | 100% |  |  | start no earlier than 2026-08-12 09:00 | Домоводов К | 0.25h | 0.25h |
| 2066 | 6.9.5 | сборка и тест с операторами в 1ц. Можно приварить кронштейны под штабелер |  | 4h | 2026-08-12 09:00 A | 2026-08-12 13:00 A |  | 100% |  |  | start no earlier than 2026-08-12 09:00 | Макаревич А | 4h | 4h |
| 2067 | 6.9.6 | составить чертеж кронштейна |  | 1h | 2026-08-17 09:00 A | 2026-08-17 10:00 A |  | 100% |  |  | start no earlier than 2026-08-17 09:00 | Шуранов Ю | 1h | 1h |
| 2068 | 6.9.7 | заявка на лебедка |  | 15min | 2026-08-17 10:00 A | 2026-08-17 10:15 A | 2067 | 100% |  |  | start no earlier than 2026-08-14 09:00 | Шуранов Ю | 0.25h | 0.25h |
| 2069 | 6.9.8 | конроль доставки |  | 15min | 2026-08-22 10:15 A | 2026-08-24 09:15 A | 2068FS+5d | 100% |  |  | start no earlier than 2026-08-14 09:00 | Шуранов Ю | 0.25h | 0.25h |
| 2070 | 6.9.9 | монтаж лебедка |  | 6h | 2026-08-31 09:00 A | 2026-08-31 16:00 A | 2069FS+1d | 100% |  |  | start no earlier than 2026-08-31 09:00 | Некрасов А; Труфанов А | 12h | 12h |
| 2071 | 6.9.10 | монтаж кронштейн под лебедку |  | 6h | 2026-08-31 16:00 A | 2026-09-01 13:00 A | 2070 | 100% |  |  | start no earlier than 2026-08-31 09:00 | Некрасов А; Труфанов А | 12h | 12h |
| 2072 | 6.9.11 | Установить 3-х фазную вилку для мешалки рядом с частотником |  | 2h | 2026-08-31 08:00 A | 2026-08-31 11:00 A |  | 100% |  |  | start no earlier than 2026-08-31 08:00 | Дедов В | 2h | 2h |
| 2073 | 6.9.12 | Установить розетку для электротали, проложить кабель к розетке возле мухобойки |  | 3h | 2026-08-31 08:00 A | 2026-08-31 12:00 A |  | 100% |  |  | start no earlier than 2026-08-31 08:00 | Дедов В | 3h | 3h |
| 2074 | 6.9.13 | Подключить таль к розетке, проложить гофру |  | 1h | 2026-09-02 09:00 A | 2026-09-02 10:00 A |  | 100% |  |  | start no earlier than 2026-09-02 09:00 | Бундин В | 1h | 1h |

| ID | WBS | Task | Duration | Start | Finish | Predecessors | Complete | Remaining | Total slack | Constraint | Resources | Work | Actual work |
| --- | --- | --- | --- | --- | --- | --- | --- | --- | --- | --- | --- | --- | --- |
| 2075 | 6.10 | **качественное нанесение жира тесты** | 269.5d? | 2026-03-02 09:00 A | 2027-03-03 13:00 A |  | 100% |  |  |  |  | 2102h | 2102h |
| 2076 | 6.10.1 | **испытания форсунка 2х фазная 1ц** | 2.25d | 2026-03-02 09:00 A | 2026-03-04 11:00 A |  | 100% |  |  |  |  | 5.5h | 5.5h |
| 2077 | 6.10.1.1 | подготовить кронштейн крепления форсунки к конвейеру | 2h | 2026-03-02 09:00 A | 2026-03-02 11:00 A |  | 100% |  |  | start no earlier than 2026-03-02 09:00 | Тимофеев В | 2h | 2h |
| 2078 | 6.10.1.2 | подготовить пневморедуктор, временно с НОТИС 3ц | 1h | 2026-03-02 11:00 A | 2026-03-02 12:00 A | 2077 | 100% |  |  | start no earlier than 2026-02-27 08:00 | Тимофеев В | 1h | 1h |
| 2079 | 6.10.1.3 | подготовить фильтр 1шт | 30min | 2026-03-02 12:00 A | 2026-03-02 12:30 A | 2078 | 100% |  |  | start no earlier than 2026-02-27 08:00 | Тимофеев В | 0.5h | 0.5h |
| 2080 | 6.10.1.4 | Тест форсунки на жирах, скооперироваться с технологами | 2h | 2026-03-04 09:00 A | 2026-03-04 11:00 A |  | 100% |  |  | start no earlier than 2026-03-04 09:00 | Тимофеев В | 2h | 2h |
| 2081 | 6.10.2 | **монтаж форсунки в линию** | 261.5d? | 2026-03-11 09:00 A | 2027-03-03 13:00 A |  | 100% |  |  |  | Тимофеев В | 2096.5h | 2096.5h |
| 2082 | 6.10.2.1 | **тест однофазная форсунка** | 30.25d? | 2026-03-11 09:00 A | 2026-04-22 11:00 A |  | 100% |  |  |  |  | 52.5h | 52.5h |
| 2083 | 6.10.2.1.1 | заявка пневморедуктор, фитинги насос - кран - 3х ходовой | 30min | 2026-03-11 09:00 A | 2026-03-11 09:30 A |  | 100% |  |  | start no earlier than 2026-03-11 09:00 | Зорькин В | 0.5h | 0.5h |
| 2084 | 6.10.2.1.2 | проект рама для монтаж фильтров, редуктор, кронштейн форсунки | 1d? | 2026-03-11 09:30 A | 2026-03-12 09:30 A | 2083 | 100% |  |  | start no earlier than 2026-02-27 08:00 | Домоводов К | 8h | 8h |
| 2085 | 6.10.2.1.3 | доставка | 5d | 2026-03-30 09:00 A | 2026-04-03 18:00 A |  | 100% |  |  | start no earlier than 2026-03-30 09:00 | Карабанов | 40h | 40h |
| 2086 | 6.10.2.1.4 | сборка рама, покраска | 2h | 2026-04-22 09:00 A | 2026-04-22 11:00 A | 2084 | 100% |  |  | start no earlier than 2026-04-22 09:00 | Тимофеев В | 2h | 2h |
| 2087 | 6.10.2.1.5 | монтаж 0,3 форсунки | 2h | 2026-04-22 09:00 A | 2026-04-22 11:00 A | 2085 | 100% |  |  | start no earlier than 2026-04-22 09:00 | Тимофеев В | 2h | 2h |
| 2088 | 6.11 | **тест однофазная форсунка** | 0.02d | 2026-03-16 09:00 A | 2026-03-16 09:10 A |  | 100% |  |  |  |  | 0.17h | 0.17h |
| 2089 | 6.11.1 | получить счет | 10min | 2026-03-16 09:00 A | 2026-03-16 09:10 A |  | 100% |  |  | start no earlier than 2026-03-16 09:00 | Домоводов К | 0.17h | 0.17h |
| 2090 | 6.12 | **установить фильтры жир на 1 и 2 линию** | 71.25d | 2026-03-17 09:00 A | 2026-06-24 11:00 |  | 83% | 11.88d | 192.34d |  |  | 14h | 12h |
| 2091 | 6.12.1 | сборка система фильтров 2 фильтра на 2 линии подготовиь + рама | 4h | 2026-03-17 09:00 A | 2026-03-17 13:00 A |  | 100% |  |  | start no earlier than 2026-03-17 09:00 | Тимофеев В | 4h | 4h |
| 2092 | 6.12.2 | монтаж стационарно рама под фильтры | 4h | 2026-04-22 09:00 A | 2026-04-22 13:00 A | 2091 | 100% |  |  | start no earlier than 2026-04-22 09:00 | Тимофеев В | 4h | 4h |
| 2093 | 6.12.3 | калибровка PID регулятора подачи жира | 2h | 2026-05-13 09:00 A | 2026-05-13 11:00 A |  | 100% |  |  | start no earlier than 2026-05-13 09:00 | Зорькин В; Домоводов К | 4h | 4h |
| 2094 | 6.12.4 | подготовка для установить на 1 линию | 2h | 2026-06-24 09:00 | 2026-06-24 11:00 |  |  |  | 192.34d | start no earlier than 2026-06-24 09:00 | Тимофеев В | 2h |  |
| 2095 | 6.13 | **ТЕКО 0,4 или 1,5 поставить пленку с БЕСТРОМА 620мм** | 6.09d | 2026-03-13 09:00 A | 2026-03-23 09:45 A |  | 100% |  |  |  |  | 0.75h | 0.75h |
| 2096 | 6.13.1 | запрос возможности в ТЕКО | 30min | 2026-03-13 09:00 A | 2026-03-13 09:30 A |  | 100% |  |  | start no earlier than 2026-03-13 09:00 | Зорькин В | 0.5h | 0.5h |
| 2097 | 6.13.2 | контроль ответ | 15min | 2026-03-23 09:30 A | 2026-03-23 09:45 A | 2096FS+10d | 100% |  |  | start no earlier than 2026-03-12 08:00 | Зорькин В | 0.25h | 0.25h |
| 2098 | 6.14 | **фильера с вставками для 2ц** | 0.02d | 2025-02-21 09:00 A | 2025-02-21 09:10 A |  | 100% |  |  |  |  | 0.17h | 0.17h |
| 2099 | 6.14.1 | контроль изготовления | 10min | 2025-02-21 09:00 A | 2025-02-21 09:10 A |  | 100% |  |  | start no earlier than 2025-02-21 09:00 | Шуранов Ю | 0.17h | 0.17h |

| ID | WBS | Task | Duration | Start | Finish | Predecessors | Complete | Total slack | Free slack | Constraint | Resources | Work | Actual work |
| --- | --- | --- | --- | --- | --- | --- | --- | --- | --- | --- | --- | --- | --- |
| 2100 | 6.15 | **ручка для экструдера крутиьт мотор на 1 и 2 линию** | 138d? | 2024-08-09 09:00 | 2025-02-18 18:00 |  |  | 542.59d |  |  |  | 9h |  |
| 2101 | 6.15.1 | изготовление | 1d? | 2025-02-18 09:00 | 2025-02-18 18:00 |  |  | 542.59d |  | start no earlier than 2025-02-18 09:00 | Черепанов И | 8h |  |
| 2102 | 6.15.2 | составить чертежи / разместить изготовление | 1h | 2024-08-09 09:00 | 2024-08-09 10:00 |  |  | 680.47d |  | start no earlier than 2024-08-09 09:00 | Шуранов Ю | 1h |  |
| 2103 | 6.16 | **охлаждение шкафов управления печью 1 2 3 линия** | 5d? | 2024-04-18 09:00 | 2024-04-24 18:00 |  |  | 756.59d |  |  |  | 40h |  |
| 2104 | 6.16.1 | выбор и заявка кондиционеры для щитов управления | 1d? | 2024-04-18 09:00 | 2024-04-18 18:00 |  |  | 756.59d | 0d | start no earlier than 2024-04-18 09:00 | Домоводов К | 8h |  |
| 2105 | 6.16.2 | оплата / доставка | 1d? | 2024-04-19 09:00 | 2024-04-19 18:00 | 2104 |  | 756.59d | 0d | start no earlier than 2024-04-04 09:00 | Мультан | 8h |  |
| 2106 | 6.16.3 | монтаж | 3d | 2024-04-22 09:00 | 2024-04-24 18:00 | 2105 |  | 756.59d |  | start no earlier than 2024-04-11 09:00 | Некрасов А | 24h |  |
| 2107 | 6.17 | **подача гидролизат в смеситель насосом** | 25d? | 2024-03-25 09:00 | 2024-04-26 18:00 |  |  | 754.59d |  |  |  | 200h |  |
| 2108 | 6.17.1 | выбор насоса / заявка на насос | 1d? | 2024-03-25 09:00 | 2024-03-25 18:00 |  |  | 754.59d | 0d | start no earlier than 2024-03-25 09:00 | Домоводов К | 8h |  |
| 2109 | 6.17.2 | проректирование автоматика, монтажная часть / заявка | 1d? | 2024-03-26 09:00 | 2024-03-26 18:00 | 2108 |  | 754.59d | 0d | start no earlier than 2024-03-22 09:00 | Домоводов К | 8h |  |
| 2110 | 6.17.3 | поставка оборудования | 20d | 2024-03-27 09:00 | 2024-04-23 18:00 | 2109 |  | 754.59d | 0d | start no earlier than 2024-03-22 09:00 | Мультан | 160h |  |
| 2111 | 6.17.4 | монтаж электрика | 1d? | 2024-04-24 09:00 | 2024-04-24 18:00 | 2110 |  | 754.59d | 0d | start no earlier than 2024-03-22 09:00 | Некрасов А | 8h |  |
| 2112 | 6.17.5 | монтаж трубопровод | 1d? | 2024-04-25 09:00 | 2024-04-25 18:00 | 2111 |  | 754.59d | 0d | start no earlier than 2024-03-22 09:00 | Некрасов А | 8h |  |
| 2113 | 6.17.6 | монтаж автоматика | 1d? | 2024-04-26 09:00 | 2024-04-26 18:00 | 2112 |  | 754.59d |  | start no earlier than 2024-03-22 09:00 | Некрасов А | 8h |  |
| 2114 | 6.18 | **установить форсунки на подачу жир и гидролизат** | 106.38d | 2024-03-26 09:00 A | 2024-08-21 12:00 A |  | 100% |  |  |  |  | 187h | 187h |
| 2115 | 6.18.1 | выбор тип форсунок, заявка | 1d | 2024-03-26 09:00 A | 2024-03-26 18:00 A |  | 100% |  |  | start no earlier than 2024-03-26 09:00 | Домоводов К | 8h | 8h |
| 2116 | 6.18.2 | проректирование / заявка на пневматику и электрику для управления форсунками | 1d | 2024-03-27 09:00 A | 2024-03-27 18:00 A | 2115 | 100% |  |  | start no earlier than 2024-03-22 09:00 | Домоводов К | 8h | 8h |
| 2117 | 6.18.3 | тех решение / чертеж крепления форсунок | 1d | 2024-03-28 09:00 A | 2024-03-28 18:00 A | 2116 | 100% |  |  | start no earlier than 2024-03-22 09:00 | Домоводов К | 8h | 8h |
| 2118 | 6.18.4 | доставка | 20d | 2024-03-29 09:00 A | 2024-04-25 18:00 A | 2115, 2117 | 100% |  |  | start no earlier than 2024-03-22 09:00 | Мультан | 160h | 160h |
| 2119 | 6.18.5 | монтаж механника | 2h | 2024-08-21 09:00 A | 2024-08-21 11:00 A | 2118 | 100% |  |  | start no earlier than 2024-08-21 09:00 | Тимофеев В | 2h | 2h |
| 2120 | 6.18.6 | монтаж пневматика | 1h | 2024-08-21 11:00 A | 2024-08-21 12:00 A | 2119 | 100% |  |  | start no earlier than 2024-03-22 09:00 | Тимофеев В | 1h | 1h |
| 2121 | 6.19 | **модернизация откидной воронка загрузки в барабан дрожировки** | 10.62d | 2024-05-14 09:00 A | 2024-05-28 15:00 A |  | 100% |  |  |  |  | 89h | 89h |
| 2122 | 6.19.1 | составить эскиз / заказ шарниры (при остановке экструдера) | 1h | 2024-05-14 09:00 A | 2024-05-14 10:00 A |  | 100% |  |  | start no earlier than 2024-05-14 09:00 | Шуранов Ю | 1h | 1h |
| 2123 | 6.19.2 | доставка | 10d | 2024-05-14 10:00 A | 2024-05-28 10:00 A | 2122 | 100% |  |  | start no earlier than 2024-03-14 09:00 | Мультан | 80h | 80h |
| 2124 | 6.19.3 | монгтаж | 4h | 2024-05-28 10:00 A | 2024-05-28 15:00 A | 2123 | 100% |  |  | start no earlier than 2024-05-14 09:00 | Макаревич А; Некрасов А | 8h | 8h |
| 2125 | 6.20 | модернизация ножевого узла | 1d? | 2023-12-28 09:00 | 2023-12-28 18:00 |  |  | 840.59d |  | start no earlier than 2023-12-28 09:00 |  |  |  |

| ID | WBS | Task | Duration | Start | Finish | Predecessors | Complete | Remaining | Total slack | Free slack | Constraint | Resources | Work | Actual work |
| --- | --- | --- | --- | --- | --- | --- | --- | --- | --- | --- | --- | --- | --- | --- |
| 2126 | 6.21 | **модернизация дозации воды в прекондиционер** | 0.62d | 2023-12-25 09:00 A | 2023-12-25 15:00 A |  | 100% |  |  |  |  |  | 5h | 5h |
| 2127 | 6.21.1 | установить балансировочный кран 2 линия | 1h | 2023-12-25 09:00 A | 2023-12-25 10:00 A |  | 100% |  |  |  | start no earlier than 2023-12-25 09:00 | Дедов В | 1h | 1h |
| 2128 | 6.21.2 | установить расходомер 2 линия | 2h | 2023-12-25 10:00 A | 2023-12-25 12:00 A | 2127 | 100% |  |  |  | start no earlier than 2023-12-20 09:00 | Дедов В | 2h | 2h |
| 2129 | 6.21.3 | установить расходомер 2 линия | 2h | 2023-12-25 12:00 A | 2023-12-25 15:00 A | 2128 | 100% |  |  |  | start no earlier than 2023-12-20 09:00 | Дедов В | 2h | 2h |
| 2130 | 6.22 | **заменить шланг на высоктемпературный на жир** | 1.62d? | 2024-05-14 09:00 A | 2024-05-15 15:00 A |  | 100% |  |  |  |  |  | 13h | 13h |
| 2131 | 6.22.1 | заявка / подбор | 1h | 2024-05-14 09:00 A | 2024-05-14 10:00 A |  | 100% |  |  |  | start no earlier than 2024-05-14 09:00 | Шуранов Ю | 1h | 1h |
| 2132 | 6.22.2 | доставка | 1d? | 2024-05-14 10:00 A | 2024-05-15 10:00 A | 2131 | 100% |  |  |  | start no earlier than 2023-12-13 08:00 | Малинина М | 8h | 8h |
| 2133 | 6.22.3 | замена | 4h | 2024-05-15 10:00 A | 2024-05-15 15:00 A | 2132 | 100% |  |  |  | start no earlier than 2024-01-15 09:00 | Тимофеев В | 4h | 4h |
| 2134 | 6.23 | **тепловая защита электромоторов мехнизмов** | 108.75d | 2023-12-28 09:00 A | 2024-05-28 16:00 |  | 2% | 106.58d | 732.84d |  |  |  | 100h | 2h |
| 2135 | 6.23.1 | **составить список эл моторов (нужен ток ) без теплового реле - от вибросита - до упаковки вся технология** | 75.25d | 2024-01-30 09:00 A | 2024-05-14 11:00 |  | 17% | 62.71d | 743.34d |  |  |  | 12h | 2h |
| 2136 | 6.23.1.1 | 5 цех | 2h | 2024-01-30 09:00 A | 2024-01-30 11:00 A |  | 100% |  |  |  | start no earlier than 2024-01-30 09:00 | Дедов В | 2h | 2h |
| 2137 | 6.23.1.2 | 1 цех | 4h | 2024-01-30 09:00 | 2024-01-30 13:00 |  |  |  | 818.09d |  | start no earlier than 2024-01-30 09:00 | Дедов В | 4h |  |
| 2138 | 6.23.1.3 | 2 цех | 4h | 2024-01-30 09:00 | 2024-01-30 13:00 |  |  |  | 818.09d |  | start no earlier than 2024-01-30 09:00 | Дедов В | 4h |  |
| 2139 | 6.23.1.4 | заполнитьт таблицу для заявки место-двиг-ток | 2h | 2024-05-14 09:00 | 2024-05-14 11:00 |  |  |  | 743.34d |  | start no earlier than 2024-05-14 09:00 | Шуранов Ю | 2h |  |
| 2140 | 6.23.2 | переписать список мотор-редукторов | 2h | 2023-12-28 09:00 | 2023-12-28 11:00 |  |  |  | 829.59d | 96.75d | start no earlier than 2023-12-28 09:00 | Дедов В | 2h |  |
| 2141 | 6.23.3 | заявка тепл реле | 2h | 2024-05-14 09:00 | 2024-05-14 11:00 | 2140FS+1d |  |  | 732.84d | 0d | start no earlier than 2024-05-14 09:00 | Шуранов Ю | 2h |  |
| 2142 | 6.23.4 | дост авка | 10d | 2024-05-14 11:00 | 2024-05-28 11:00 | 2141 |  |  | 732.84d | 0d | start no earlier than 2023-12-13 08:00 | Малинина М | 80h |  |
| 2143 | 6.23.5 | монтаж конвейер 2ц | 2h | 2024-05-28 11:00 | 2024-05-28 13:00 | 2141, 2142 |  |  | 732.84d | 0d | start no earlier than 2024-01-19 09:00 | Дедов В | 2h |  |
| 2144 | 6.23.6 | монтаж составить список | 2h | 2024-05-28 14:00 | 2024-05-28 16:00 | 2143 |  |  | 732.84d |  | start no earlier than 2023-12-13 08:00 | Домоводов К | 2h |  |
| 2145 | 6.24 | **устройство контроля уровня сырья в большом бункере** | 14.03d | 2023-08-16 09:00 A | 2023-09-05 09:15 |  |  | 14d | 923.56d |  |  |  | 192.25h | 0.25h |
| 2146 | 6.24.1 | заявка на датчик | 15min | 2023-08-16 09:00 A | 2023-08-16 09:15 A |  | 100% |  |  |  | start no earlier than 2023-08-14 09:00 | Лобанов И | 0.25h | 0.25h |
| 2147 | 6.24.2 | доставка | 10d | 2023-08-16 09:15 | 2023-08-30 09:15 | 2146 |  |  | 923.56d | 0d | start no earlier than 2023-03-10 09:00 | Малинина М; Домоводов К | 160h |  |
| 2148 | 6.24.3 | выполнение монажных работ | 4d | 2023-08-30 09:15 | 2023-09-05 09:15 | 2147 |  |  | 923.56d |  | start no earlier than 2023-03-10 09:00 | Подрядчик | 32h |  |
| 2149 | 6.25 | **конвейер с охладителя регулировка ленты - модернизация** | 6.25d | 2024-05-14 09:00 A | 2024-05-22 11:00 A |  | 100% |  |  |  |  |  | 50h | 50h |
| 2150 | 6.25.1 | выбор и заявка натяжные буксы | 2h | 2024-05-14 09:00 A | 2024-05-14 11:00 A |  | 100% |  |  |  | start no earlier than 2024-05-14 09:00 | Шуранов Ю | 2h | 2h |
| 2151 | 6.25.2 | доставка | 5d | 2024-05-14 11:00 A | 2024-05-21 11:00 A | 2150 | 100% |  |  |  | start no earlier than 2023-10-30 09:00 | Малинина М | 40h | 40h |
| 2152 | 6.25.3 | монтаж | 1d | 2024-05-21 11:00 A | 2024-05-22 11:00 A | 2151 | 100% |  |  |  | start no earlier than 2023-12-01 09:00 | Тимофеев В | 8h | 8h |

| ID | WBS | Task | Duration | Start | Finish | Predecessors | Complete | Remaining | Actual start | Total slack | Free slack | Constraint | Resources | Work | Actual work |
| --- | --- | --- | --- | --- | --- | --- | --- | --- | --- | --- | --- | --- | --- | --- | --- |
| 2153 | 6.26 | **прекондиционер забивается отслоением слипшегося сырья** | 204d? | 2023-08-03 09:00 | 2024-05-14 18:00 |  |  |  |  | 0d |  |  |  | 24h |  |
| 2154 | 6.26.1 | **решение тех совет** | 1d? | 2023-08-03 09:00 | 2023-08-03 18:00 |  |  |  |  |  |  |  |  | 24h |  |
| 2155 | 6.26.1.1 | вар1 - доп лопатки на выходе | 1d? | 2024-05-14 09:00 | 2024-05-14 18:00 |  |  |  |  | 742.59d |  | start no earlier than 2024-05-14 09:00 | Шуранов Ю | 8h |  |
| 2156 | 6.26.1.2 | вар 2 - вертикальные ворошители | 1d? | 2024-05-14 09:00 | 2024-05-14 18:00 |  |  |  |  | 742.59d |  | start no earlier than 2024-05-14 09:00 | Шуранов Ю | 8h |  |
| 2157 | 6.26.1.3 | вар 3 - подача пара | 1d? | 2024-05-14 09:00 | 2024-05-14 18:00 |  |  |  |  | 742.59d |  | start no earlier than 2024-05-14 09:00 | Шуранов Ю | 8h |  |
| 2158 | 6.27 | **фильтры на баки жиров перед насосами** | 439.12d | 2023-07-20 09:00 A | 2025-03-26 10:00 A |  | 100% |  |  |  |  |  |  | 4.75h | 4.75h |
| 2159 | 6.27.1 | утвердить тех решение | 1h | 2023-07-20 09:00 A | 2023-07-20 10:00 A |  | 100% |  |  |  |  | start no earlier than 2023-07-20 09:00 | Лобанов И; Домоводов К; Сапелин С | 3h | 3h |
| 2160 | 6.27.2 | купить сетку в корпусе | 30min | 2024-05-14 09:00 A | 2024-05-14 09:30 A |  | 100% |  |  |  |  | start no earlier than 2024-05-14 09:00 | Шуранов Ю | 0.5h | 0.5h |
| 2161 | 6.27.3 | купить 1/2 муфта для установки фитингов | 15min | 2025-03-26 09:00 A | 2025-03-26 09:15 A |  | 100% |  |  |  |  | start no earlier than 2025-03-26 08:00 | Шуранов Ю | 0.25h | 0.25h |
| 2162 | 6.27.4 | проверка фитингов | 1h | 2025-03-26 09:00 A | 2025-03-26 10:00 A |  | 100% |  |  |  |  | start no earlier than 2025-03-26 08:00 | Зорькин В | 1h | 1h |
| 2163 | 6.28 | **защита редутора шнеков при отказе маслянного насоса** | 20.12d? | 2023-08-02 09:00 | 2023-08-30 10:00 |  | 33% | 13.52d? | 2023-07-28 09:00 |  |  |  |  | 126.5h | 41.5h |
| 2164 | 6.28.1 | поиск фитинг для замера реле давления | 30min | 2023-07-28 09:00 A | 2023-07-28 09:30 A |  | 100% |  |  |  |  | start no earlier than 2023-07-28 09:00 | Тимофеев В | 0.5h | 0.5h |
| 2165 | 6.28.2 | заявка на фитинг | 1h | 2023-07-31 09:00 A | 2023-07-31 10:00 A | 2164 | 100% |  |  |  |  | start no earlier than 2023-07-31 09:00 | Лобанов И | 1h | 1h |
| 2166 | 6.28.3 | доставка | 5d | 2023-07-31 10:00 A | 2023-08-07 10:00 A | 2165 | 100% |  |  |  |  | start no earlier than 2023-07-31 09:00 | Малинина М | 40h | 40h |
| 2167 | 6.28.4 | заявка реле потока 1/2 или 3/4 | 1h | 2026-03-19 09:00 | 2026-03-19 10:00 |  |  |  |  | 250.97d | 0d | start no earlier than 2026-03-19 09:00 | Шуранов Ю | 1h |  |
| 2168 | 6.28.5 | доставка | 10d | 2026-03-19 10:00 | 2026-04-02 10:00 | 2167 |  |  |  | 250.97d | 1.88d | start no earlier than 2026-03-12 08:00 | Карабанов | 80h |  |
| 2169 | 6.28.6 | монтаж гидравлика | 2h | 2026-04-06 09:00 | 2026-04-06 11:00 | 2168 |  |  |  | 249.09d | 0d | start no earlier than 2026-04-06 09:00 | Тимофеев В | 2h |  |
| 2170 | 6.28.7 | монтаж электрика схема защиты + привязка к частотному приводу | 2h | 2026-04-06 11:00 | 2026-04-06 13:00 | 2169 |  |  |  | 249.09d |  | start no earlier than 2023-07-20 09:00 | Тимофеев В | 2h |  |
| 2171 | 6.29 | **подача сырья в упаковщки 1 цех** | 199.5d? | 2023-06-07 09:00 A | 2024-03-12 13:00 |  | 12% | 175.32d? |  | 788.09d |  |  |  | 37h | 8h |
| 2172 | 6.29.1 | испытание пневмотранспорта напорная магистраль | 4h | 2024-03-12 09:00 A | 2024-03-12 13:00 A |  | 100% |  |  |  |  | start no earlier than 2024-03-12 09:00 | Бобренок В; Некрасов А | 8h | 8h |
| 2173 | 6.29.2 | технологическая схема подачи продукта в упаковщики | 1d? | 2023-06-19 09:00 | 2023-06-19 18:00 |  |  |  |  | 978.59d |  | start no earlier than 2023-06-19 09:00 | Технолог | 8h |  |
| 2174 | 6.29.3 | поиск / запрорс цен на диверторы | 2h | 2023-06-07 09:00 | 2023-06-07 11:00 |  |  |  |  | 984.97d | 0d | start no earlier than 2023-06-07 09:00 | Домоводов К | 2h |  |
| 2175 | 6.29.4 | поиск / запрос цены на эжекторный приемник | 2h | 2023-06-07 11:00 | 2023-06-07 13:00 | 2174 |  |  |  | 984.97d | 0d | start no earlier than 2023-05-10 08:00 | Домоводов К | 2h |  |
| 2176 | 6.29.5 | расчет трассы | 2d | 2023-06-07 14:00 | 2023-06-09 13:00 | 2175 |  |  |  | 984.97d | 0d | start no earlier than 2023-05-10 08:00 | Домоводов К | 16h |  |
| 2177 | 6.29.6 | подбор приобритение вентилятора | 1h | 2023-06-09 14:00 | 2023-06-09 15:00 | 2176 |  |  |  | 984.97d |  | start no earlier than 2023-04-27 09:00 | Домоводов К | 1h |  |

| ID | WBS | Task | Type | Duration | Start | Finish | Predecessors | Complete | Remaining | Total slack | Free slack | Constraint | Resources | Work | Actual work |
| --- | --- | --- | --- | --- | --- | --- | --- | --- | --- | --- | --- | --- | --- | --- | --- |
| 2178 | 6.30 | **защита тэн печи при отключении вентиляторов** |  | 160.25d? | 2023-06-09 09:00 | 2024-01-19 11:00 |  |  |  | 825.34d |  |  |  | 66h |  |
| 2179 | 6.30.1 | устиановить защиту на пускателе 380 1 линия |  | 2h | 2024-01-19 09:00 | 2024-01-19 11:00 |  |  |  | 825.34d |  | start no earlier than 2024-01-19 09:00 | Тимофеев В | 2h |  |
| 2180 | 6.30.2 | составить схему защиты |  | 1d? | 2023-06-09 09:00 | 2023-06-09 18:00 |  |  |  | 977.59d | 0d | start no earlier than 2023-06-09 09:00 | Домоводов К | 8h |  |
| 2181 | 6.30.3 | заявка |  | 1d? | 2023-06-12 09:00 | 2023-06-12 18:00 | 2180 |  |  | 977.59d | 0d | start no earlier than 2023-04-25 09:00 | Домоводов К | 8h |  |
| 2182 | 6.30.4 | оплата поставка |  | 5d | 2023-06-13 09:00 | 2023-06-19 18:00 | 2181 |  |  | 977.59d | 5d | start no earlier than 2023-05-02 09:00 | Малинина М | 40h |  |
| 2183 | 6.30.5 | сборка и монтаж |  | 1d? | 2023-06-27 09:00 | 2023-06-27 18:00 | 2182 |  |  | 972.59d |  | start no earlier than 2023-06-27 09:00 | Бобренок В | 8h |  |
| 2184 | 6.31 | Настройка даты на пробнике, нужно приподнять на 3-5 мм (ждем решение технологов, информация поменялась, читать письмо от 01.09.2026) |  | 3h | 2026-09-03 09:00 A | 2026-09-03 12:00 A |  | 100% |  |  |  | start no earlier than 2026-09-03 09:00 | Тимофеев В | 3h | 3h |
| 2185 | 7 | **техника** |  | 637.03d? | 2024-05-14 09:00 A | 2026-10-13 09:15 |  | 98% | 14.88d? | 106.56d |  |  |  | 52.5h | 51.25h |
| 2186 | 7.1 | не заводится TRF, сломана шпилька колесо. Контроль приезда приемка работ |  | 1h | 2026-08-17 09:00 A | 2026-08-17 10:00 A |  | 100% |  |  |  | start no earlier than 2026-08-17 09:00 | Шуранов Ю | 1h | 1h |
| 2187 | 7.2 | **капремонт погрузчика коматсу короткий** |  | 50.03d | 2026-08-13 09:00 A | 2026-10-13 09:15 |  | 91% | 4.55d | 106.56d |  |  |  | 2.75h | 2.5h |
| 2188 | 7.2.1 | заявка получить цену в тракресурс |  | 15min | 2026-08-13 09:00 A | 2026-08-13 09:15 A |  | 100% |  |  |  | start no earlier than 2026-08-13 09:00 | Домоводов К | 0.25h | 0.25h |
| 2189 | 7.2.2 | заявка получить цену в форклифт |  | 15min | 2026-08-13 09:15 A | 2026-08-13 09:30 A | 2188 | 100% |  |  |  | start no earlier than 2026-08-13 09:00 | Домоводов К | 0.25h | 0.25h |
| 2190 | 7.2.3 | получить КП 2 | milestone | 0d | 2026-08-17 09:00 A | 2026-08-17 09:00 A |  | 100% |  |  |  | start no earlier than 2026-08-17 09:00 | Домоводов К |  |  |
| 2191 | 7.2.4 | решение о дате | milestone | 0d | 2026-09-07 09:00 A | 2026-09-07 09:00 A | 2189FS+1d | 100% |  |  |  | start no earlier than 2026-09-07 09:00 | Домоводов К |  |  |
| 2192 | 7.2.5 | орг отправить погрузчик в ремонт / составить акт |  | 2h | 2026-09-01 09:00 A | 2026-09-01 11:00 A | 2189, 2191FS+1d | 100% |  |  |  | start no earlier than 2026-08-26 09:00 | Шуранов Ю | 2h | 2h |
| 2193 | 7.2.6 | контроль сроков ремонта |  | 15min | 2026-10-13 09:00 | 2026-10-13 09:15 | 2192FS+20d |  |  | 106.56d |  | start no earlier than 2026-10-13 09:00 | Зорькин В | 0.25h |  |
| 2194 | 7.3 | заказать по комплекту воздушных фильтров для погрузчиков |  | 1h | 2026-08-18 09:00 A | 2026-08-18 10:00 A |  | 100% |  |  |  | start no earlier than 2026-08-18 09:00 | Шуранов Ю | 1h | 1h |
| 2195 | 7.4 | провкрить моточасы для проведения ТО |  | 1h | 2026-08-18 09:00 A | 2026-08-18 10:00 A |  | 100% |  |  |  | start no earlier than 2026-08-18 09:00 | Шуранов Ю | 1h | 1h |
| 2196 | 7.5 | не заводиться trf погрузчик, посмотреть подачу топлива |  | 1h | 2026-05-25 08:00 A | 2026-05-25 10:00 A |  | 100% |  |  |  | start no earlier than 2026-05-25 08:00 | Тимофеев В; Шуранов Ю | 2h | 2h |
| 2197 | 7.6 | ТО карбюратора ТРФ организовать |  | 1h | 2026-05-27 09:00 A | 2026-05-27 10:00 A |  | 100% |  |  |  | start no earlier than 2026-05-27 09:00 | Шуранов Ю | 1h | 1h |
| 2198 | 7.7 | ренгулировка ремня погрузчик желтый №209490 контроль |  | 1h | 2026-05-14 09:00 A | 2026-05-14 10:00 A |  | 100% |  |  |  | start no earlier than 2026-05-14 09:00 | Шуранов Ю | 1h | 1h |
| 2199 | 7.8 | ремонт генераторов -найти фирму |  | 1d? | 2026-05-07 09:00 A | 2026-05-07 18:00 A |  | 100% |  |  |  | start no earlier than 2026-05-07 09:00 | Шуранов Ю | 8h | 8h |
| 2200 | 7.9 | греется мотор сменный погрузчик (вероятно помпа). Орг визит |  | 15min | 2026-04-27 09:00 A | 2026-04-27 09:15 A |  | 100% |  |  |  | start no earlier than 2026-04-27 08:00 | Шуранов Ю | 0.25h | 0.25h |
| 2201 | 7.10 | установить вентиляторы на погрузчики |  | 2h | 2026-04-27 08:00 A | 2026-04-27 11:00 A |  | 100% |  |  |  | start no earlier than 2026-04-27 08:00 | Тимофеев В | 2h | 2h |
| 2202 | 7.11 | заменить шланги гидравлики погрузчик ТРФ |  | 1d? | 2026-04-21 09:00 A | 2026-04-21 18:00 A |  | 100% |  |  |  | start no earlier than 2026-04-21 09:00 |  |  |  |
| 2203 | 7.12 | пригласить тракресурс |  | 1h | 2026-04-21 09:00 A | 2026-04-21 10:00 A |  | 100% |  |  |  | start no earlier than 2026-04-21 09:00 | Шуранов Ю | 1h | 1h |
| 2204 | 7.13 | проварить ковш трактора в слесарке |  | 4h | 2026-03-24 08:00 A | 2026-03-24 13:00 A |  | 100% |  |  |  | start no earlier than 2026-03-24 08:00 | Бобренок В | 4h | 4h |
| 2205 | 7.14 | контроль доставки / приемка погрузчи коматсу |  | 1h | 2026-03-13 09:00 A | 2026-03-13 10:00 A |  | 100% |  |  |  | start no earlier than 2026-03-13 09:00 | Шуранов Ю | 1h | 1h |
| 2206 | 7.15 | ремонт штабелер 5 цех ролик и опрное колесо. Контроль |  | 30min | 2026-03-13 09:00 A | 2026-03-13 09:30 A |  | 100% |  |  |  | start no earlier than 2026-03-13 09:00 | Шуранов Ю | 0.5h | 0.5h |
| 2207 | 7.16 | ремонт ковш трактор |  | 6h | 2026-03-03 09:00 A | 2026-03-03 16:00 A |  | 100% |  |  |  | start no earlier than 2026-03-03 08:00 | Некрасов А; Труфанов А | 12h | 12h |

| ID | WBS | Task | Type | Duration | Start | Finish | Predecessors | Complete | Remaining | Total slack | Constraint | Resources | Work | Actual work |
| --- | --- | --- | --- | --- | --- | --- | --- | --- | --- | --- | --- | --- | --- | --- |
| 2208 | 7.17 | **ремонт цепи желтый вилочный + ручник** |  | 0.16d | 2025-07-28 09:00 A | 2025-07-28 10:15 A |  | 100% |  |  |  |  | 1.25h | 1.25h |
| 2209 | 7.17.1 | контроль даты визита |  | 15min | 2025-07-28 09:00 A | 2025-07-28 09:15 A |  | 100% |  |  | start no earlier than 2025-07-28 09:00 | Шуранов Ю | 0.25h | 0.25h |
| 2210 | 7.17.2 | ремонт контроль \принять работы |  | 1h | 2025-07-28 09:15 A | 2025-07-28 10:15 A | 2209 | 100% |  |  | start no earlier than 2025-07-23 09:00 | Шуранов Ю | 1h | 1h |
| 2211 | 7.18 | реморнт педаль газ на 3d принтере |  | 1h | 2025-07-23 09:00 A | 2025-07-23 10:00 A |  | 100% |  |  | start no earlier than 2025-07-23 09:00 | Шуранов Ю | 1h | 1h |
| 2212 | 7.19 | реморнт педаль газ на 3d принтере |  | 1h | 2026-09-01 09:00 | 2026-09-01 10:00 |  |  |  | 143.47d | start no earlier than 2026-09-01 09:00 | Домоводов К | 1h |  |
| 2213 | 7.20 | ТО штабелеры кайтымовская орг |  | 1h | 2025-07-23 09:00 A | 2025-07-23 10:00 A |  | 100% |  |  | start no earlier than 2025-07-23 09:00 | Шуранов Ю | 1h | 1h |
| 2214 | 7.21 | заявка доводчик двери желт коматсу |  | 15min | 2024-05-14 09:00 A | 2024-05-14 09:15 A |  | 100% |  |  | start no earlier than 2024-05-14 09:00 | Шуранов Ю | 0.25h | 0.25h |
| 2215 | 7.22 | **ошибка 02а22 штабелер PS16N 414** |  | 0.12d | 2024-05-14 09:00 A | 2024-05-14 10:00 A |  | 100% |  |  |  |  | 1h | 1h |
| 2216 | 7.22.1 | составить рекламацию / вызов специалистов |  | 1h | 2024-05-14 09:00 A | 2024-05-14 10:00 A |  | 100% |  |  | start no earlier than 2024-05-14 09:00 | Шуранов Ю | 1h | 1h |
| 2217 | 7.23 | **неисправна кнопка стоп штабелер 5 цех** |  | 0.19d | 2024-05-14 09:00 A | 2024-05-14 10:30 A |  | 100% |  |  |  |  | 1.5h | 1.5h |
| 2218 | 7.23.1 | орг работы по замене калеса штабелера |  | 1h | 2024-05-14 09:00 A | 2024-05-14 10:00 A |  | 100% |  |  | start no earlier than 2024-05-14 09:00 | Шуранов Ю | 1h | 1h |
| 2219 | 7.23.2 | орг забор штабелера на ремонт гидроциондра. Договор с сервисной компанией о дате, обменть штабелер с 2 цеха |  | 30min | 2024-05-14 10:00 A | 2024-05-14 10:30 A | 2218 | 100% |  |  | start no earlier than 2024-05-14 09:00 | Шуранов Ю | 0.5h | 0.5h |
| 2220 | 7.24 | **ремонт стеклоочиститель вилочного** |  | 0.5d | 2024-05-14 09:00 A | 2024-05-14 13:00 A |  | 100% |  |  |  |  | 5h | 5h |
| 2221 | 7.24.1 | осмотр механизма чтто сломалось |  | 4h | 2024-05-14 09:00 A | 2024-05-14 13:00 A |  | 100% |  |  | start no earlier than 2024-05-14 09:00 | Шуранов Ю | 4h | 4h |
| 2222 | 7.24.2 | заявка на покупку стеклоочист |  | 1h | 2024-05-14 09:00 A | 2024-05-14 10:00 A |  | 100% |  |  | start no earlier than 2024-05-14 09:00 | Шуранов Ю | 1h | 1h |
| 2223 | 7.25 | купить ремень на генератор |  | 2h | 2024-05-14 09:00 A | 2024-05-14 11:00 A |  | 100% |  |  | start no earlier than 2024-05-14 09:00 | Шуранов Ю | 2h | 2h |
| 2224 | 8 | **Лаборатория** |  | 0.06d | 2026-04-20 09:00 A | 2026-04-20 09:30 A |  | 100% |  |  |  |  | 1h | 1h |
| 2225 | 8.1 | Отнести старый бульбулятор в архив |  | 30min | 2026-04-20 09:00 A | 2026-04-20 09:30 A |  | 100% |  |  | start no earlier than 2026-04-20 09:00 | Тимофеев В | 0.5h | 0.5h |
| 2226 | 8.2 | Отнести короб от нового бульбулятора тоже в архив |  | 30min | 2026-04-20 09:00 A | 2026-04-20 09:30 A |  | 100% |  |  | start no earlier than 2026-04-20 09:00 | Тимофеев В | 0.5h | 0.5h |
| 2227 | 9 | **слесарное помещение** |  | 88.38d? | 2026-06-11 09:00 A | 2026-10-02 12:00 |  | 76% | 20.89d? | 113.22d |  |  | 31.5h | 21h |
| 2228 | 9.1 | Разбор полок на стеллаже, наведенеие порядка |  | 3h | 2026-10-02 09:00 | 2026-10-02 12:00 |  |  |  | 113.22d | start no earlier than 2026-10-02 09:00 | Некрасов А; Труфанов А | 6h |  |
| 2229 | 9.2 | Ремонт электродов парогенератора |  | 3h | 2026-09-28 09:00 | 2026-09-28 12:00 |  |  |  | 117.22d | start no earlier than 2026-09-28 08:00 | Бобренок В | 3h |  |
| 2230 | 9.3 | **уборка и сортировка. Приготовить, дневные проверят и продолжат** |  | 3.25d | 2026-09-22 09:00 A | 2026-09-25 11:00 A |  | 100% |  |  |  |  | 9h | 9h |
| 2231 | 9.3.1 | освободить стеллаж для оперативного хранения с ФИО |  | 1h | 2026-09-22 16:00 A | 2026-09-22 17:00 A | 2234 | 100% |  |  | start no earlier than 2026-09-22 09:00 | Макаревич А | 1h | 1h |
| 2232 | 9.3.2 | куча №1 - не годное на выброс |  | 2h | 2026-09-22 09:00 A | 2026-09-22 11:00 A |  | 100% |  |  | start no earlier than 2026-09-22 09:00 | Макаревич А | 2h | 2h |
| 2233 | 9.3.3 | куча №2 - годное, но хранить нужно на дальних складах |  | 2h | 2026-09-22 11:00 A | 2026-09-22 13:00 A | 2232 | 100% |  |  | start no earlier than 2026-09-21 09:00 | Макаревич А | 2h | 2h |
| 2234 | 9.3.4 | куча №3 - не понятно где хранить. |  | 2h | 2026-09-22 14:00 A | 2026-09-22 16:00 A | 2233 | 100% |  |  | start no earlier than 2026-09-18 08:00 | Макаревич А | 2h | 2h |
| 2235 | 9.3.5 | сортировка и перемещение мусор / металлолм/ дальние стеллажи |  | 2h | 2026-09-25 09:00 A | 2026-09-25 11:00 A |  | 100% |  |  | start no earlier than 2026-09-25 09:00 | Бундин В | 2h | 2h |
| 2236 | 9.4 | отвезти паллет возле слесарки в синий | manual | 1h | 2026-08-30 09:00 A | 2026-08-30 10:00 A |  | 100% |  |  | start no earlier than 2026-08-30 09:00 | Бундин В | 1h | 1h |
| 2237 | 9.5 | заварить хомут от деко 5 ц. |  | 2h | 2026-07-02 09:00 A | 2026-07-02 11:00 A |  | 100% |  |  | start no earlier than 2026-07-02 09:00 | Тимофеев В | 2h | 2h |
| 2238 | 9.6 | доставить временно наш компрессор на 3 склад для обдува погрузчиков | manual | 1h | 2026-06-29 09:00 A | 2026-06-29 10:00 A |  | 100% |  |  | start no earlier than 2026-06-29 09:00 | Тимофеев В | 1h | 1h |
| 2239 | 9.7 | ремонт 2-х ручных запайщиков- запчасти на складе (нагревательные блоки, тены) | manual | 2h | 2026-06-27 09:00 A | 2026-06-27 11:00 A |  | 100% |  |  | start no earlier than 2026-06-27 09:00 | Дедов В | 2h | 2h |
| 2240 | 9.8 | оставляем порядок после своей смены в слесарке |  | 0.5h | 2026-06-12 09:00 | 2026-06-12 09:30 |  |  |  | 200.53d | start no earlier than 2026-06-12 09:00 | Дедов В; Бобренок В; Бундин В | 1.5h |  |
| 2241 | 9.9 | Проверка напольных весов, почему не работают, возможно отошел контакт |  | 2h | 2026-07-24 09:00 A | 2026-07-24 11:00 A |  | 100% |  |  | start no earlier than 2026-07-24 09:00 | Бундин В | 2h | 2h |
| 2242 | 9.10 | уборка |  | 0.25d? | 2026-06-11 09:00 A | 2026-06-11 11:00 A |  | 100% |  |  |  | Труфанов А | 2h | 2h |
| 2243 | 9.11 | проверить весы настольные (показывают вес больше, если получится калибровать) |  | 2h | 2026-06-11 09:00 A | 2026-06-11 11:00 A |  | 100% |  |  | start no earlier than 2026-06-11 09:00 | Дедов В | 2h | 2h |

| ID | WBS | Task | Duration | Start | Finish | Predecessors | Complete | Remaining | Total slack | Free slack | Constraint | Resources | Work | Actual work |
| --- | --- | --- | --- | --- | --- | --- | --- | --- | --- | --- | --- | --- | --- | --- |
| 2244 | 10 | **ЗИП ремонт** | 642.25d? | 2024-05-09 09:00 A | 2026-10-15 11:00 |  | 53% | 298.81d? | 104.34d |  |  |  | 835.42h | 397.33h |
| 2245 | 10.1 | **Собрать редуктор питателя, который разобранный на верстаке** | 8.34d | 2026-09-28 09:00 | 2026-10-08 11:45 |  |  |  | 109.25d |  |  |  | 2.75h |  |
| 2246 | 10.1.1 | отпраитвь на перемонтку | 15min | 2026-09-28 09:00 | 2026-09-28 09:15 |  |  |  | 109.25d | 0d | start no earlier than 2026-09-28 09:00 | Зорькин В | 0.25h |  |
| 2247 | 10.1.2 | контроль | 15min | 2026-10-05 09:15 | 2026-10-05 09:30 | 2246FS+5d |  |  | 109.25d | 0d | start no earlier than 2026-09-25 08:00 | Зорькин В | 0.25h |  |
| 2248 | 10.1.3 | орг забрать | 15min | 2026-10-07 09:30 | 2026-10-07 09:45 | 2247FS+2d |  |  | 109.25d | 0d | start no earlier than 2026-09-25 08:00 | Зорькин В | 0.25h |  |
| 2249 | 10.1.4 | сборка | 2h | 2026-10-08 09:45 | 2026-10-08 11:45 | 2248FS+1d |  |  | 109.25d |  | start no earlier than 2026-09-25 08:00 | Бундин В | 2h |  |
| 2250 | 10.2 | **Дефектовка двигателя от питателя прекондиционера/ прозвонить (возможно подготовить для сдачи на перемотку)** | 8.25d | 2026-09-04 09:00 A | 2026-09-13 11:00 |  | 50% | 4.12d | 132.34d |  |  |  | 4h | 2h |
| 2251 | 10.2.1 | разбрка тест | 1h | 2026-09-04 09:00 A | 2026-09-04 10:00 A |  | 100% |  |  |  | start no earlier than 2026-09-04 09:00 | Бобренок В | 1h | 1h |
| 2252 | 10.2.2 | тест 2 с редуктором | 1h | 2026-09-08 09:00 A | 2026-09-08 10:00 A |  | 100% |  |  |  | start no earlier than 2026-09-08 08:00 | Тимофеев В | 1h | 1h |
| 2253 | 10.2.3 | разборка ревизия | 2h | 2026-09-13 09:00 | 2026-09-13 11:00 |  |  |  | 132.34d |  | start no earlier than 2026-09-13 09:00 | Макаревич А | 2h |  |
| 2254 | 10.3 | **ремонт редутор печи №?** | 26.31d | 2026-09-05 09:00 A | 2026-10-02 11:30 |  | 52% | 12.53d | 113.28d |  |  |  | 5.25h | 2.75h |
| 2255 | 10.3.1 | дефектовка редуктора печи 2 цех, лежит в слесарке | 2h | 2026-09-05 09:00 A | 2026-09-05 11:00 A |  | 100% |  |  |  | start no earlier than 2026-09-05 09:00 | Макаревич А | 2h | 2h |
| 2256 | 10.3.2 | возможно ли установить тавотницу на подшипник червяка? | 15min | 2026-09-10 09:00 A | 2026-09-10 09:15 A |  | 100% |  |  |  | start no earlier than 2026-09-10 09:00 | Тимофеев В | 0.25h | 0.25h |
| 2257 | 10.3.3 | заказ шестерни червя в ЗИП - отправить курьера | 15min | 2026-09-09 09:00 A | 2026-09-09 09:15 A | 2255 | 100% |  |  |  | start no earlier than 2026-09-09 09:00 | Зорькин В | 0.25h | 0.25h |
| 2258 | 10.3.4 | контроль изг шетесиерен | 15min | 2026-09-19 09:15 A | 2026-09-19 09:30 A | 2257FS+10d | 100% |  |  |  | start no earlier than 2026-09-08 08:00 | Зорькин В | 0.25h | 0.25h |
| 2259 | 10.3.5 | заказ шестерни червя в ЗИП - отправить курьера | 15min | 2026-09-21 09:00 | 2026-09-21 09:15 | 2255 |  |  | 113.28d | 0d | start no earlier than 2026-09-21 09:00 | Зорькин В | 0.25h |  |
| 2260 | 10.3.6 | контроль изг шетесиерен | 15min | 2026-10-01 09:15 | 2026-10-01 09:30 | 2259FS+10d |  |  | 113.28d | 0d | start no earlier than 2026-09-08 08:00 | Зорькин В | 0.25h |  |
| 2261 | 10.3.7 | сборка редутор венец | 2h | 2026-10-02 09:30 | 2026-10-02 11:30 | 2258FS+1d, 2260FS+1d |  |  | 113.28d |  | start no earlier than 2026-09-20 09:00 | Макаревич А | 2h |  |
| 2262 | 10.4 | ремонт оборотные сетки-поддоны от печи от 2ц | 2h | 2026-09-13 09:00 | 2026-09-13 11:00 |  |  |  | 132.34d |  | start no earlier than 2026-09-13 09:00 | Макаревич А | 2h |  |
| 2263 | 10.5 | подготовить электродную группу для 2 цеха | 3h | 2026-08-25 09:00 A | 2026-08-25 12:00 A |  | 100% |  |  |  | start no earlier than 2026-08-25 08:00 | Бундин В | 3h | 3h |
| 2264 | 10.6 | пепенос трубы нерж с 3ц на синий склад | 1h | 2026-08-24 09:00 | 2026-08-24 10:00 |  |  |  | 149.47d |  | start no earlier than 2026-08-24 09:00 | Некрасов А; Тимофеев В | 2h |  |
| 2265 | 10.7 | ремонт электрод парогенертора для 2ц | 4h | 2026-08-18 09:00 A | 2026-08-18 13:00 A |  | 100% |  |  |  | start no earlier than 2026-08-18 09:00 | Бобренок В | 4h | 4h |
| 2266 | 10.8 | перевоз батареи свинец от погрузчика на синий склад | 30min | 2026-08-12 09:00 A | 2026-08-12 09:30 A |  | 100% |  |  |  | start no earlier than 2026-08-12 09:00 | Макаревич А | 0.5h | 0.5h |
| 2267 | 10.9 | **заточка ножей** | 6.03d | 2026-08-13 09:00 A | 2026-08-21 09:15 A |  | 100% |  |  |  |  |  | 0.5h | 0.5h |
| 2268 | 10.9.1 | разместить ЛТ70 курьеру, отметиь журнал | 15min | 2026-08-13 09:00 A | 2026-08-13 09:15 A |  | 100% |  |  |  | start no earlier than 2026-08-13 09:00 | Зорькин В | 0.25h | 0.25h |
| 2269 | 10.9.2 | контроль, орг забрать | 15min | 2026-08-21 09:00 A | 2026-08-21 09:15 A |  | 100% |  |  |  | start no earlier than 2026-08-21 09:00 | Шуранов Ю | 0.25h | 0.25h |

| ID | WBS | Task | Type | Duration | Start | Finish | Predecessors | Complete | Actual start | Actual finish | Constraint | Resources | Work | Actual work |
| --- | --- | --- | --- | --- | --- | --- | --- | --- | --- | --- | --- | --- | --- | --- |
| 2270 | 10.10 | **ножевой узел для 1ц** |  | 0.03d | 2026-08-13 09:00 A | 2026-08-13 09:15 A |  | 100% |  |  |  |  | 0.25h | 0.25h |
| 2271 | 10.10.1 | контроль поставки |  | 15min | 2026-08-13 09:00 A | 2026-08-13 09:15 A |  | 100% |  |  | start no earlier than 2026-08-13 09:00 | Домоводов К | 0.25h | 0.25h |
| 2272 | 10.11 | подготовить электроды для парогенератора цех 1 |  | 4h | 2026-08-05 08:00 A | 2026-08-05 13:00 A |  | 100% |  |  | start no earlier than 2026-08-05 08:00 | Макаревич А | 4h | 4h |
| 2273 | 10.12 | восстановить голову насоса гидрализата (в слесарке) подписать | manual | 2h | 2026-08-01 09:00 A | 2026-08-01 11:00 A |  | 100% |  |  | start no earlier than 2026-08-01 09:00 | Бундин В | 2h | 2h |
| 2274 | 10.13 | **восстановить сетку спечи (она в слесарке)** |  | 1d? | 2026-08-14 09:00 | 2026-08-14 18:00 |  | 100% | 2026-08-03 09:00 | 2026-08-03 18:00 |  |  | 8h | 8h |
| 2275 | 10.13.1 | заказать сверла по нерж. М5 и М6 |  | 1d? | 2026-08-03 09:00 A | 2026-08-03 18:00 A |  | 100% |  |  | start no earlier than 2026-08-03 08:00 | Шуранов Ю | 8h | 8h |
| 2276 | 10.14 | подготовить антиэлектроды по аналогии с нашими (все на складе) | manual | 5h | 2026-08-01 09:00 A | 2026-08-01 15:00 A |  | 100% |  |  | start no earlier than 2026-08-01 09:00 | Бундин В | 5h | 5h |
| 2277 | 10.15 | подготовить электродную группу для парогенератора |  | 3h | 2026-06-12 09:00 A | 2026-06-12 12:00 A |  | 100% |  |  | start no earlier than 2026-06-12 09:00 | Бундин В | 3h | 3h |
| 2278 | 10.16 | собрать 2 стула для ИТР |  | 2h | 2026-06-07 09:00 A | 2026-06-08 11:00 A |  | 100% |  |  | start no earlier than 2026-06-07 09:00 | Бобренок В | 2h | 2h |
| 2279 | 10.17 | **покрасить швейлеры возле слесарки(грунтовка, затем серый цвет)** |  | 0.25d | 2026-06-12 09:00 A | 2026-06-12 11:00 A |  | 100% |  |  |  | Бобренок В | 4h | 4h |
| 2280 | 10.17.1 | болгаркой убрать сварочные сопли и покрасить |  | 2h | 2026-06-12 09:00 A | 2026-06-12 11:00 A |  | 100% |  |  | start no earlier than 2026-06-12 09:00 | Бундин В | 2h | 2h |
| 2281 | 10.18 | подготовить фильтры для кондиционеров, замена фильтр ткани. Находятся в слесарке | manual | 2h | 2026-06-14 09:00 A | 2026-06-14 11:00 A |  | 100% |  |  | start no earlier than 2026-06-14 09:00 | Бундин В | 2h | 2h |
| 2282 | 10.19 | **заявка на фильеры от 02.06 1ц и 2ц** |  | 7.19d | 2026-06-02 09:00 A | 2026-06-11 10:30 A |  | 100% |  |  |  |  | 4.5h | 4.5h |
| 2283 | 10.19.1 | подготовить чертежи по ТЗ |  | 2h | 2026-06-02 09:00 A | 2026-06-02 11:00 A |  | 100% |  |  | start no earlier than 2026-06-02 09:00 | Домоводов К | 2h | 2h |
| 2284 | 10.19.2 | **партия 1** |  | 6.19d | 2026-06-03 09:00 A | 2026-06-11 10:30 A |  | 100% |  |  |  |  | 1.5h | 1.5h |
| 2285 | 10.19.2.1 | разместить токарю заварка фильер + шлифвка |  | 30min | 2026-06-03 09:00 A | 2026-06-03 09:30 A |  | 100% |  |  | start no earlier than 2026-06-03 08:00 | Шуранов Ю | 0.5h | 0.5h |
| 2286 | 10.19.2.2 | забрать заваренные / разместить на изготовление дюз |  | 30min | 2026-06-07 09:30 A | 2026-06-08 09:30 A | 2285FS+4d | 100% |  |  | start no earlier than 2026-06-03 08:00 | Шуранов Ю | 0.5h | 0.5h |
| 2287 | 10.19.2.3 | забрать готовые |  | 30min | 2026-06-11 10:00 A | 2026-06-11 10:30 A | 2286FS+4d | 100% |  |  | start no earlier than 2026-06-03 08:00 | Шуранов Ю | 0.5h | 0.5h |
| 2288 | 10.19.3 | **партия 2** |  | 3.12d | 2026-06-04 09:00 A | 2026-06-09 10:00 A |  | 100% |  |  |  |  | 1h | 1h |
| 2289 | 10.19.3.1 | разместить готовые балванки на прожиг отверстий |  | 30min | 2026-06-04 09:00 A | 2026-06-04 09:30 A |  | 100% |  |  | start no earlier than 2026-06-04 09:00 | Шуранов Ю | 0.5h | 0.5h |
| 2290 | 10.19.3.2 | забрать готовые |  | 30min | 2026-06-09 09:30 A | 2026-06-09 10:00 A | 2289FS+5d | 100% |  |  | start no earlier than 2026-06-03 08:00 | Шуранов Ю | 0.5h | 0.5h |
| 2291 | 10.20 | **зип тенов на печь 70 и 85 + шестерни питатель 70** |  | 30.06d | 2026-05-28 09:00 A | 2026-07-09 09:30 A |  | 100% |  |  |  |  | 0.75h | 0.75h |
| 2292 | 10.20.1 | запрос Настя, получить счет |  | 15min | 2026-05-28 09:00 A | 2026-05-28 09:15 A |  | 100% |  |  | start no earlier than 2026-05-28 09:00 | Домоводов К | 0.25h | 0.25h |
| 2293 | 10.20.2 | оплата |  | 15min | 2026-06-04 09:00 A | 2026-06-04 09:15 A | 2292FS+2d | 100% |  |  | start no earlier than 2026-06-04 09:00 | Домоводов К | 0.25h | 0.25h |
| 2294 | 10.20.3 | контроль поставки |  | 15min | 2026-07-09 09:15 A | 2026-07-09 09:30 A | 2293FS+30d | 100% |  |  | start no earlier than 2026-05-27 08:00 | Зорькин В | 0.25h | 0.25h |
| 2295 | 10.21 | подготовка к инвентаризации |  | 3h | 2026-05-26 09:00 A | 2026-05-26 12:00 A |  | 100% |  |  | start no earlier than 2026-05-26 09:00 | Бундин В | 3h | 3h |
| 2296 | 10.22 | посчитать и записать какие и какое количество автоматов и контакторов есть в слесарке |  | 1h | 2026-05-23 09:00 A | 2026-05-25 10:00 A |  | 100% |  |  | start no earlier than 2026-05-23 09:00 | Макаревич А | 1h | 1h |
| 2297 | 10.23 | передать весы (малые в 1 цех, большие в 5 цех) со слесарки |  | 1h | 2026-05-22 09:00 A | 2026-05-22 10:00 A |  | 100% |  |  | start no earlier than 2026-05-22 09:00 | Макаревич А | 1h | 1h |
| 2298 | 10.24 | проверить работает или нет двигатель с накопительного стола цех 1- Валентин покажет. |  | 1h | 2026-05-19 08:00 A | 2026-05-19 10:00 A |  | 100% |  |  | start no earlier than 2026-05-19 08:00 | Дедов В | 1h | 1h |
| 2299 | 10.25 | наточить ножи для ц.2 |  | 1h | 2026-05-19 09:00 A | 2026-05-19 10:00 A |  | 100% |  |  | start no earlier than 2026-05-19 09:00 | Тимофеев В | 1h | 1h |
| 2300 | 10.26 | подготовка к инвентаризации (посчитать какие и метраж кабеля в слесарке и желтом нашей половине) |  | 2h | 2026-05-24 09:00 A | 2026-05-25 11:00 A |  | 100% |  |  | start no earlier than 2026-05-24 09:00 | Дедов В | 2h | 2h |
| 2301 | 10.27 | подготовить рабочее место в слесарке для работы на кровле Олега |  | 1h | 2026-05-15 09:00 A | 2026-05-15 10:00 A |  | 100% |  |  | start no earlier than 2026-05-15 09:00 | Некрасов А; Труфанов А; Тимофеев В; Макаревич А | 4h | 4h |

| ID | WBS | Task | Duration | Start | Finish | Predecessors | Complete | Total slack | Free slack | Constraint | Resources | Work | Actual work |
| --- | --- | --- | --- | --- | --- | --- | --- | --- | --- | --- | --- | --- | --- |
| 2302 | 10.28 | **ремонт инсекютер с 1ц в слесарке. Повесить в цехе, зафиксировать в журнал мастера** | 0.12d | 2026-05-19 09:00 A | 2026-05-19 10:00 A |  | 100% |  |  |  |  | 1h | 1h |
| 2303 | 10.28.1 | взять светильник "антимуха" у Луговских и повесить на входе в корридор между раздевалками | 1h | 2026-05-19 09:00 A | 2026-05-19 10:00 A |  | 100% |  |  | start no earlier than 2026-05-19 09:00 | Дедов В | 1h | 1h |
| 2304 | 10.29 | **орг ремонт мотор с вращаюбщего барабана 1ц** | 0.16d | 2026-09-01 09:00 | 2026-09-01 10:15 |  |  | 143.44d |  |  |  | 1.25h |  |
| 2305 | 10.29.1 | подписать шильдик. На веревочке картонка / пластик | 15min | 2026-09-01 09:00 | 2026-09-01 09:15 |  |  | 143.44d | 0d | start no earlier than 2026-09-01 09:00 | Шуранов Ю | 0.25h |  |
| 2306 | 10.29.2 | орг ремонт | 1h | 2026-09-01 09:15 | 2026-09-01 10:15 | 2305 |  | 143.44d |  | start no earlier than 2026-09-01 09:00 | Шуранов Ю | 1h |  |
| 2307 | 10.30 | получить на складе резинки на двери прекондиционеров и выдать цех 1 и 2 | 1h | 2026-05-11 09:00 A | 2026-05-11 10:00 A |  | 100% |  |  | start no earlier than 2026-05-11 09:00 |  |  |  |
| 2308 | 10.31 | подготовить электродную группу для 1 цеха | 3h | 2026-05-11 09:00 A | 2026-05-11 12:00 A |  | 100% |  |  | start no earlier than 2026-05-11 09:00 | Бундин В | 3h | 3h |
| 2309 | 10.32 | на емкость нерж сделать сгон и поплавок | 4h | 2026-05-09 09:00 A | 2026-05-11 13:00 A |  | 100% |  |  | start no earlier than 2026-05-09 09:00 | Макаревич А | 4h | 4h |
| 2310 | 10.33 | отвезти термоодеяло с слесарки в синий склад | 1h | 2026-05-11 09:00 A | 2026-05-11 10:00 A |  | 100% |  |  | start no earlier than 2026-05-11 09:00 | Бундин В | 1h | 1h |
| 2311 | 10.34 | приехали дроселя для светильников, восстановить не рабочие | 4h | 2026-05-12 09:00 A | 2026-05-12 13:00 A |  | 100% |  |  | start no earlier than 2026-05-12 09:00 | Бундин В | 4h | 4h |
| 2312 | 10.35 | **орг ремонт мотор с конв №2 1 линия 1ц** | 0.25d | 2026-09-01 09:00 | 2026-09-01 11:00 |  |  | 143.34d |  |  |  | 2h |  |
| 2313 | 10.35.1 | подписать шильдик | 60min | 2026-09-01 09:00 | 2026-09-01 10:00 |  |  | 143.34d | 0d | start no earlier than 2026-09-01 09:00 | Шуранов Ю | 1h |  |
| 2314 | 10.35.2 | орг ремонт | 1h | 2026-09-01 10:00 | 2026-09-01 11:00 | 2313 |  | 143.34d |  | start no earlier than 2026-05-14 09:00 | Шуранов Ю | 1h |  |
| 2315 | 10.36 | сборка редуктор с шлюз питателя (фото в чате 14.05) | 3h | 2026-08-31 09:00 A | 2026-08-31 12:00 A |  | 100% |  |  | start no earlier than 2026-09-02 09:00 | Тимофеев В | 3h | 3h |
| 2316 | 10.37 | **собрать мотор-редуктор прекондиционера в слесарке (сальники на складе в лотках снизу подписаны)** | 0.12d | 2026-06-15 09:00 A | 2026-06-15 10:00 A |  | 100% |  |  |  | Бундин В | 3h | 3h |
| 2317 | 10.37.1 | транспортировка в синий склад | 1h | 2026-06-15 09:00 A | 2026-06-15 10:00 A |  | 100% |  |  | start no earlier than 2026-06-15 09:00 | Тимофеев В; Некрасов А | 2h | 2h |
| 2318 | 10.38 | **вскрыть листогиб** | 4.5d | 2026-05-09 09:00 A | 2026-05-15 13:00 A |  | 100% |  |  |  |  | 11.17h | 11.17h |
| 2319 | 10.38.1 | проверить работу листогиба (попробовать загнуть нерж) | 1h | 2026-05-09 09:00 A | 2026-05-11 10:00 A |  | 100% |  |  | start no earlier than 2026-05-09 09:00 | Макаревич А | 1h | 1h |
| 2320 | 10.38.2 | как удлинить ручки, предложение | 5min | 2026-05-13 09:00 A | 2026-05-13 09:05 A |  | 100% |  |  | start no earlier than 2026-05-13 09:00 | Труфанов А | 0.08h | 0.08h |
| 2321 | 10.38.3 | куда крепить стационарно. Синий склад /контейнер. Предложения. | 5min | 2026-05-13 09:00 A | 2026-05-13 09:05 A |  | 100% |  |  | start no earlier than 2026-05-13 09:00 | Труфанов А | 0.08h | 0.08h |
| 2322 | 10.38.4 | изготовить раму для крепления к полу | 4h | 2026-05-15 09:00 A | 2026-05-15 13:00 A |  | 100% |  |  | start no earlier than 2026-05-15 09:00 | Тимофеев В; Макаревич А | 8h | 8h |
| 2323 | 10.38.5 | усилить ручки | 1h | 2026-05-15 09:00 A | 2026-05-15 10:00 A |  | 100% |  |  | start no earlier than 2026-05-15 09:00 | Тимофеев В; Макаревич А | 2h | 2h |
| 2324 | 10.39 | вывезти питатель на синий склад | 1h | 2026-05-05 09:00 A | 2026-05-05 10:00 A |  | 100% |  |  | start no earlier than 2026-05-05 09:00 | Тимофеев В | 1h | 1h |
| 2325 | 10.40 | транспортировка гильз и шнеков на синий склад (уложить по приходам из китая) | 3h | 2026-05-05 09:00 A | 2026-05-05 12:00 A |  | 100% |  |  | start no earlier than 2026-05-05 09:00 | Тимофеев В; Бобренок В; Шуранов Ю | 9h | 9h |
| 2326 | 10.41 | найти на синем складе комплектующие для инвентаризации с Алексеем | 3h | 2026-05-05 09:00 A | 2026-05-05 12:00 A |  | 100% |  |  | start no earlier than 2026-05-05 08:00 | Шуранов Ю | 3h | 3h |
| 2327 | 10.42 | посчитать все валы от транспортеров, занести в таблицу учета | 4h | 2026-05-11 09:00 A | 2026-05-11 13:00 A |  | 100% |  |  | start no earlier than 2026-05-09 09:00 | Шуранов Ю | 4h | 4h |
| 2328 | 10.43 | посчитать сколько валов для транспортеров Теко в слесарке | 1h | 2026-04-30 09:00 A | 2026-04-30 10:00 A |  | 100% |  |  | start no earlier than 2026-04-30 09:00 | Шуранов Ю | 1h | 1h |
| 2329 | 10.44 | уборка остатки металл в контейнер | 1h | 2026-04-29 09:00 A | 2026-04-29 10:00 A |  | 100% |  |  | start no earlier than 2026-04-29 09:00 | Некрасов А; Тимофеев В; Труфанов А; Бундин В | 4h | 4h |

| ID | WBS | Task | Type | Duration | Start | Finish | Predecessors | Complete | Remaining | Total slack | Constraint | Resources | Work | Actual work |
| --- | --- | --- | --- | --- | --- | --- | --- | --- | --- | --- | --- | --- | --- | --- |
| 2330 | 10.45 | **ЗИП на ПГ антиэлектрод** |  | 33d? | 2026-05-13 09:00 A | 2026-06-26 18:00 A |  | 100% |  |  |  |  | 9.5h | 9.5h |
| 2331 | 10.45.1 | поиск в продаже труба нерж ф205 (проверить у Тимофеева диамтр) |  | 1h | 2026-05-13 09:00 A | 2026-05-13 10:00 A |  | 100% |  |  | start no earlier than 2026-05-13 09:00 | Зорькин В | 1h | 1h |
| 2332 | 10.45.2 | заявка |  | 15min | 2026-05-13 10:00 A | 2026-05-13 10:15 A | 2331 | 100% |  |  | start no earlier than 2026-04-24 08:00 | Зорькин В | 0.25h | 0.25h |
| 2333 | 10.45.3 | контроль доставки. Карабанов размещает у свои |  | 15min | 2026-05-19 09:00 A | 2026-05-19 09:15 A | 2332FS+5d | 100% |  |  | start no earlier than 2026-05-19 09:00 | Зорькин В | 0.25h | 0.25h |
| 2334 | 10.45.4 | монтаж |  | 1d? | 2026-06-26 09:00 A | 2026-06-26 18:00 A | 2333FS+2d | 100% |  |  | start no earlier than 2026-06-26 09:00 | Тимофеев В | 8h | 8h |
| 2335 | 10.46 | **ремонт шуруповерт макита** |  | 40d | 2026-04-19 09:00 A | 2026-06-14 11:00 A |  | 100% |  |  |  |  | 5h | 5h |
| 2336 | 10.46.1 | разобрать шуруповерт макита, выяснить с редуктором проблема или нет | manual | 2h | 2026-04-19 09:00 A | 2026-04-19 11:00 A |  | 100% |  |  | start no earlier than 2026-04-19 09:00 | Дедов В | 2h | 2h |
| 2337 | 10.46.2 | отправить фидео запрос о ремонте в сервисн центр |  | 1h | 2026-04-20 09:00 A | 2026-04-20 10:00 A |  | 100% |  |  | start no earlier than 2026-04-20 08:00 | Зорькин В | 1h | 1h |
| 2338 | 10.46.3 | конртроль / решение о списании | milestone | 0d | 2026-04-27 09:00 A | 2026-04-27 09:00 A |  | 100% |  |  | start no earlier than 2026-04-27 09:00 | Зорькин В |  |  |
| 2339 | 10.46.4 | попробовать собрать шуроповерт, находится в слесарке | manual | 2h | 2026-06-14 09:00 A | 2026-06-14 11:00 A |  | 100% |  |  | start no earlier than 2026-06-14 09:00 | Бундин В | 2h | 2h |
| 2340 | 10.47 | взять винты пота м6х25 и перекрутить на сетке для печи | manual | 1h | 2026-04-20 09:00 A | 2026-04-20 10:00 A |  | 100% |  |  | start no earlier than 2026-04-20 09:00 | Тимофеев В | 1h | 1h |
| 2341 | 10.48 | **шестерня питателя LT85** |  | 7.01d | 2026-04-08 09:00 A | 2026-04-17 09:05 |  | 94% | 0.44d | 240.58d |  |  | 1.33h | 1.25h |
| 2342 | 10.48.1 | **1. заказ с китая** |  | 7.01d | 2026-04-08 09:00 A | 2026-04-17 09:05 |  | 75% | 1.75d | 240.58d |  |  | 0.33h | 0.25h |
| 2343 | 10.48.1.1 | запрос / контроль |  | 15min | 2026-04-08 09:00 A | 2026-04-08 09:15 A |  | 100% |  |  | start no earlier than 2026-04-08 09:00 | Шуранов Ю | 0.25h | 0.25h |
| 2344 | 10.48.1.2 | контроль |  | 5min | 2026-04-17 09:00 | 2026-04-17 09:05 |  |  |  | 240.58d | start no earlier than 2026-04-17 09:00 | Шуранов Ю | 0.08h |  |
| 2345 | 10.48.2 | **2. изготовление по образцу** |  | 5.03d | 2026-04-08 09:00 A | 2026-04-15 09:15 A |  | 100% |  |  |  |  | 1h | 1h |
| 2346 | 10.48.2.1 | выяснить возможносить изготвления |  | 30min | 2026-04-08 09:00 A | 2026-04-08 09:30 A |  | 100% |  |  | start no earlier than 2026-04-08 09:00 | Зорькин В | 0.5h | 0.5h |
| 2347 | 10.48.2.2 | отправить курьера |  | 15min | 2026-04-08 09:30 A | 2026-04-08 09:45 A | 2346 | 100% |  |  | start no earlier than 2026-04-06 09:00 | Зорькин В | 0.25h | 0.25h |
| 2348 | 10.48.2.3 | контроль |  | 15min | 2026-04-15 09:00 A | 2026-04-15 09:15 A | 2347 | 100% |  |  | start no earlier than 2026-04-15 09:00 | Зорькин В | 0.25h | 0.25h |
| 2349 | 10.49 | проверить наличие лент в ЗИП перед утилизаций б/у |  | 2h | 2026-03-31 09:00 A | 2026-03-31 11:00 A |  | 100% |  |  | start no earlier than 2026-03-31 08:00 | Зорькин В | 2h | 2h |
| 2350 | 10.50 | соединители лент траснспортеры линий - проверить остаток |  | 30min | 2026-08-31 09:00 | 2026-08-31 09:30 |  |  |  | 144.53d | start no earlier than 2026-08-31 09:00 | Зорькин В | 0.5h |  |
| 2351 | 10.51 | **освободить место на син склад / перенос в новый контейнер** |  | 1.5d | 2026-03-30 08:00 A | 2026-03-31 13:00 A |  | 100% |  |  |  |  | 38h | 38h |
| 2352 | 10.51.1 | перенести метал, норию в контейнер с синего склада |  | 4h | 2026-03-30 09:00 A | 2026-03-30 13:00 A |  | 100% |  |  | start no earlier than 2026-03-30 09:00 | Бобренок В; Некрасов А; Тимофеев В | 12h | 12h |
| 2353 | 10.51.2 | сборка стеллаж хранения металла |  | 4h | 2026-03-30 08:00 A | 2026-03-30 13:00 A |  | 100% |  |  | start no earlier than 2026-03-30 08:00 | Некрасов А; Труфанов А; Тимофеев В | 10h | 10h |
| 2354 | 10.51.3 | монтаж стеллаж хранения металла |  | 4h | 2026-03-31 09:00 A | 2026-03-31 13:00 A |  | 100% |  |  | start no earlier than 2026-03-31 09:00 | Некрасов А; Труфанов А | 8h | 8h |
| 2355 | 10.51.4 | загрузка мусор в трактор дерево, отход |  | 4h | 2026-03-31 09:00 A | 2026-03-31 13:00 A |  | 100% |  |  | start no earlier than 2026-03-31 08:00 | Некрасов А; Труфанов А | 8h | 8h |
| 2356 | 10.52 | заточка ножей 2ц орг |  | 30min | 2026-03-25 09:00 A | 2026-03-25 09:30 A |  | 100% |  |  | start no earlier than 2026-03-25 08:00 | Зорькин В | 0.5h | 0.5h |
| 2357 | 10.53 | ремонт водонагреватель орг |  | 1h | 2026-03-23 09:00 A | 2026-03-23 10:00 A |  | 100% |  |  | start no earlier than 2026-03-23 09:00 | Шуранов Ю | 1h | 1h |
| 2358 | 10.54 | ремонт парогенератор орг |  | 1h | 2026-03-23 09:00 A | 2026-03-23 10:00 A |  | 100% |  |  | start no earlier than 2026-03-23 09:00 | Шуранов Ю | 1h | 1h |

| ID | WBS | Task | Type | Duration | Start | Finish | Predecessors | Complete | Remaining | Total slack | Free slack | Constraint | Resources | Work | Actual work |
| --- | --- | --- | --- | --- | --- | --- | --- | --- | --- | --- | --- | --- | --- | --- | --- |
| 2359 | 10.55 | **стеллаж для организации хранения металла** |  | 11.5d | 2026-03-23 09:00 A | 2026-04-07 13:00 A |  | 100% |  |  |  |  |  | 84h | 84h |
| 2360 | 10.55.1 | составить эскиз / расчет заявка металл |  | 4h | 2026-03-23 09:00 A | 2026-03-23 13:00 A |  | 100% |  |  |  | start no earlier than 2026-03-23 09:00 | Зорькин В | 4h | 4h |
| 2361 | 10.55.2 | доставка |  | 10d | 2026-03-23 14:00 A | 2026-04-06 13:00 A | 2360 | 100% |  |  |  | start no earlier than 2026-03-20 08:00 | Карабанов | 80h | 80h |
| 2362 | 10.55.3 | сборка |  | 2d | 2026-04-03 14:00 A | 2026-04-07 13:00 A | 2361 | 100% |  |  |  | start no earlier than 2026-03-20 08:00 |  |  |  |
| 2363 | 10.56 | установить крыльчатку мотор-редуктор смесителя / перенос в контейнер |  | 30min | 2026-08-31 09:00 A | 2026-08-31 09:30 A |  | 100% |  |  |  | start no earlier than 2026-09-02 09:00 | Тимофеев В | 0.5h | 0.5h |
| 2364 | 10.57 | **изготовить ножевой узел для 2ц** |  | 10.02d | 2026-03-17 09:00 A | 2026-03-31 09:10 A |  | 100% |  |  |  |  |  | 80.33h | 80.33h |
| 2365 | 10.57.1 | получить счет |  | 10min | 2026-03-17 09:00 A | 2026-03-17 09:10 A |  | 100% |  |  |  | start no earlier than 2026-03-17 08:00 | Домоводов К | 0.17h | 0.17h |
| 2366 | 10.57.2 | изготовление |  | 10d | 2026-03-17 09:10 A | 2026-03-31 09:10 A | 2365 | 100% |  |  |  | start no earlier than 2026-03-17 08:00 | Фрезер ЧПУ | 80h | 80h |
| 2367 | 10.57.3 | контроль |  | 5min | 2026-03-28 09:10 A | 2026-03-30 09:05 A | 2366FS+1d | 100% |  |  |  | start no earlier than 2026-03-17 08:00 | Зорькин В | 0.08h | 0.08h |
| 2368 | 10.57.4 | орг доставка |  | 5min | 2026-03-28 09:15 A | 2026-03-30 09:05 A | 2367 | 100% |  |  |  | start no earlier than 2026-03-17 08:00 | Зорькин В | 0.08h | 0.08h |
| 2369 | 10.58 | сгоревшие двигатели унести в контенер в коробку |  | 1h | 2026-03-15 09:00 A | 2026-03-16 10:00 A |  | 100% |  |  |  | start no earlier than 2026-03-15 09:00 | Бобренок В | 1h | 1h |
| 2370 | 10.59 | ремонт головы насоса нгш57 гидродлизат 2шт |  | 2h | 2026-03-16 09:00 A | 2026-03-16 11:00 A |  | 100% |  |  |  | start no earlier than 2026-03-16 09:00 | Труфанов А | 2h | 2h |
| 2371 | 10.60 | изготовить ножевой узел для 2ц | milestone | 0d | 2026-03-16 09:00 A | 2026-03-16 09:00 A |  | 100% |  |  |  | start no earlier than 2026-03-16 09:00 | Домоводов К |  |  |
| 2372 | 10.61 | по всем цехам обход, проверка обратный клпан бойлеры / настройка температуры . Составить список под замену |  | 2h | 2026-09-01 09:00 | 2026-09-01 11:00 |  |  |  | 143.34d |  | start no earlier than 2026-09-01 09:00 | Дедов В | 2h |  |
| 2373 | 10.62 | **ремонт датчик расхода пара с линия 3** |  | 33.04d | 2026-09-01 09:00 A | 2026-10-07 09:20 |  |  | 33.04d | 110.55d |  |  |  | 0.92h |  |
| 2374 | 10.62.1 | заявка взип |  | 15min | 2026-09-01 09:00 | 2026-09-01 09:15 |  |  |  | 118.48d | 0d | start no earlier than 2026-09-01 09:00 | Шуранов Ю | 0.25h |  |
| 2375 | 10.62.2 | орг отправить в ремонт |  | 20min | 2026-09-01 09:15 | 2026-09-01 09:35 | 2374 |  |  | 118.48d | 7.93d | start no earlier than 2026-03-12 08:00 | Шуранов Ю | 0.33h |  |
| 2376 | 10.62.3 | контроль | milestone | 0d | 2026-09-22 09:35 A | 2026-09-22 09:35 A | 2375FS+20d | 100% |  |  |  | start no earlier than 2026-04-17 09:00 | Зорькин В |  |  |
| 2377 | 10.62.4 | контроль | milestone | 0d | 2026-09-30 09:00 | 2026-09-30 09:00 | 2375FS+20d |  |  | 110.55d | 0d | start no earlier than 2026-09-30 09:00 | Зорькин В |  |  |
| 2378 | 10.62.5 | орг забрать сремонта |  | 20min | 2026-10-07 09:00 | 2026-10-07 09:20 | 2376FS+5d, 2377FS+5d |  |  | 110.55d |  | start no earlier than 2026-03-12 08:00 | Шуранов Ю | 0.33h |  |
| 2379 | 10.63 | реставрация вал с охладителя. Полполнить расход ЗИП |  | 1h | 2026-09-01 09:00 | 2026-09-01 10:00 |  |  |  | 143.47d |  | start no earlier than 2026-09-01 09:00 | Шуранов Ю | 1h |  |
| 2380 | 10.64 | ремонт датчик наличия сырья / собрать из 2х один |  | 3h | 2026-09-01 09:00 | 2026-09-01 12:00 |  |  |  | 143.22d |  | start no earlier than 2026-09-01 09:00 | Дедов В | 3h |  |
| 2381 | 10.65 | **ремонт бойлер с 5ц гардероб** |  | 7.04d | 2026-03-13 09:00 A | 2026-03-24 09:20 |  | 57% | 3.02d | 258.55d |  |  |  | 0.58h | 0.33h |
| 2382 | 10.65.1 | орг отправить в ремонт |  | 15min | 2026-03-13 09:00 A | 2026-03-13 09:15 A |  | 100% |  |  |  | start no earlier than 2026-03-13 09:00 | Шуранов Ю | 0.25h | 0.25h |
| 2383 | 10.65.2 | контроль доставка / оплата |  | 5min | 2026-03-23 09:00 A | 2026-03-23 09:05 A | 2382FS+5d | 100% |  |  |  | start no earlier than 2026-03-23 09:00 | Шуранов Ю | 0.08h | 0.08h |
| 2384 | 10.65.3 | орг доставка |  | 15min | 2026-03-24 09:05 | 2026-03-24 09:20 | 2383FS+1d |  |  | 258.55d |  | start no earlier than 2026-03-12 08:00 | Шуранов Ю | 0.25h |  |
| 2385 | 10.66 | диагностика двигателей и редукторов в слесарке. Подробности Шуранов по тлф |  | 2h | 2026-09-01 09:00 A | 2026-09-01 11:00 A |  | 100% |  |  |  | start no earlier than 2026-09-02 09:00 | Бундин В | 2h | 2h |
| 2386 | 10.67 | которые в коробке с них снять крыльчатки |  | 2h | 2026-09-01 09:00 A | 2026-09-01 11:00 A | 2385 | 100% |  |  |  | start no earlier than 2026-03-06 08:00 | Бундин В | 2h | 2h |
| 2387 | 10.68 | ножевой узел 2ц заменаить подшипники. У мастера |  | 1h | 2026-03-04 08:00 A | 2026-03-04 10:00 A |  | 100% |  |  |  | start no earlier than 2026-03-04 08:00 | Дедов В | 1h | 1h |

| ID | WBS | Task | Duration | Start | Finish | Predecessors | Complete | Remaining | Total slack | Free slack | Constraint | Resources | Work | Actual work |
| --- | --- | --- | --- | --- | --- | --- | --- | --- | --- | --- | --- | --- | --- | --- |
| 2388 | 10.69 | **ремонт электродов ПГ в ЗИП** | 2.75d | 2026-03-08 09:00 A | 2026-03-11 16:00 A |  | 100% |  |  |  |  |  | 12h | 12h |
| 2389 | 10.69.1 | 2шт - шт | 6h | 2026-03-08 09:00 A | 2026-03-09 16:00 A |  | 100% |  |  |  | start no earlier than 2026-03-08 09:00 | Макаревич А | 6h | 6h |
| 2390 | 10.69.2 | 1шт = 2ц | 6h | 2026-03-11 09:00 A | 2026-03-11 16:00 A |  | 100% |  |  |  | start no earlier than 2026-03-11 09:00 | Макаревич А | 6h | 6h |
| 2391 | 10.70 | промер изношенных шнеков, подготовить таблицу и инструкцию для делегировать | 1h | 2026-03-03 09:00 A | 2026-03-03 10:00 A |  | 100% |  |  |  | start no earlier than 2026-03-03 09:00 | Зорькин В | 1h | 1h |
| 2392 | 10.71 | заказ нутромер утерянные детали | 30min | 2026-03-06 09:00 A | 2026-03-06 09:30 A |  | 100% |  |  |  | start no earlier than 2026-03-06 09:00 | Зорькин В | 0.5h | 0.5h |
| 2393 | 10.72 | **стопорнное кольцо для валов шнеков** | 0.09d | 2026-03-02 09:00 A | 2026-03-02 09:45 A |  | 100% |  |  |  |  |  | 0.75h | 0.75h |
| 2394 | 10.72.1 | заявка снабжение | 15min | 2026-03-02 09:00 A | 2026-03-02 09:15 A |  | 100% |  |  |  | start no earlier than 2026-03-02 09:00 | Зорькин В | 0.25h | 0.25h |
| 2395 | 10.72.2 | заявка токарь | 15min | 2026-03-02 09:15 A | 2026-03-02 09:30 A | 2394 | 100% |  |  |  | start no earlier than 2026-02-27 08:00 | Зорькин В | 0.25h | 0.25h |
| 2396 | 10.72.3 | заявка кита | 15min | 2026-03-02 09:30 A | 2026-03-02 09:45 A | 2395 | 100% |  |  |  | start no earlier than 2026-02-27 08:00 | Зорькин В | 0.25h | 0.25h |
| 2397 | 10.73 | **быстрая замена шнеков - кондуктор для хранения и перемещения подготвленного ствола** | 3.25d | 2026-10-12 09:00 | 2026-10-15 11:00 |  |  |  | 104.34d |  |  |  | 20h |  |
| 2398 | 10.73.1 | проект кондуктора и траверсы перемещения ствола штабелером | 2h | 2026-10-12 09:00 | 2026-10-12 11:00 |  |  |  | 104.34d | 0d | start no earlier than 2026-10-12 09:00 | Тимофеев В; Бундин В | 4h |  |
| 2399 | 10.73.2 | сборка | 2d | 2026-10-13 11:00 | 2026-10-15 11:00 | 2398FS+1d |  |  | 104.34d |  | start no earlier than 2026-04-16 09:00 | Бобренок В | 16h |  |
| 2400 | 10.74 | **заявка шкив на вал прекондиционер + разрезная вставка + спец шпильки** | 0.12d | 2025-08-04 09:00 | 2025-08-04 10:00 |  |  |  | 424.47d |  |  |  | 1h |  |
| 2401 | 10.74.1 | подбор шкив / заявка | 1h | 2025-08-04 09:00 | 2025-08-04 10:00 |  |  |  | 424.47d |  | start no earlier than 2025-08-04 09:00 | Зорькин В | 1h |  |
| 2402 | 10.75 | **ремонт вал прекондиционер** | 12.02d | 2025-07-31 09:00 A | 2025-08-18 09:10 |  | 86% | 1.72d | 414.57d |  |  |  | 1.17h | 1h |
| 2403 | 10.75.1 | подготовить к отправке очистить | 1h | 2025-07-31 09:00 A | 2025-07-31 10:00 A |  | 100% |  |  |  | start no earlier than 2025-07-31 09:00 | Пинчук А | 1h | 1h |
| 2404 | 10.75.2 | орг курьера / отправить | 5min | 2025-08-04 09:00 | 2025-08-04 09:05 | 2403 |  |  | 414.57d | 0d | start no earlier than 2025-08-04 09:00 | Зорькин В | 0.08h |  |
| 2405 | 10.75.3 | контроль / забрать | 5min | 2025-08-18 09:05 | 2025-08-18 09:10 | 2404FS+10d |  |  | 414.57d |  | start no earlier than 2025-07-31 09:00 | Зорькин В | 0.08h |  |
| 2406 | 10.76 | **ремонт вал в барабана жир 2л** | 152.01d | 2025-08-04 09:00 A | 2026-03-04 09:05 |  | 50% | 76.01d | 272.58d |  |  |  | 0.17h | 0.08h |
| 2407 | 10.76.1 | отправить на ремонт | 5min | 2025-08-04 09:00 | 2025-08-04 09:05 |  |  |  | 424.58d |  | start no earlier than 2025-08-04 09:00 | Зорькин В | 0.08h |  |
| 2408 | 10.76.2 | контроль забрать | 5min | 2026-03-04 09:00 A | 2026-03-04 09:05 A | 2407FS+10d | 100% |  |  |  | start no earlier than 2026-03-04 09:00 | Зорькин В | 0.08h | 0.08h |
| 2409 | 10.77 | **заявка эл мотор шибера в ЗИП** | 0.01d | 2025-02-19 09:00 | 2025-02-19 09:05 |  |  |  | 542.58d |  |  |  | 0.08h |  |
| 2410 | 10.77.1 | контроль | 5min | 2025-02-19 09:00 | 2025-02-19 09:05 |  |  |  | 542.58d |  | start no earlier than 2025-02-19 09:00 | Шуранов Ю | 0.08h |  |
| 2411 | 10.78 | составить таблицу ЗИП наличия редукторов / где используется | 4h | 2025-02-21 09:00 | 2025-02-21 13:00 |  |  |  | 540.09d |  | start no earlier than 2025-02-21 09:00 | Тимофеев В; Шуранов Ю | 8h |  |
| 2412 | 10.79 | составить таблицу соответсвия номеров подшипников - где используется | 4h | 2025-02-21 09:00 | 2025-02-21 13:00 |  |  |  | 540.09d |  | start no earlier than 2025-02-21 09:00 | Тимофеев В; Шуранов Ю | 8h |  |
| 2413 | 10.80 | ремонт болгарки замена кнопки | 1h | 2024-10-21 09:00 A | 2024-10-21 10:00 A |  | 100% |  |  |  | start no earlier than 2024-10-21 09:00 | Зорькин В | 1h | 1h |
| 2414 | 10.81 | сборка редуктор LT70 замена пружинные шайбы | 1d? | 2024-09-29 09:00 A | 2024-09-30 18:00 A |  | 100% |  |  |  | start no earlier than 2024-09-29 09:00 | Макаревич А | 8h | 8h |

| ID | WBS | Task | Duration | Start | Finish | Complete | Constraint | Resources | Work | Actual work |
| --- | --- | --- | --- | --- | --- | --- | --- | --- | --- | --- |
| 2415 | 10.82 | **прорверить наличие остатков** | 0.01d | 2024-09-25 08:00 A | 2024-09-25 09:05 A | 100% |  |  | 2h | 2h |
| 2416 | 10.82.1 | Манжет (армированная 2,2-75*100*10 ГОСТ 8752-79) | 5min | 2024-09-25 08:00 A | 2024-09-25 09:05 A | 100% | start no earlier than 2024-09-25 08:00 | Дедов В | 0.08h | 0.08h |
| 2417 | 10.82.2 | Манжет (армированная 1,2-80*105*10) | 5min | 2024-09-25 08:00 A | 2024-09-25 09:05 A | 100% | start no earlier than 2024-09-25 08:00 | Дедов В | 0.08h | 0.08h |
| 2418 | 10.82.3 | Манжет (армированная 2,2-80*105*10 ГОСТ 8752-79) | 5min | 2024-09-25 08:00 A | 2024-09-25 09:05 A | 100% | start no earlier than 2024-09-25 08:00 | Дедов В | 0.08h | 0.08h |
| 2419 | 10.82.4 | Манжет (армированная 2,2-55*80*10 ГОСТ 8752-79) | 5min | 2024-09-25 08:00 A | 2024-09-25 09:05 A | 100% | start no earlier than 2024-09-25 08:00 | Дедов В | 0.08h | 0.08h |
| 2420 | 10.82.5 | Масло (Для швейных машин) | 0.01d | 2024-09-25 08:00 A | 2024-09-25 09:05 A | 100% | start no earlier than 2024-09-25 08:00 | Дедов В | 0.08h | 0.08h |
| 2421 | 10.82.6 | Наконечник (ТМЛ 16-10-6 медный луженый) | 0.01d | 2024-09-25 08:00 A | 2024-09-25 09:05 A | 100% | start no earlier than 2024-09-25 08:00 | Дедов В | 0.08h | 0.08h |
| 2422 | 10.82.7 | Наконечник (ТМЛ 10-8-5 медный луженый) | 0.01d | 2024-09-25 08:00 A | 2024-09-25 09:05 A | 100% | start no earlier than 2024-09-25 08:00 | Дедов В | 0.08h | 0.08h |
| 2423 | 10.82.8 | Подшипник (56006-2RS (180106)SKF (30*5*10)) | 0.01d | 2024-09-25 08:00 A | 2024-09-25 09:05 A | 100% | start no earlier than 2024-09-25 08:00 | Дедов В | 0.08h | 0.08h |
| 2424 | 10.82.9 | Подшипник (51410/ART) | 0.01d | 2024-09-25 08:00 A | 2024-09-25 09:05 A | 100% | start no earlier than 2024-09-25 08:00 | Дедов В | 0.08h | 0.08h |
| 2425 | 10.82.10 | Подшипник (UCF 208 (40)) | 0.01d | 2024-09-25 08:00 A | 2024-09-25 09:05 A | 100% | start no earlier than 2024-09-25 08:00 | Дедов В | 0.08h | 0.08h |
| 2426 | 10.82.11 | Подшипник (6203.LLU/2ASU1/NTN) | 0.01d | 2024-09-25 08:00 A | 2024-09-25 09:05 A | 100% | start no earlier than 2024-09-25 08:00 | Дедов В | 0.08h | 0.08h |
| 2427 | 10.82.12 | Подшипник (22212(53512) SKF (60*110*28)) | 0.01d | 2024-09-25 08:00 A | 2024-09-25 09:05 A | 100% | start no earlier than 2024-09-25 08:00 | Дедов В | 0.08h | 0.08h |
| 2428 | 10.82.13 | Подшипник (UC 204 (480204) (20х47х17/31)) | 0.01d | 2024-09-25 08:00 A | 2024-09-25 09:05 A | 100% | start no earlier than 2024-09-25 08:00 | Дедов В | 0.08h | 0.08h |
| 2429 | 10.82.14 | Подшипник (6906-2RS (30*47*9)) | 0.01d | 2024-09-25 08:00 A | 2024-09-25 09:05 A | 100% | start no earlier than 2024-09-25 08:00 | Дедов В | 0.08h | 0.08h |
| 2430 | 10.82.15 | Подшипник (6003-2RS (180103) (17*35*10)) | 0.01d | 2024-09-25 08:00 A | 2024-09-25 09:05 A | 100% | start no earlier than 2024-09-25 08:00 | Дедов В | 0.08h | 0.08h |
| 2431 | 10.82.16 | Подшипник (6203-2RS (180203) (17*40*12)) | 0.01d | 2024-09-25 08:00 A | 2024-09-25 09:05 A | 100% | start no earlier than 2024-09-25 08:00 | Дедов В | 0.08h | 0.08h |
| 2432 | 10.82.17 | Подшипник (6002 2RS, SKF (180102, 15*32*9)) | 0.01d | 2024-09-25 08:00 A | 2024-09-25 09:05 A | 100% | start no earlier than 2024-09-25 08:00 | Дедов В | 0.08h | 0.08h |
| 2433 | 10.82.18 | Провод ПЩ-4 | 0.01d | 2024-09-25 08:00 A | 2024-09-25 09:05 A | 100% | start no earlier than 2024-09-25 08:00 | Дедов В | 0.08h | 0.08h |
| 2434 | 10.82.19 | Ремень клиновый А-1400 | 0.01d | 2024-09-25 08:00 A | 2024-09-25 09:05 A | 100% | start no earlier than 2024-09-25 08:00 | Дедов В | 0.08h | 0.08h |
| 2435 | 10.82.20 | Ремень клиновый В (Б)-1320 | 0.01d | 2024-09-25 08:00 A | 2024-09-25 09:05 A | 100% | start no earlier than 2024-09-25 08:00 | Дедов В | 0.08h | 0.08h |
| 2436 | 10.82.21 | Реле (тепловое РТИ-3353 23-32А) | 0.01d | 2024-09-25 08:00 A | 2024-09-25 09:05 A | 100% | start no earlier than 2024-09-25 08:00 | Дедов В | 0.08h | 0.08h |
| 2437 | 10.82.22 | Шланг (для дозирующих насосов черного цвета 6,4х9,6 мм) | 0.01d | 2024-09-25 08:00 A | 2024-09-25 09:05 A | 100% | start no earlier than 2024-09-25 08:00 | Дедов В | 0.08h | 0.08h |
| 2438 | 10.82.23 | Труба гофрированная (ПВХ 25мм с протяжкой легкая серая) | 0.01d | 2024-09-25 08:00 A | 2024-09-25 09:05 A | 100% | start no earlier than 2024-09-25 08:00 | Дедов В | 0.08h | 0.08h |
| 2439 | 10.82.24 | Шпонка призматическая (DIN 6885 A 18х11х 90мм) | 0.01d | 2024-09-25 08:00 A | 2024-09-25 09:05 A | 100% | start no earlier than 2024-09-25 08:00 | Дедов В | 0.08h | 0.08h |

| ID | WBS | Task | Duration | Start | Finish | Predecessors | Complete | Remaining | Total slack | Free slack | Constraint | Resources | Work | Actual work |
| --- | --- | --- | --- | --- | --- | --- | --- | --- | --- | --- | --- | --- | --- | --- |
| 2440 | 10.83 | **прорверить остатки подшипников** | 0.01d | 2024-09-10 08:00 A | 2024-09-10 09:05 A |  | 100% |  |  |  |  |  | 1.17h | 1.17h |
| 2441 | 10.83.1 | 180101АС17/6 ГПЗ | 5min | 2024-09-10 08:00 A | 2024-09-10 09:05 A |  | 100% |  |  |  | start no earlier than 2024-09-10 08:00 | Дедов В | 0.08h | 0.08h |
| 2442 | 10.83.2 | 180202 (6202 2RS) (15*35*11) SKF | 0.01d | 2024-09-10 08:00 A | 2024-09-10 09:05 A |  | 100% |  |  |  | start no earlier than 2024-09-10 08:00 | Дедов В | 0.08h | 0.08h |
| 2443 | 10.83.3 | 180206 (6206 2RS) (30*62*16) HIKI | 0.01d | 2024-09-10 08:00 A | 2024-09-10 09:05 A |  | 100% |  |  |  | start no earlier than 2024-09-10 08:00 | Дедов В | 0.08h | 0.08h |
| 2444 | 10.83.4 | 22212.EAW33C3 / SNR | 0.01d | 2024-09-10 08:00 A | 2024-09-10 09:05 A |  | 100% |  |  |  | start no earlier than 2024-09-10 08:00 | Дедов В | 0.08h | 0.08h |
| 2445 | 10.83.5 | 51407/NEUTR | 0.01d | 2024-09-10 08:00 A | 2024-09-10 09:05 A |  | 100% |  |  |  | start no earlier than 2024-09-10 08:00 | Дедов В | 0.08h | 0.08h |
| 2446 | 10.83.6 | 6001 ZZ.CM | 0.01d | 2024-09-10 08:00 A | 2024-09-10 09:05 A |  | 100% |  |  |  | start no earlier than 2024-09-10 08:00 | Дедов В | 0.08h | 0.08h |
| 2447 | 10.83.7 | 6201.VVC3/ITJ | 0.01d | 2024-09-10 08:00 A | 2024-09-10 09:05 A |  | 100% |  |  |  | start no earlier than 2024-09-10 08:00 | Дедов В | 0.08h | 0.08h |
| 2448 | 10.83.8 | 6205LLU (NTN) | 0.01d | 2024-09-10 08:00 A | 2024-09-10 09:05 A |  | 100% |  |  |  | start no earlier than 2024-09-10 08:00 | Дедов В | 0.08h | 0.08h |
| 2449 | 10.83.9 | 6206. VVC3/ITJ | 0.01d | 2024-09-10 08:00 A | 2024-09-10 09:05 A |  | 100% |  |  |  | start no earlier than 2024-09-10 08:00 | Дедов В | 0.08h | 0.08h |
| 2450 | 10.83.10 | 686-2RS/ART | 0.01d | 2024-09-10 08:00 A | 2024-09-10 09:05 A |  | 100% |  |  |  | start no earlier than 2024-09-10 08:00 | Дедов В | 0.08h | 0.08h |
| 2451 | 10.83.11 | 7512 (32212)(60*110*24) | 0.01d | 2024-09-10 08:00 A | 2024-09-10 09:05 A |  | 100% |  |  |  | start no earlier than 2024-09-10 08:00 | Дедов В | 0.08h | 0.08h |
| 2452 | 10.83.12 | HK1210/NEUTR | 0.01d | 2024-09-10 08:00 A | 2024-09-10 09:05 A |  | 100% |  |  |  | start no earlier than 2024-09-10 08:00 | Дедов В | 0.08h | 0.08h |
| 2453 | 10.83.13 | UC 205 Neutr | 0.01d | 2024-09-10 08:00 A | 2024-09-10 09:05 A |  | 100% |  |  |  | start no earlier than 2024-09-10 08:00 | Дедов В | 0.08h | 0.08h |
| 2454 | 10.83.14 | UCFC 210 ASAHI | 0.01d | 2024-09-10 08:00 A | 2024-09-10 09:05 A |  | 100% |  |  |  | start no earlier than 2024-09-10 08:00 | Дедов В | 0.08h | 0.08h |
| 2455 | 10.84 | **создать реестр документации на оборудование** | 2d? | 2024-09-10 09:00 | 2024-09-11 18:00 |  |  |  | 656.59d |  |  |  | 8h |  |
| 2456 | 10.84.1 | опись документации в наличии, сортировка | 1d? | 2024-09-10 09:00 | 2024-09-10 18:00 |  |  |  | 656.59d | 0d | start no earlier than 2024-09-10 09:00 | Зорькин В | 8h |  |
| 2457 | 10.84.2 | оформление реестра наличия документации | 1d? | 2024-09-11 09:00 | 2024-09-11 18:00 | 2456 |  |  | 656.59d |  | start no earlier than 2024-09-06 08:00 |  |  |  |
| 2458 | 10.85 | **ремонт двигатель с шлюз питатель** | 0.02d | 2024-08-09 09:00 | 2024-08-09 09:10 |  |  |  | 680.57d |  |  |  | 0.17h |  |
| 2459 | 10.85.1 | контроль / орг курьер - | 10min | 2024-08-09 09:00 | 2024-08-09 09:10 |  |  |  | 680.57d |  | start no earlier than 2024-08-09 09:00 | Шуранов Ю | 0.17h |  |
| 2460 | 10.86 | **организовать хранение зап. частей для производства в одном месте, создать склад и нести полную материальную ответственность** | 18d? | 2024-05-09 09:00 A | 2024-06-03 18:00 |  | 15% | 15.3d? | 728.59d |  |  |  | 272h | 24h |
| 2461 | 10.86.1 | монтаж забор / ворота | 3d | 2024-05-09 09:00 A | 2024-05-13 18:00 A |  | 100% |  |  |  | start no earlier than 2024-05-09 09:00 | Макаревич А | 24h | 24h |
| 2462 | 10.86.2 | монтаж ворота, забор | 1d? | 2024-05-14 09:00 | 2024-05-14 18:00 | 2461 |  |  | 728.59d | 0d | start no earlier than 2024-05-13 09:00 | Некрасов А; Черепанов И | 16h |  |
| 2463 | 10.86.3 | подготови доски для стеллажей на 3 складе | 1d? | 2024-05-20 09:00 | 2024-05-20 18:00 |  |  |  | 738.59d |  | start no earlier than 2024-05-18 09:00 | КИнжекул | 8h |  |
| 2464 | 10.86.4 | переместить стеллажи на 2 этаж ГП + сборка | 1d? | 2024-05-15 09:00 | 2024-05-15 18:00 | 2462 |  |  | 735.59d | 7d | start no earlier than 2024-05-08 08:00 | Некрасов А; Черепанов И | 16h |  |
| 2465 | 10.86.5 | составить список всех позиций за забором для учета | 2d | 2024-05-15 09:00 | 2024-05-16 18:00 | 2462 |  |  | 728.59d | 0d | start no earlier than 2024-05-14 09:00 | Шуранов Ю | 16h |  |
| 2466 | 10.86.6 | состаить список ЗИП склад 3 цех | 2d | 2024-05-17 09:00 | 2024-05-20 18:00 | 2465 |  |  | 728.59d | 0d | start no earlier than 2024-05-08 09:00 | Шуранов Ю | 16h |  |
| 2467 | 10.86.7 | состаить список ЗИП склад слесарное помещение | 2d | 2024-05-21 09:00 | 2024-05-22 18:00 | 2466 |  |  | 728.59d | 0d | start no earlier than 2024-05-14 09:00 | Шуранов Ю | 16h |  |
| 2468 | 10.86.8 | составить список ЗИП Контейнер | 2d | 2024-05-23 09:00 | 2024-05-24 18:00 | 2467 |  |  | 728.59d | 0d | start no earlier than 2024-05-14 09:00 | Шуранов Ю | 16h |  |
| 2469 | 10.86.9 | перемещение ЗИП с 3 цеха на 2 этаж ГП | 2d | 2024-05-27 09:00 | 2024-05-28 18:00 | 2464, 2468 |  |  | 728.59d | 0d | start no earlier than 2024-05-14 09:00 | Шуранов Ю; Некрасов А; Черепанов И | 48h |  |
| 2470 | 10.86.10 | перемещение ЗИП с контейнера на 2 этаж ГП | 2d | 2024-05-29 09:00 | 2024-05-30 18:00 | 2469 |  |  | 728.59d | 0d | start no earlier than 2024-05-14 09:00 | Шуранов Ю; Некрасов А; Черепанов И | 48h |  |
| 2471 | 10.86.11 | перемещение ЗИП с слесарного помещения на 2 этаж ГП | 2d | 2024-05-31 09:00 | 2024-06-03 18:00 | 2470 |  |  | 728.59d |  | start no earlier than 2024-05-14 09:00 | Шуранов Ю; Некрасов А; Черепанов И | 48h |  |

| ID | WBS | Task | Type | Duration | Start | Finish | Predecessors | Complete | Remaining | Actual start | Total slack | Free slack | Constraint | Resources | Work | Actual work |
| --- | --- | --- | --- | --- | --- | --- | --- | --- | --- | --- | --- | --- | --- | --- | --- | --- |
| 2472 | 10.87 | **клапан эл магнитный для парогенератора на подачу воды** |  | 0.06d | 2025-01-16 09:00 | 2025-01-16 09:30 |  |  |  |  | 566.53d |  |  |  | 0.5h |  |
| 2473 | 10.87.1 | контролль остатков, заявка на катушку |  | 30min | 2025-01-16 09:00 | 2025-01-16 09:30 |  |  |  |  | 566.53d |  | start no earlier than 2025-01-16 09:00 | Шуранов Ю | 0.5h |  |
| 2474 | 10.88 | **вал с конвейера №1 разместить на ремонт** |  | 15.06d | 2024-05-14 09:00 | 2024-06-04 09:30 |  |  |  |  | 728.53d |  |  |  | 120.5h |  |
| 2475 | 10.88.1 | орг курьера |  | 15min | 2024-05-14 09:00 | 2024-05-14 09:15 |  |  |  |  | 728.53d | 0d | start no earlier than 2024-05-14 09:00 | Шуранов Ю | 0.25h |  |
| 2476 | 10.88.2 | ремонт |  | 15d | 2024-05-14 09:15 | 2024-06-04 09:15 | 2475 |  |  |  | 728.53d | 0d | start no earlier than 2024-05-08 08:00 | Подрядчик | 120h |  |
| 2477 | 10.88.3 | контроль, орг курьера забрать |  | 15min | 2024-06-04 09:15 | 2024-06-04 09:30 | 2476 |  |  |  | 728.53d |  | start no earlier than 2024-05-14 09:00 | Шуранов Ю | 0.25h |  |
| 2478 | 10.89 | подшипник LMK20.UU/FBJ или NEUTR - 4шт ТЕКО после замены |  | 10min | 2024-05-14 09:00 | 2024-05-14 09:10 |  |  |  |  | 743.57d |  | start no earlier than 2024-05-14 09:00 | Шуранов Ю | 0.17h |  |
| 2479 | 10.90 | UC204 подшипники |  | 10min | 2024-05-14 09:00 | 2024-05-14 09:10 |  |  |  |  | 743.57d |  | start no earlier than 2024-05-14 09:00 | Шуранов Ю | 0.17h |  |
| 2480 | 10.91 | сетка на дробилку 37квт 5 цех 0,5мм и 0,7 мм - заявка ЕВРОМЕД |  | 1h | 2024-05-14 09:00 | 2024-05-14 10:00 |  |  |  |  | 743.47d |  | start no earlier than 2024-05-14 09:00 | Шуранов Ю | 1h |  |
| 2481 | 11 | **ЗИП заказ (заявки)** |  | 4.02d | 2026-09-04 09:00 A | 2026-09-09 09:10 |  | 71% | 1.15d |  | 136.57d |  |  |  | 0.58h | 0.42h |
| 2482 | 11.1 | контактор для тельфера 5ц 24 переменка |  | 15min | 2026-09-04 09:00 A | 2026-09-04 09:15 A |  | 100% |  |  |  |  | start no earlier than 2026-09-04 09:00 | Зорькин В | 0.25h | 0.25h |
| 2483 | 11.2 | Наконечники штырьевые для сборки схем (получить инфу у Тимофеева) |  | 10min | 2026-09-09 09:00 | 2026-09-09 09:10 |  |  |  |  | 136.57d |  | start no earlier than 2026-09-09 09:00 | Зорькин В | 0.17h |  |
| 2484 | 11.3 | Газ в слесарку, закончился |  | 10min | 2026-09-07 09:00 A | 2026-09-07 09:10 A |  | 100% |  |  |  |  | start no earlier than 2026-09-07 09:00 | Зорькин В | 0.17h | 0.17h |
| 2485 | 12 | **ТО** |  | 772.25d? | 2023-12-28 09:00 A | 2026-12-03 11:00 |  | 45% | 427.55d? |  | 69.34d |  |  |  | 30789.1h | 17172.7h |
| 2486 | 12.1 | **1 цех** |  | 134.25d? | 2024-04-04 09:00 | 2024-10-09 11:00 |  | 60% | 53.66d? | 2023-12-28 09:00 |  |  |  |  | 5916.25h | 802.67h |
| 2487 | 12.1.1 | **Разобрать улитки с охладителя 2 линия, 4 улитки на печах и улитки циклонов - замена подшипников, каких нет сообщить** |  | 16.25d | 2026-09-07 09:00 A | 2026-09-23 11:00 |  | 95% | 0.79d |  | 122.34d |  |  |  | 22.5h | 21.5h |
| 2488 | 12.1.1.1 | очистка моторов шлюз питателей циклонов от пыли |  | 30min | 2026-09-11 09:00 A | 2026-09-11 09:30 A |  | 100% |  |  |  |  | start no earlier than 2026-09-11 08:00 | Бобренок В | 0.5h | 0.5h |
| 2489 | 12.1.1.2 | очистка центрального вала от налипей грязи через смотровое окно |  | 1h | 2026-09-11 09:00 A | 2026-09-11 10:00 A |  | 100% |  |  |  |  | start no earlier than 2026-09-11 08:00 | Бобренок В | 1h | 1h |
| 2490 | 12.1.1.3 | монтаж шильдиков на которые починил |  | 1h | 2026-09-15 09:00 | 2026-09-15 10:00 |  |  |  |  | 130.47d |  | start no earlier than 2026-09-15 09:00 | Бундин В | 1h |  |
| 2491 | 12.1.1.4 | вентилятор охладителя | manual | 4h | 2026-09-07 09:00 A | 2026-09-07 13:00 A |  | 100% |  |  |  |  |  | Бундин В | 4h | 4h |
| 2492 | 12.1.1.5 | линия 1 вентилятор печи 1 |  | 4h | 2026-09-08 09:00 A | 2026-09-08 13:00 A |  | 100% |  |  |  |  | start no earlier than 2026-09-08 09:00 | Бундин В | 4h | 4h |
| 2493 | 12.1.1.6 | линия 1 вентилятор печи 2 | manual | 4h | 2026-09-09 09:00 A | 2026-09-09 13:00 A |  | 100% |  |  |  |  |  | Бундин В | 4h | 4h |
| 2494 | 12.1.1.7 | линия 2 вентилятор циклона 1 | manual | 4h | 2026-09-09 14:00 A | 2026-09-09 18:00 A | 2493 | 100% |  |  |  |  |  | Бундин В | 4h | 4h |
| 2495 | 12.1.1.8 | линия 2 вентилятор циклона 2 | manual | 2h | 2026-09-23 09:00 A | 2026-09-23 11:00 A | 2494 | 100% |  |  |  |  |  | Бундин В; Некрасов А | 4h | 4h |
| 2496 | 12.1.2 | ТО ШУ печи №1 (замена кабеля, наконечников…) |  | 1h | 2026-08-27 09:00 A | 2026-08-27 10:00 A |  | 100% |  |  |  |  | start no earlier than 2026-08-27 09:00 | Тимофеев В | 1h | 1h |

| ID | WBS | Task | Duration | Start | Finish | Complete | Remaining | Total slack | Constraint | Resources | Work | Actual work |
| --- | --- | --- | --- | --- | --- | --- | --- | --- | --- | --- | --- | --- |
| 2497 | 12.1.3 | **приточная вентиляция** | 157.12d | 2026-03-04 09:00 A | 2026-09-30 10:00 | 75% | 39.28d | 115.47d |  |  | 4h | 3h |
| 2498 | 12.1.3.1 | замена оба фильтра | 1h | 2026-03-04 09:00 A | 2026-03-04 10:00 A | 100% |  |  | start no earlier than 2026-03-04 08:00 | Труфанов А | 1h | 1h |
| 2499 | 12.1.3.2 | замена фильтра | 1h | 2026-04-15 09:00 A | 2026-04-15 10:00 A | 100% |  |  | start no earlier than 2026-04-15 09:00 | Труфанов А | 1h | 1h |
| 2500 | 12.1.3.3 | Замена фильтра | 1h | 2026-07-29 09:00 A | 2026-07-29 10:00 A | 100% |  |  | start no earlier than 2026-07-29 08:00 | Бундин В | 1h | 1h |
| 2501 | 12.1.3.4 | Проверка фильтра, по необходимости замена | 1h | 2026-09-30 09:00 | 2026-09-30 10:00 |  |  | 115.47d | start no earlier than 2026-09-30 09:00 | Дедов В | 1h |  |
| 2502 | 12.1.4 | **техническая вода** | 152.02d | 2026-03-11 09:00 A | 2026-09-30 09:10 | 89% | 16.89d | 115.57d |  |  | 1.5h | 1.33h |
| 2503 | 12.1.4.1 | проверка гидроаккумулятора | 10min | 2026-03-11 09:00 A | 2026-03-11 09:10 A | 100% |  |  | start no earlier than 2026-03-11 09:00 | Некрасов А | 0.17h | 0.17h |
| 2504 | 12.1.4.2 | замена фильтров | 10min | 2026-03-11 09:00 A | 2026-03-11 09:10 A | 100% |  |  | start no earlier than 2026-03-11 09:00 | Некрасов А | 0.17h | 0.17h |
| 2505 | 12.1.4.3 | замена фильтров | 30min | 2026-05-27 09:00 A | 2026-05-27 09:30 A | 100% |  |  | start no earlier than 2026-03-11 09:00 | Бундин В | 0.5h | 0.5h |
| 2506 | 12.1.4.4 | замена фильтров | 30min | 2026-03-12 09:00 A | 2026-03-12 09:30 A | 100% |  |  | start no earlier than 2026-03-12 09:00 | Бобренок В | 0.5h | 0.5h |
| 2507 | 12.1.4.5 | проверка гидроаккумулятора | 10min | 2026-09-30 09:00 | 2026-09-30 09:10 |  |  | 115.57d | start no earlier than 2026-09-30 09:00 | Тимофеев В | 0.17h |  |
| 2508 | 12.1.5 | **линия 1** | 147.06d? | 2026-03-18 09:00 A | 2026-09-30 09:30 | 93% | 10.29d? | 115.53d |  |  | 27h | 24.25h |
| 2509 | 12.1.5.1 | **питатель экструдера** | 147.06d? | 2026-03-18 09:00 A | 2026-09-30 09:30 | 95% | 6.68d? | 115.53d |  |  | 11h | 10.5h |
| 2510 | 12.1.5.1.1 | замена подшипники | 1d? | 2026-04-08 09:00 A | 2026-04-08 18:00 A | 100% |  |  | start no earlier than 2026-04-08 09:00 | Тимофеев В | 8h | 8h |
| 2511 | 12.1.5.1.2 | контроль палстик втулки | 1h | 2026-05-13 09:00 A | 2026-05-13 10:00 A | 100% |  |  | start no earlier than 2026-05-13 09:00 | Бобренок В | 1h | 1h |
| 2512 | 12.1.5.1.3 | контроль шестерен привода, редуктора | 10min | 2026-03-18 09:00 A | 2026-03-18 09:10 A | 100% |  |  | start no earlier than 2026-03-18 09:00 | Труфанов А | 0.17h | 0.17h |
| 2513 | 12.1.5.1.4 | контроль состояние пластик втулки | 30min | 2026-06-02 09:00 A | 2026-06-02 09:30 A | 100% |  |  | start no earlier than 2026-06-02 09:00 | Некрасов А | 0.5h | 0.5h |
| 2514 | 12.1.5.1.5 | Ревизия питателя | 20min | 2026-07-29 09:00 A | 2026-07-29 09:20 A | 100% |  |  | start no earlier than 2026-07-29 08:00 | Бундин В | 0.33h | 0.33h |
| 2515 | 12.1.5.1.6 | Ревизия питателя, контроль состояния подшипников/втулки/шестерен | 30min | 2026-09-23 09:00 A | 2026-09-23 09:30 A | 100% |  |  | start no earlier than 2026-09-23 09:00 | Некрасов А | 0.5h | 0.5h |
| 2516 | 12.1.5.1.7 | Ревизия питателя, контроль состояния подшипников/втулки/шестерен/втулки | 30min | 2026-09-30 09:00 | 2026-09-30 09:30 |  |  | 115.53d | start no earlier than 2026-09-30 09:00 | Тимофеев В | 0.5h |  |
| 2517 | 12.1.5.2 | **прекондицинер экструдера** | 107.03d | 2026-05-13 09:00 A | 2026-09-30 09:15 | 75% | 26.76d | 115.56d |  |  | 1h | 0.75h |
| 2518 | 12.1.5.2.1 | контроль привода, подшипников | 15min | 2026-05-13 09:00 A | 2026-05-13 09:15 A | 100% |  |  | start no earlier than 2026-05-13 09:00 | Бобренок В | 0.25h | 0.25h |
| 2519 | 12.1.5.2.2 | контроль привода, подшипников | 15min | 2026-07-29 09:00 A | 2026-07-29 09:15 A | 100% |  |  | start no earlier than 2026-07-29 08:00 | Труфанов А | 0.25h | 0.25h |
| 2520 | 12.1.5.2.3 | контроль привода, подшипников | 15min | 2026-09-23 09:00 A | 2026-09-23 09:15 A | 100% |  |  | start no earlier than 2026-09-23 09:00 | Некрасов А | 0.25h | 0.25h |
| 2521 | 12.1.5.2.4 | контроль привода, подшипников/при необходимости замена | 15min | 2026-09-30 09:00 | 2026-09-30 09:15 |  |  | 115.56d | start no earlier than 2026-09-30 09:00 | Тимофеев В | 0.25h |  |

| ID | WBS | Task | Duration | Start | Finish | Complete | Remaining | Total slack | Constraint | Resources | Work | Actual work |
| --- | --- | --- | --- | --- | --- | --- | --- | --- | --- | --- | --- | --- |
| 2522 | 12.1.5.3 | **парогенератор** | 131.12d | 2026-04-08 09:00 A | 2026-09-29 10:00 | 92% | 10.09d | 116.47d |  |  | 15h | 13h |
| 2523 | 12.1.5.3.1 | вскрытие электородов, чистка | 1h | 2026-05-13 09:00 A | 2026-05-13 10:00 A | 100% |  |  | start no earlier than 2026-05-13 09:00 | Бобренок В | 1h | 1h |
| 2524 | 12.1.5.3.2 | замена реле вкл насоса. (не вкл) | 2h | 2026-05-13 09:00 A | 2026-05-13 11:00 A | 100% |  |  | start no earlier than 2026-05-13 09:00 | Бобренок В | 2h | 2h |
| 2525 | 12.1.5.3.3 | замена гофротрубы / закрепить жестко | 2h | 2026-04-08 09:00 A | 2026-04-08 11:00 A | 100% |  |  | start no earlier than 2026-04-08 09:00 | Бобренок В | 2h | 2h |
| 2526 | 12.1.5.3.4 | чистка парогенератора, если нужно замена электродов | 2h | 2026-06-10 09:00 A | 2026-06-10 11:00 A | 100% |  |  | start no earlier than 2026-06-10 09:00 | Дедов В | 2h | 2h |
| 2527 | 12.1.5.3.5 | читска парогенератора, если нужно замена электродов | 2h | 2026-05-20 09:00 A | 2026-05-20 11:00 A | 100% |  |  | start no earlier than 2026-05-20 09:00 | Некрасов А | 2h | 2h |
| 2528 | 12.1.5.3.6 | читска парогенератора, если нужно замена электродов | 1h | 2026-06-02 09:00 A | 2026-06-02 10:00 A | 100% |  |  | start no earlier than 2026-06-02 09:00 | Тимофеев В | 1h | 1h |
| 2529 | 12.1.5.3.7 | вскрытие электородов, чистка | 1h | 2026-08-12 09:00 A | 2026-08-12 10:00 A | 100% |  |  | start no earlier than 2026-08-12 09:00 | Некрасов А | 1h | 1h |
| 2530 | 12.1.5.3.8 | вскрытие электородов, чистка (при остановке линии на мойку, если не остановилась, передать по смене Бундину) | 1h | 2026-09-22 09:00 A | 2026-09-22 10:00 A | 100% |  |  | start no earlier than 2026-09-22 09:00 | Макаревич А; Бундин В | 2h | 2h |
| 2531 | 12.1.5.3.9 | вскрытие электородов, чистка (при остановке линии на мойку, если не остановилась, передать по смене Тимофееву) | 1h | 2026-09-29 09:00 | 2026-09-29 10:00 |  |  | 116.47d | start no earlier than 2026-09-29 09:00 | Бундин В; Тимофеев В | 2h |  |
| 2532 | 12.1.6 | **редуктор экструдера и маслянная станция** | 633.12d | 2024-05-07 09:00 A | 2026-09-30 10:00 | 72% | 175.77d | 115.47d |  |  | 34.92h | 26.33h |
| 2533 | 12.1.6.1 | чистка фильтра | 30min | 2026-06-02 09:00 A | 2026-06-02 09:30 A | 100% |  |  | start no earlier than 2026-06-02 09:00 | Тимофеев В | 0.5h | 0.5h |
| 2534 | 12.1.6.2 | муфта редутор-мотор | 15min | 2026-03-11 09:00 A | 2026-03-11 09:15 A | 100% |  |  | start no earlier than 2026-03-11 09:00 | Тимофеев В | 0.25h | 0.25h |
| 2535 | 12.1.6.3 | чистка фильтра | 30min | 2026-07-16 09:00 A | 2026-07-16 09:30 A | 100% |  |  | start no earlier than 2026-07-16 09:00 | Бобренок В | 0.5h | 0.5h |
| 2536 | 12.1.6.4 | тэны и термпары шнеков- прортяжка | 30min | 2025-02-25 09:00 | 2025-02-25 09:30 |  |  | 538.53d | start no earlier than 2025-02-25 09:00 | Дедов В | 0.5h |  |
| 2537 | 12.1.6.5 | Чистка фильтра | 30min | 2026-07-29 08:00 A | 2026-07-29 09:30 A | 100% |  |  | start no earlier than 2026-07-29 08:00 | Тимофеев В | 0.5h | 0.5h |
| 2538 | 12.1.6.6 | тэны и термпоры шнеков- прортяжка | 30min | 2026-09-23 09:00 A | 2026-09-23 09:30 A | 100% |  |  | start no earlier than 2026-09-23 09:00 | Некрасов А | 0.5h | 0.5h |
| 2539 | 12.1.6.7 | Чистка фильтра | 30min | 2026-09-23 09:00 A | 2026-09-23 09:30 A | 100% |  |  | start no earlier than 2026-09-23 09:00 | Бундин В | 0.5h | 0.5h |
| 2540 | 12.1.6.8 | Чистка фильтра/тэны и термопары шнеков - протяжка | 30min | 2026-09-30 09:00 | 2026-09-30 09:30 |  |  | 115.53d | start no earlier than 2026-09-30 09:00 | Тимофеев В | 0.5h |  |
| 2541 | 12.1.6.9 | **шкаф управления экструдером** | 138.03d | 2026-03-31 09:00 A | 2026-09-30 09:15 | 86% | 19.72d | 115.56d |  |  | 1.75h | 1.5h |
| 2542 | 12.1.6.9.1 | протяжка контактов | 30min | 2026-03-31 09:00 A | 2026-03-31 09:30 A | 100% |  |  | start no earlier than 2026-03-11 09:00 | Некрасов А | 0.5h | 0.5h |
| 2543 | 12.1.6.9.2 | частотные привода экструдера, ножей, питателя - продувка | 30min | 2026-05-27 09:00 A | 2026-05-27 09:30 A | 100% |  |  | start no earlier than 2026-05-27 09:00 | Бундин В | 0.5h | 0.5h |
| 2544 | 12.1.6.9.3 | частотные привода экструдера, ножей, питателя - продувка | 15min | 2026-07-29 09:00 A | 2026-07-29 09:15 A | 100% |  |  | start no earlier than 2026-07-29 08:00 | Труфанов А | 0.25h | 0.25h |
| 2545 | 12.1.6.9.4 | частотные привода экструдера, ножей, питателя - продувка | 15min | 2026-09-23 09:00 A | 2026-09-23 09:15 A | 100% |  |  | start no earlier than 2026-09-23 09:00 | Некрасов А | 0.25h | 0.25h |
| 2546 | 12.1.6.9.5 | частотные привода экструдера, ножей, питателя - продувка | 15min | 2026-09-30 09:00 | 2026-09-30 09:15 |  |  | 115.56d | start no earlier than 2026-09-30 09:00 | Тимофеев В | 0.25h |  |

| ID | WBS | Task | Duration | Start | Finish | Complete | Remaining | Total slack | Constraint | Resources | Work | Actual work |
| --- | --- | --- | --- | --- | --- | --- | --- | --- | --- | --- | --- | --- |
| 2547 | 12.1.6.10 | **блок тэнов сушки** | 102.03d | 2026-05-20 09:00 A | 2026-09-30 09:15 | 71% | 29.15d | 115.56d |  |  | 1.75h | 1.25h |
| 2548 | 12.1.6.10.1 | ревизия, замена отгоревших жил, проверка токов | 1h | 2026-05-20 09:00 A | 2026-05-20 10:00 A | 100% |  |  | start no earlier than 2026-05-20 09:00 | Некрасов А | 1h | 1h |
| 2549 | 12.1.6.10.2 | ревизия/ проверка токов | 15min | 2026-08-26 09:00 | 2026-08-26 09:15 |  |  | 147.56d | start no earlier than 2026-08-26 09:00 | Некрасов А | 0.25h |  |
| 2550 | 12.1.6.10.3 | ревизия/ проверка токов | 15min | 2026-09-23 09:00 A | 2026-09-23 09:15 A | 100% |  |  | start no earlier than 2026-09-23 09:00 | Труфанов А | 0.25h | 0.25h |
| 2551 | 12.1.6.10.4 | ревизия/ проверка токов | 15min | 2026-09-30 09:00 | 2026-09-30 09:15 |  |  | 115.56d | start no earlier than 2026-09-30 09:00 | Тимофеев В | 0.25h |  |
| 2552 | 12.1.6.11 | **шкаф управления тэнами сушки** | 68.5d | 2026-06-10 09:00 A | 2026-09-11 13:00 | 11% | 61.29d | 134.09d |  |  | 4.75h | 0.5h |
| 2553 | 12.1.6.11.1 | протяжка контактов | 15min | 2026-06-10 09:00 | 2026-06-10 09:15 |  |  | 202.56d | start no earlier than 2026-06-10 09:00 | Дедов В | 0.25h |  |
| 2554 | 12.1.6.11.2 | замена неисправных жил | 4h | 2026-09-11 09:00 | 2026-09-11 13:00 |  |  | 134.09d | start no earlier than 2026-09-11 09:00 | Тимофеев В | 4h |  |
| 2555 | 12.1.6.11.3 | частотные привода экструдера, ножей, питателя - продувка | 30min | 2026-07-16 09:00 A | 2026-07-16 09:30 A | 100% |  |  | start no earlier than 2026-07-16 09:00 | Бобренок В | 0.5h | 0.5h |
| 2556 | 12.1.6.12 | конвейер №1 с печи в дрожировщик прорверка подшипники, реуктор | 30min | 2025-02-17 09:00 | 2025-02-17 09:30 |  |  | 544.53d | start no earlier than 2025-02-15 09:00 | Дедов В | 0.5h |  |
| 2557 | 12.1.6.13 | Осмотр, продувка, протяжка контактов | 20min | 2026-09-23 09:00 A | 2026-09-23 09:20 A | 100% |  |  | start no earlier than 2026-09-23 09:00 | Труфанов А | 0.33h | 0.33h |
| 2558 | 12.1.6.14 | Осмотр, продувка, протяжка контактов | 20min | 2026-09-30 09:00 | 2026-09-30 09:20 |  |  | 115.55d | start no earlier than 2026-09-30 09:00 | Тимофеев В | 0.33h |  |
| 2559 | 12.1.6.15 | **барабан смесительный дрожировка - прорверка подшипнки , реуктор** | 157.03d | 2026-03-04 08:00 A | 2026-09-30 09:15 | 91% | 14.28d | 115.56d |  |  | 2.75h | 2.5h |
| 2560 | 12.1.6.15.1 | замена вал № 4 час | 2h | 2026-03-04 08:00 A | 2026-03-04 11:00 A | 100% |  |  | start no earlier than 2026-03-04 08:00 | Тимофеев В | 2h | 2h |
| 2561 | 12.1.6.15.2 | Дефектовка - проверить подачу, вибрации, посторонние шумы. | 15min | 2026-07-29 08:00 A | 2026-07-29 09:15 A | 100% |  |  | start no earlier than 2026-07-29 08:00 | Тимофеев В | 0.25h | 0.25h |
| 2562 | 12.1.6.15.3 | Дефектовка - проверить подачу, вибрации, посторонние шумы. | 15min | 2026-09-23 09:00 A | 2026-09-23 09:15 A | 100% |  |  | start no earlier than 2026-09-23 09:00 | Некрасов А | 0.25h | 0.25h |
| 2563 | 12.1.6.15.4 | Дефектовка - проверить подачу, вибрации, посторонние шумы/проверка фильтров/насосов/фитингов | 15min | 2026-09-30 09:00 | 2026-09-30 09:15 |  |  | 115.56d | start no earlier than 2026-09-30 09:00 | Тимофеев В | 0.25h |  |
| 2564 | 12.1.6.16 | **печь** | 0.25d | 2026-07-16 09:00 A | 2026-07-16 11:00 A | 100% |  |  |  |  | 7h | 7h |
| 2565 | 12.1.6.16.1 | проверка состояния сетки, ремонт шплинтов | 2h | 2026-07-16 09:00 A | 2026-07-16 11:00 A | 100% |  |  | start no earlier than 2026-07-16 09:00 | Бобренок В; Некрасов А; Труфанов А | 6h | 6h |
| 2566 | 12.1.6.16.2 | укоротить звено привода | 1h | 2026-07-16 09:00 A | 2026-07-16 10:00 A | 100% |  |  | start no earlier than 2026-07-16 09:00 | Некрасов А | 1h | 1h |
| 2567 | 12.1.6.17 | вентиляторы обдува сушки | 2h | 2024-06-14 09:00 A | 2024-06-14 11:00 A | 100% |  |  | start no earlier than 2024-06-14 09:00 | ТО_2 | 2h | 2h |
| 2568 | 12.1.6.18 | пневотранспорт вентилятор | 2h | 2024-05-07 09:00 A | 2024-05-07 11:00 A | 100% |  |  | start no earlier than 2024-05-07 09:00 | ТО_1 | 2h | 2h |
| 2569 | 12.1.6.19 | пневотранспорт роторный питатель - проверка масла | 30min | 2025-02-17 09:00 A | 2025-02-17 09:30 A | 100% |  |  | start no earlier than 2025-02-16 09:00 | Черепанов И | 0.5h | 0.5h |
| 2570 | 12.1.6.20 | пневотранспорт роторный питатель - проверка масла | 30min | 2026-07-29 09:00 A | 2026-07-29 09:30 A | 100% |  |  | start no earlier than 2026-07-29 08:00 | Труфанов А | 0.5h | 0.5h |
| 2571 | 12.1.6.21 | привод сетки ПЕЧИ сушки - прорверка масла | 30min | 2025-02-17 09:00 A | 2025-02-17 09:30 A | 100% |  |  | start no earlier than 2025-02-16 09:00 | Черепанов И | 0.5h | 0.5h |
| 2572 | 12.1.6.22 | привод сетки ПЕЧИ сушки - прорверка масла | 30min | 2026-07-29 09:00 A | 2026-07-29 09:30 A | 100% |  |  | start no earlier than 2026-07-29 08:00 | Труфанов А | 0.5h | 0.5h |
| 2573 | 12.1.6.23 | дозатор сухой гидролизат - разборка, чистка, замена подшипников | 2h | 2026-08-18 09:00 A | 2026-08-18 11:00 A | 100% |  |  | start no earlier than 2026-08-18 09:00 | Бундин В | 2h | 2h |
| 2574 | 12.1.6.24 | Осмотр цепи и сетки | 1h | 2026-07-29 09:00 A | 2026-07-29 10:00 A | 100% |  |  | start no earlier than 2026-07-29 08:00 | Труфанов А | 1h | 1h |
| 2575 | 12.1.6.25 | Контроль состояния сетки/цепи | 30min | 2026-09-23 09:00 A | 2026-09-23 09:30 A | 100% |  |  | start no earlier than 2026-09-23 09:00 | Некрасов А | 0.5h | 0.5h |
| 2576 | 12.1.6.26 | Смазка цепи (при наличии на складе) | 1h | 2026-09-23 09:00 A | 2026-09-23 10:00 A | 100% |  |  | start no earlier than 2026-09-23 09:00 | Некрасов А | 1h | 1h |
| 2577 | 12.1.6.27 | Контроль состояния сетки/цепи | 1h | 2026-09-30 09:00 | 2026-09-30 10:00 |  |  | 115.47d | start no earlier than 2026-09-30 09:00 | Тимофеев В | 1h |  |
| 2578 | 12.1.6.28 | Проверка масла на приводе/осмотр | 30min | 2026-09-30 09:00 | 2026-09-30 09:30 |  |  | 115.53d | start no earlier than 2026-09-30 09:00 | Тимофеев В | 0.5h |  |

| ID | WBS | Task | Duration | Start | Finish | Complete | Remaining | Actual start | Total slack | Constraint | Resources | Work | Actual work |
| --- | --- | --- | --- | --- | --- | --- | --- | --- | --- | --- | --- | --- | --- |
| 2579 | 12.1.7 | **линия 2** | 0.25d? | 2023-12-29 09:00 | 2023-12-29 11:00 | 80% | 0.05d? | 2024-04-10 09:00 |  |  |  | 41.58h | 32.75h |
| 2580 | 12.1.7.1 | **питатель экструдера** | 147.06d | 2026-03-18 09:00 A | 2026-09-30 09:30 | 91% | 13.37d |  | 115.53d |  |  | 4.5h | 4h |
| 2581 | 12.1.7.1.1 | контроль состояние пластик втулки | 30min | 2026-06-02 09:00 A | 2026-06-02 09:30 A | 100% |  |  |  | start no earlier than 2026-06-02 09:00 | Некрасов А | 0.5h | 0.5h |
| 2582 | 12.1.7.1.2 | замена подшипники | 1h | 2026-04-08 09:00 A | 2026-04-08 10:00 A | 100% |  |  |  | start no earlier than 2026-04-08 09:00 |  |  |  |
| 2583 | 12.1.7.1.3 | замена шестеренок -взять у Веры на складе | 2h | 2026-05-20 09:00 A | 2026-05-20 11:00 A | 100% |  |  |  | start no earlier than 2026-05-20 09:00 | Бобренок В | 2h | 2h |
| 2584 | 12.1.7.1.4 | контроль пластик втулки | 30min | 2026-05-13 09:00 A | 2026-05-13 09:30 A | 100% |  |  |  | start no earlier than 2026-05-13 09:00 | Бобренок В | 0.5h | 0.5h |
| 2585 | 12.1.7.1.5 | контроль шестерен привода, редуктора | 10min | 2026-03-18 09:00 A | 2026-03-18 09:10 A | 100% |  |  |  | start no earlier than 2026-03-18 09:00 | Труфанов А | 0.17h | 0.17h |
| 2586 | 12.1.7.1.6 | Ревизия питателя | 20min | 2026-07-29 09:00 A | 2026-07-29 09:20 A | 100% |  |  |  | start no earlier than 2026-07-29 08:00 | Бундин В | 0.33h | 0.33h |
| 2587 | 12.1.7.1.7 | Ревизия питателя, контроль состояния подшипников/втулки/шестерен | 30min | 2026-09-23 09:00 A | 2026-09-23 09:30 A | 100% |  |  |  | start no earlier than 2026-09-23 09:00 | Бундин В | 0.5h | 0.5h |
| 2588 | 12.1.7.1.8 | Ревизия питателя, контроль состояния подшипников/втулки/шестерен | 30min | 2026-09-30 09:00 | 2026-09-30 09:30 |  |  |  | 115.53d | start no earlier than 2026-09-30 09:00 | Дедов В | 0.5h |  |
| 2589 | 12.1.7.2 | **прекондицинер экструдера** | 107.03d | 2026-05-13 09:00 A | 2026-09-30 09:15 | 75% | 26.76d |  | 115.56d |  |  | 1h | 0.75h |
| 2590 | 12.1.7.2.1 | контроль привода, подшипников | 15min | 2026-05-13 09:00 A | 2026-05-13 09:15 A | 100% |  |  |  | start no earlier than 2026-05-13 09:00 | Бобренок В | 0.25h | 0.25h |
| 2591 | 12.1.7.2.2 | контроль привода, подшипников | 15min | 2026-07-29 09:00 A | 2026-07-29 09:15 A | 100% |  |  |  | start no earlier than 2026-07-29 08:00 | Труфанов А | 0.25h | 0.25h |
| 2592 | 12.1.7.2.3 | контроль привода, подшипников | 15min | 2026-09-23 09:00 A | 2026-09-23 09:15 A | 100% |  |  |  | start no earlier than 2026-09-23 09:00 | Бундин В | 0.25h | 0.25h |
| 2593 | 12.1.7.2.4 | контроль привода, подшипников | 15min | 2026-09-30 09:00 | 2026-09-30 09:15 |  |  |  | 115.56d | start no earlier than 2026-09-30 09:00 | Дедов В | 0.25h |  |
| 2594 | 12.1.7.3 | **парогенератор** | 65.12d | 2026-05-13 09:00 A | 2026-08-12 10:00 A | 100% |  |  |  |  |  | 2h | 2h |
| 2595 | 12.1.7.3.1 | вскрытие электородов, чистка | 1h | 2026-05-13 09:00 A | 2026-05-13 10:00 A | 100% |  |  |  | start no earlier than 2026-05-13 09:00 | Бобренок В | 1h | 1h |
| 2596 | 12.1.7.3.2 | вскрытие электородов, чистка | 1h | 2026-08-12 09:00 A | 2026-08-12 10:00 A | 100% |  |  |  | start no earlier than 2026-08-12 09:00 | Некрасов А | 1h | 1h |
| 2597 | 12.1.7.4 | тэны и термпоры шнеков- прортяжка | 30min | 2024-04-10 09:00 | 2024-04-10 09:30 |  |  |  | 767.53d | start no earlier than 2024-04-10 09:00 | Черепанов И | 0.5h |  |
| 2598 | 12.1.7.5 | Чистка парогенератора | 1h | 2026-07-29 09:00 A | 2026-07-29 10:00 A | 100% |  |  |  | start no earlier than 2026-07-29 08:00 | Бундин В | 1h | 1h |
| 2599 | 12.1.7.6 | вскрытие электородов, чистка (при остановке линии на мойку, если не остановилась, передать по смене Бундину) | 1h | 2026-09-23 09:00 A | 2026-09-23 10:00 A | 100% |  |  |  | start no earlier than 2026-09-23 09:00 | Некрасов А | 1h | 1h |
| 2600 | 12.1.7.7 | вскрытие электородов, чистка (при остановке линии на мойку, если не остановилась, передать по смене Дедову) | 1h | 2026-09-29 09:00 | 2026-09-29 10:00 |  |  |  | 116.47d | start no earlier than 2026-09-29 08:00 | Бундин В; Дедов В | 2h |  |
| 2601 | 12.1.7.8 | **шкаф управления экструдером** | 152.03d | 2026-03-11 09:00 A | 2026-09-30 09:15 | 88% | 19d |  | 115.56d |  |  | 2h | 1.75h |
| 2602 | 12.1.7.8.1 | протяжка контактов | 30min | 2026-03-11 09:00 A | 2026-03-11 09:30 A | 100% |  |  |  | start no earlier than 2026-03-11 09:00 | Некрасов А | 0.5h | 0.5h |
| 2603 | 12.1.7.8.2 | частотные привода экструдера, ножей, питателя - продувка | 30min | 2026-05-27 09:00 A | 2026-05-27 09:30 A | 100% |  |  |  | start no earlier than 2026-05-27 09:00 | Бундин В | 0.5h | 0.5h |
| 2604 | 12.1.7.8.3 | частотные привода экструдера, ножей, питателя - продувка | 15min | 2026-07-16 09:00 A | 2026-07-16 09:15 A | 100% |  |  |  | start no earlier than 2026-07-16 09:00 | Бобренок В | 0.25h | 0.25h |
| 2605 | 12.1.7.8.4 | частотные привода экструдера, ножей, питателя - продувка | 15min | 2026-07-29 09:00 A | 2026-07-29 09:15 A | 100% |  |  |  | start no earlier than 2026-07-29 08:00 | Труфанов А | 0.25h | 0.25h |
| 2606 | 12.1.7.8.5 | частотные привода экструдера, ножей, питателя - продувка | 15min | 2026-09-23 09:00 A | 2026-09-23 09:15 A | 100% |  |  |  | start no earlier than 2026-09-23 09:00 | Труфанов А | 0.25h | 0.25h |
| 2607 | 12.1.7.8.6 | частотные привода экструдера, ножей, питателя - продувка | 15min | 2026-09-30 09:00 | 2026-09-30 09:15 |  |  |  | 115.56d | start no earlier than 2026-09-30 09:00 | Дедов В | 0.25h |  |

| ID | WBS | Task | Duration | Start | Finish | Complete | Remaining | Total slack | Constraint | Resources | Work | Actual work |
| --- | --- | --- | --- | --- | --- | --- | --- | --- | --- | --- | --- | --- |
| 2608 | 12.1.7.9 | **редуктор экструдера и маслянная станция** | 102.06d | 2026-05-20 09:00 A | 2026-09-30 09:30 | 88% | 12.76d | 115.53d |  |  | 5h | 4.5h |
| 2609 | 12.1.7.9.1 | чистка фильтра | 30min | 2026-06-02 09:00 A | 2026-06-02 09:30 A | 100% |  |  | start no earlier than 2026-06-02 09:00 | Тимофеев В | 0.5h | 0.5h |
| 2610 | 12.1.7.9.2 | чистка фильтра | 30min | 2026-05-20 09:00 A | 2026-05-20 09:30 A | 100% |  |  | start no earlier than 2026-05-20 09:00 | Тимофеев В | 0.5h | 0.5h |
| 2611 | 12.1.7.9.3 | муфта редутор-мотор проверка состояния | 30min | 2026-05-27 09:00 A | 2026-05-27 09:30 A | 100% |  |  | start no earlier than 2026-05-27 09:00 | Тимофеев В | 0.5h | 0.5h |
| 2612 | 12.1.7.9.4 | чистка фильтра | 30min | 2026-07-16 09:00 A | 2026-07-16 09:30 A | 100% |  |  | start no earlier than 2026-07-16 09:00 | Бобренок В | 0.5h | 0.5h |
| 2613 | 12.1.7.9.5 | Чистка фильтра | 30min | 2026-07-29 08:00 A | 2026-07-29 09:30 A | 100% |  |  | start no earlier than 2026-07-29 08:00 | Тимофеев В | 0.5h | 0.5h |
| 2614 | 12.1.7.9.6 | Осмотр редуктор-двигатель, нехороший шум, проверить втулки МУВП/заменить | 1h | 2026-09-23 09:00 A | 2026-09-23 10:00 A | 100% |  |  | start no earlier than 2026-09-23 09:00 | Бундин В; Некрасов А | 2h | 2h |
| 2615 | 12.1.7.9.7 | Чистка фильтра/тэны и термопары шнеков - протяжка | 30min | 2026-09-30 09:00 | 2026-09-30 09:30 |  |  | 115.53d | start no earlier than 2026-09-30 09:00 | Дедов В | 0.5h |  |
| 2616 | 12.1.7.10 | **блок тэнов сушки - протяжка** | 102.04d? | 2026-05-20 09:00 A | 2026-09-30 09:20 | 65% | 35.85d? | 115.55d |  |  | 12.33h | 8h |
| 2617 | 12.1.7.10.1 | ревизия, замена отгоревших жил, проверка токов | 3h | 2026-05-20 09:00 A | 2026-05-20 12:00 A | 100% |  |  | start no earlier than 2026-05-20 09:00 | Бобренок В | 3h | 3h |
| 2618 | 12.1.7.10.2 | ревизия, замена отгоревших жил, проверка токов | 4h? | 2026-09-11 09:00 | 2026-09-11 13:00 |  |  | 134.09d | start no earlier than 2026-09-11 09:00 | Тимофеев В | 4h |  |
| 2619 | 12.1.7.10.3 | Полное ТО шкафа управления, замена всех отгоревших жил/клемм, протяжка контактов | 5h | 2026-09-23 09:00 A | 2026-09-23 15:00 A | 100% |  |  | start no earlier than 2026-09-23 09:00 | Труфанов А | 5h | 5h |
| 2620 | 12.1.7.10.4 | Ревизия, проверка жил, проверка токов | 20min | 2026-09-30 09:00 | 2026-09-30 09:20 |  |  | 115.55d | start no earlier than 2026-09-30 09:00 | Дедов В | 0.33h |  |
| 2621 | 12.1.7.11 | **шкаф управления тэнами сушки** | 65.03d | 2026-05-20 09:00 A | 2026-08-19 09:15 | 83% | 10.84d | 152.56d |  |  | 1.5h | 1.25h |
| 2622 | 12.1.7.11.1 | протяжка контактов | 15min | 2026-05-20 09:00 A | 2026-05-20 09:15 A | 100% |  |  | start no earlier than 2026-05-20 09:00 | Бобренок В | 0.25h | 0.25h |
| 2623 | 12.1.7.11.2 | замена неисправных жил | 1h | 2026-05-20 09:00 A | 2026-05-20 10:00 A | 100% |  |  | start no earlier than 2026-05-20 09:00 | Бобренок В | 1h | 1h |
| 2624 | 12.1.7.11.3 | ревизия/ проверка токов | 15min | 2026-08-19 09:00 | 2026-08-19 09:15 |  |  | 152.56d | start no earlier than 2026-08-19 09:00 | Некрасов А | 0.25h |  |
| 2625 | 12.1.7.12 | конвейер №1 с печи в дрожировщик прорверка подшипники, реуктор | 30min | 2024-10-04 09:00 A | 2024-10-04 09:30 A | 100% |  |  | start no earlier than 2024-10-04 09:00 | Тимофеев В | 0.5h | 0.5h |
| 2626 | 12.1.7.13 | барабан смесительный дрожировка - прорверка подшипнки , реуктор | 30min | 2024-10-04 09:00 A | 2024-10-04 09:30 A | 100% |  |  | start no earlier than 2024-10-04 09:00 | Тимофеев В | 0.5h | 0.5h |
| 2627 | 12.1.7.14 | конвейер №2 с дрожировки в охладитель - проверка подшипники , редуктор | 30min | 2024-10-04 09:00 A | 2024-10-04 09:30 A | 100% |  |  | start no earlier than 2024-10-04 09:00 | Тимофеев В | 0.5h | 0.5h |
| 2628 | 12.1.7.15 | охладитель сеточный - смазка, натяжка цепи. Проверка редуктор | 1h | 2026-09-23 09:00 A | 2026-09-23 10:00 A | 100% |  |  | start no earlier than 2026-09-23 09:00 | Бундин В; Некрасов А | 2h | 2h |
| 2629 | 12.1.7.16 | вентиляторы обдува сушки | 2h | 2024-06-14 09:00 A | 2024-06-14 11:00 A | 100% |  |  | start no earlier than 2024-06-14 09:00 | ТО_2 | 2h | 2h |
| 2630 | 12.1.7.17 | дозатор сухой гидролизат - разборка, чистка, замена подшипников | 2h | 2026-08-20 09:00 A | 2026-08-20 11:00 A | 100% |  |  | start no earlier than 2026-08-20 09:00 | Макаревич А | 2h | 2h |
| 2631 | 12.1.7.18 | ревизия/ проверка токов/протяжка контактов | 15min | 2026-09-30 09:00 | 2026-09-30 09:15 |  |  | 115.56d | start no earlier than 2026-09-30 09:00 | Дедов В | 0.25h |  |

| ID | WBS | Task | Duration | Start | Finish | Complete | Remaining | Total slack | Constraint | Resources | Work | Actual work |
| --- | --- | --- | --- | --- | --- | --- | --- | --- | --- | --- | --- | --- |
| 2632 | 12.1.7.19 | **Насос гидролизата** | 85.06d | 2026-04-01 09:00 A | 2026-07-29 09:30 A | 100% |  |  |  |  | 1h | 1h |
| 2633 | 12.1.7.19.1 | Дефектовка - проверить подачу, вибрации, посторонние шумы. | 30min | 2026-04-01 09:00 A | 2026-04-01 09:30 A | 100% |  |  | start no earlier than 2026-04-01 09:00 | Тимофеев В | 0.5h | 0.5h |
| 2634 | 12.1.7.19.2 | Дефектовка - проверить подачу, вибрации, посторонние шумы. | 30min | 2026-07-29 08:00 A | 2026-07-29 09:30 A | 100% |  |  | start no earlier than 2026-07-29 08:00 | Тимофеев В | 0.5h | 0.5h |
| 2635 | 12.1.8 | **Квадропак** | 122.12d | 2026-04-22 09:00 A | 2026-09-30 10:00 | 82% | 21.71d | 115.47d |  |  | 13.25h | 9.25h |
| 2636 | 12.1.8.1 | Установить дополнительные пружины на дозатор | 1h | 2026-09-30 09:00 | 2026-09-30 10:00 |  |  | 115.47d | start no earlier than 2026-09-30 09:00 | Труфанов А; Некрасов А | 2h |  |
| 2637 | 12.1.8.2 | проверить резьбу крепления встряхивателя №1, закрепить | 1h | 2026-06-02 09:00 A | 2026-06-02 10:00 A | 100% |  |  | start no earlier than 2026-06-02 09:00 | Макаревич А | 1h | 1h |
| 2638 | 12.1.8.3 | Замена резинки на воздушном редукторе находящемся под мультиголовой (весы) | 1h | 2026-04-22 09:00 A | 2026-04-22 10:00 A | 100% |  |  | start no earlier than 2026-04-22 09:00 | Бундин В | 1h | 1h |
| 2639 | 12.1.8.4 | ТО узла пайки. Чистка тен/ревизия термоизолятора пневморедуктора | 1h | 2026-05-27 09:00 A | 2026-05-27 10:00 A | 100% |  |  | start no earlier than 2026-05-27 09:00 | Тимофеев В | 1h | 1h |
| 2640 | 12.1.8.5 | ревизия привод встряхивателя | 30min | 2026-05-27 09:00 A | 2026-05-27 09:30 A | 100% |  |  | start no earlier than 2026-05-27 09:00 | Тимофеев В | 0.5h | 0.5h |
| 2641 | 12.1.8.6 | ревизия протяжки кинематики низ / верх | 30min | 2026-05-27 09:00 A | 2026-05-27 09:30 A | 100% |  |  | start no earlier than 2026-05-27 09:00 | Тимофеев В | 0.5h | 0.5h |
| 2642 | 12.1.8.7 | ревизия вакуумный насос | 15min | 2026-05-27 09:00 A | 2026-05-27 09:15 A | 100% |  |  | start no earlier than 2026-05-27 09:00 | Тимофеев В | 0.25h | 0.25h |
| 2643 | 12.1.8.8 | замена вал выход | 4h | 2026-06-15 09:00 A | 2026-06-15 13:00 A | 100% |  |  | start no earlier than 2026-06-15 09:00 | Тимофеев В | 4h | 4h |
| 2644 | 12.1.8.9 | проверить пневмоцилиндр на встряхивателе, если нужно заменить | 1h | 2026-05-20 09:00 A | 2026-05-20 10:00 A | 100% |  |  | start no earlier than 2026-05-20 09:00 | Некрасов А | 1h | 1h |
| 2645 | 12.1.8.10 | Закрепить, подровнять, слесарные работы которые требуются | 1h | 2026-09-30 09:00 | 2026-09-30 10:00 |  |  | 115.47d | start no earlier than 2026-09-30 09:00 | Труфанов А; Некрасов А | 2h |  |
| 2646 | 12.1.9 | **Парогенератор** | 6.25d | 2026-06-02 09:00 A | 2026-06-10 11:00 A | 100% |  |  |  |  | 3h | 3h |
| 2647 | 12.1.9.1 | читска парогенератора, если нужно замена электродов | 2h | 2026-06-10 09:00 A | 2026-06-10 11:00 A | 100% |  |  | start no earlier than 2026-06-10 09:00 | Дедов В | 2h | 2h |
| 2648 | 12.1.9.2 | читска парогенератора, если нужно замена электродов | 1h | 2026-06-02 09:00 A | 2026-06-02 10:00 A | 100% |  |  | start no earlier than 2026-06-02 09:00 | Тимофеев В | 1h | 1h |
| 2649 | 12.1.10 | **Дражжировка** | 31.03d | 2026-08-27 09:00 | 2026-09-30 09:15 |  |  | 115.56d |  |  | 2.67h |  |
| 2650 | 12.1.10.1 | Проверка подшипников на барабанах | 15min | 2026-08-27 09:00 | 2026-08-27 09:15 |  |  | 146.56d | start no earlier than 2026-08-27 09:00 | Тимофеев В | 0.25h |  |
| 2651 | 12.1.10.2 | Проверка фильтров | 10min | 2026-08-27 09:00 | 2026-08-27 09:10 |  |  | 146.57d | start no earlier than 2026-08-27 09:00 | Тимофеев В | 0.17h |  |
| 2652 | 12.1.10.3 | Ревизия насоса гидролизата | 2h | 2026-08-27 09:00 | 2026-08-27 11:00 |  |  | 146.34d | start no earlier than 2026-08-27 09:00 | Тимофеев В | 2h |  |
| 2653 | 12.1.10.4 | Дефектовка - проверить подачу, вибрации, посторонние шумы/проверка фильтров/насосов/фитингов | 15min | 2026-09-30 09:00 | 2026-09-30 09:15 |  |  | 115.56d | start no earlier than 2026-09-30 09:00 | Дедов В | 0.25h |  |
| 2654 | 12.1.11 | **жиротопка и насос перекачки жира** | 600.03d | 2024-04-10 09:00 A | 2026-07-29 09:15 | 25% | 450.02d | 167.56d |  |  | 1h | 0.25h |
| 2655 | 12.1.11.1 | блок тэнов -протяжка | 30min | 2024-04-10 09:00 | 2024-04-10 09:30 |  |  | 767.53d | start no earlier than 2024-04-10 08:00 | Тимофеев В | 0.5h |  |
| 2656 | 12.1.11.2 | насос, фильтр - осмотр, чистка | 15min | 2024-04-25 09:00 | 2024-04-25 09:15 |  |  | 756.56d | start no earlier than 2024-04-25 09:00 | Тимофеев В | 0.25h |  |
| 2657 | 12.1.11.3 | насос, фильтр - осмотр, чистка | 15min | 2026-07-29 09:00 A | 2026-07-29 09:15 A | 100% |  |  | start no earlier than 2026-07-29 08:00 | Труфанов А | 0.25h | 0.25h |

| ID | WBS | Task | Duration | Start | Finish | Complete | Remaining | Total slack | Constraint | Resources | Work | Actual work |
| --- | --- | --- | --- | --- | --- | --- | --- | --- | --- | --- | --- | --- |
| 2658 | 12.1.12 | **упаковщкики** | 430.25d | 2025-02-14 09:00 A | 2026-09-30 11:00 | 14% | 368.79d | 115.34d |  |  | 30h | 4h |
| 2659 | 12.1.12.1 | упаковщик ТЕКО 0,4кг | 2h | 2025-02-16 09:00 A | 2025-02-17 11:00 A | 100% |  |  | start no earlier than 2025-02-16 09:00 | Дедов В | 2h | 2h |
| 2660 | 12.1.12.2 | упаковщик ТЕКО 0,4кг | 2h | 2026-08-26 09:00 | 2026-08-26 11:00 |  |  | 147.34d | start no earlier than 2026-08-26 09:00 | Тимофеев В | 2h |  |
| 2661 | 12.1.12.3 | упаковщик НОТИС | 2h | 2025-02-17 09:00 | 2025-02-17 11:00 |  |  | 544.34d | start no earlier than 2025-02-16 09:00 | Дедов В | 2h |  |
| 2662 | 12.1.12.4 | упаковщик ТЕКО 1.5кг | 2h | 2025-02-17 09:00 | 2025-02-17 11:00 |  |  | 544.34d | start no earlier than 2025-02-16 09:00 | Дедов В | 2h |  |
| 2663 | 12.1.12.5 | упаковщик КВАДРОПАК | 2h | 2025-02-17 09:00 | 2025-02-17 11:00 |  |  | 544.34d | start no earlier than 2025-02-16 09:00 | Дедов В | 2h |  |
| 2664 | 12.1.12.6 | нория и вибробункер КВАДРОПАК | 2h | 2025-02-17 09:00 | 2025-02-17 11:00 |  |  | 544.34d | start no earlier than 2025-02-16 09:00 | Дедов В | 2h |  |
| 2665 | 12.1.12.7 | запайщик 1 | 2h | 2025-02-17 09:00 | 2025-02-17 11:00 |  |  | 544.34d | start no earlier than 2025-02-17 09:00 | Дедов В | 2h |  |
| 2666 | 12.1.12.8 | запайщик 2 | 2h | 2025-02-17 09:00 | 2025-02-17 11:00 |  |  | 544.34d | start no earlier than 2025-02-17 09:00 | Дедов В | 2h |  |
| 2667 | 12.1.12.9 | конвейер гп ТЕКО 1,5 | 2h | 2025-02-14 09:00 | 2025-02-14 11:00 |  |  | 545.34d | start no earlier than 2025-02-14 09:00 | Макаревич А | 2h |  |
| 2668 | 12.1.12.10 | конвейер гп ТЕКО 0,4 | 2h | 2025-02-14 09:00 | 2025-02-14 11:00 |  |  | 545.34d | start no earlier than 2025-02-14 09:00 | Макаревич А | 2h |  |
| 2669 | 12.1.12.11 | накопительный стол 1,5 | 2h | 2025-02-17 09:00 | 2025-02-17 11:00 |  |  | 544.34d | start no earlier than 2025-02-15 09:00 | Макаревич А | 2h |  |
| 2670 | 12.1.12.12 | накопительный стол 0,4 | 2h | 2025-02-17 09:00 | 2025-02-17 11:00 |  |  | 544.34d | start no earlier than 2025-02-15 09:00 | Макаревич А | 2h |  |
| 2671 | 12.1.12.13 | Осмотр всех упаковщиков/транспортеров/накопительных столов/ всех щитков оборудования | 2h | 2026-07-29 09:00 A | 2026-07-29 11:00 A | 100% |  |  | start no earlier than 2026-07-29 08:00 | Бундин В | 2h | 2h |
| 2672 | 12.1.12.14 | Осмотр всех упаковщиков/транспортеров/накопительных столов/ всех щитков оборудования | 2h | 2026-09-30 09:00 | 2026-09-30 11:00 |  |  | 115.34d | start no earlier than 2026-09-30 09:00 | Тимофеев В; Дедов В | 4h |  |
| 2673 | 12.1.13 | **электрооборудование** | 656.12d? | 2024-04-04 09:00 A | 2026-09-30 10:00 | 11% | 582.25d? | 115.47d |  | ТО | 5729.83h | 676h |
| 2674 | 12.1.13.1 | ВРУ1 | 15min | 2026-05-20 09:00 | 2026-05-20 09:15 |  |  | 217.56d | start no earlier than 2026-05-20 09:00 | ТО; Тимофеев В | 0.5h |  |
| 2675 | 12.1.13.2 | ВРУ2 | 15min | 2026-05-20 09:00 | 2026-05-20 09:15 |  |  | 217.56d | start no earlier than 2026-05-20 09:00 | ТО; Тимофеев В | 0.5h |  |
| 2676 | 12.1.13.3 | ЩР1 экструдер | 15min | 2026-05-20 09:00 | 2026-05-20 09:15 |  |  | 217.56d | start no earlier than 2026-05-20 09:00 | ТО; Тимофеев В | 0.5h |  |
| 2677 | 12.1.13.4 | ЩР2 упаковка №1 | 15min | 2026-05-20 09:00 | 2026-05-20 09:15 |  |  | 217.56d | start no earlier than 2026-05-20 09:00 | ТО; Тимофеев В | 0.5h |  |
| 2678 | 12.1.13.5 | ЩР3 упаковка №2 | 15min | 2026-05-20 09:00 | 2026-05-20 09:15 |  |  | 217.56d | start no earlier than 2026-05-20 09:00 | ТО; Тимофеев В | 0.5h |  |
| 2679 | 12.1.13.6 | ЩР жиротопка и зона жиров | 1h | 2026-05-20 09:00 | 2026-05-20 10:00 |  |  | 217.47d | start no earlier than 2026-05-20 09:00 | ТО; Некрасов А | 2h |  |
| 2680 | 12.1.13.7 | **Компрессор 1 цех** | 89.12d? | 2026-06-07 09:00 A | 2026-09-30 10:00 | 18% | 72.92d? | 115.47d |  | ТО | 716h | 112.4h |
| 2681 | 12.1.13.7.1 | продувка радиаторов осушителя и компрессора, слив конденсата | 1h | 2026-06-07 09:00 A | 2026-06-08 10:00 A | 100% |  |  | start no earlier than 2026-06-07 09:00 | Дедов В | 1h | 1h |
| 2682 | 12.1.13.7.2 | продувка радиаторов осушителя и компрессора, слив конденсата | 1h | 2026-09-30 09:00 | 2026-09-30 10:00 |  |  | 115.47d | start no earlier than 2026-09-30 09:00 | Дедов В | 1h |  |
| 2683 | 12.1.13.7.3 | продувка радиаторов осушителя и компрессора, слив конденсата | 1h | 2026-08-29 09:00 A | 2026-08-31 10:00 A | 100% |  |  | start no earlier than 2026-08-29 09:00 | Дедов В | 1h | 1h |
| 2684 | 12.1.13.7.4 | <Новая задача> | 1d? | 2026-08-28 09:00 | 2026-08-28 18:00 |  |  | 144.59d | start no earlier than 2026-08-28 08:00 |  |  |  |
| 2685 | 12.1.13.8 | осушитель 1 цех | 2h | 2024-04-04 09:00 | 2024-04-04 11:00 |  |  | 771.34d | start no earlier than 2023-12-28 09:00 | ТО | 2h |  |
| 2686 | 12.1.13.9 | осушитель 1 цех/слить конденсат | 30min | 2026-07-29 09:00 | 2026-07-29 09:30 |  |  | 167.53d | start no earlier than 2026-07-29 08:00 | Бундин В | 0.5h |  |
| 2687 | 12.1.13.10 | осушитель 1 цех/слить конденсат | 20min | 2026-09-30 09:00 | 2026-09-30 09:20 |  |  | 115.55d | start no earlier than 2026-09-30 09:00 | Дедов В | 0.33h |  |
| 2688 | 12.1.13.11 | бойлер 1 1 цех раковина | 2h | 2024-04-04 09:00 | 2024-04-04 11:00 |  |  | 771.34d | start no earlier than 2023-12-28 09:00 | ТО | 2h |  |
| 2689 | 12.1.13.12 | бойлер 2 1 цех раковина | 2h | 2024-04-04 09:00 | 2024-04-04 11:00 |  |  | 771.34d | start no earlier than 2023-12-28 09:00 | ТО | 2h |  |
| 2690 | 12.1.13.13 | бойлер 3 1 цех душ | 2h | 2024-04-04 09:00 | 2024-04-04 11:00 |  |  | 771.34d | start no earlier than 2023-12-28 09:00 | ТО | 2h |  |
| 2691 | 12.1.13.14 | насосная станция 1 цех | 2h | 2024-04-04 09:00 | 2024-04-04 11:00 |  |  | 771.34d | start no earlier than 2023-12-28 09:00 | ТО | 2h |  |
| 2692 | 12.1.13.15 | фильтр приточной вентиляции | 2h | 2024-04-04 09:00 | 2024-04-04 11:00 |  |  | 771.34d |  |  |  |  |
| 2693 | 12.1.13.16 | пульт управления вентиляцией, частототные приводы | 2h | 2024-04-04 09:00 | 2024-04-04 11:00 |  |  | 771.34d | start no earlier than 2023-12-28 09:00 | ТО | 2h |  |
| 2694 | 12.1.13.17 | кондиционер 1 продувка фильтров внутр / очистка наруж блок | 30min | 2026-06-02 09:00 A | 2026-06-02 09:30 A | 100% |  |  | start no earlier than 2026-06-02 09:00 | Некрасов А | 0.5h | 0.5h |
| 2695 | 12.1.13.18 | кондиционер 2 продувка фильтров внутр / очистка наруж блок | 30min | 2026-06-02 09:00 A | 2026-06-02 09:30 A | 100% |  |  | start no earlier than 2026-06-02 09:00 | Некрасов А | 0.5h | 0.5h |
| 2696 | 12.1.13.19 | кондиционер 3 продувка фильтров внутр / очистка наруж блок | 30min | 2026-06-02 09:00 A | 2026-06-02 09:30 A | 100% |  |  | start no earlier than 2026-06-02 09:00 | Некрасов А | 0.5h | 0.5h |
| 2697 | 12.1.13.20 | кондиционер 1 продувка фильтров внутр / очистка наруж блок (керхер взять у Мейхера) | 30min | 2026-06-10 09:00 | 2026-06-10 09:30 |  |  | 202.53d | start no earlier than 2026-06-10 09:00 | Некрасов А; Дедов В | 1h |  |
| 2698 | 12.1.13.21 | кондиционер 2 продувка фильтров внутр / очистка наруж блок (керхер взять у Мейхера) | 30min | 2026-06-10 09:00 | 2026-06-10 09:30 |  |  | 202.53d | start no earlier than 2026-06-10 09:00 | Некрасов А; Дедов В | 1h |  |
| 2699 | 12.1.13.22 | кондиционер 3 продувка фильтров внутр / очистка наруж блок (керхер взять у Мейхера) | 30min | 2026-06-10 09:00 | 2026-06-10 09:30 |  |  | 202.53d | start no earlier than 2026-06-10 09:00 | Некрасов А; Дедов В | 1h |  |
| 2700 | 12.1.14 | электроштабелер упаковка | 2h | 2023-12-28 09:00 | 2023-12-28 11:00 |  |  | 841.34d | start no earlier than 2023-12-28 09:00 | ТО | 2h |  |
| 2701 | 12.1.15 | электроштабелер навески | 2h | 2023-12-28 09:00 | 2023-12-28 11:00 |  |  | 841.34d | start no earlier than 2023-12-28 09:00 | ТО | 2h |  |

| ID | WBS | Task | Duration | Start | Finish | Complete | Remaining | Total slack | Constraint | Resources | Work | Actual work |
| --- | --- | --- | --- | --- | --- | --- | --- | --- | --- | --- | --- | --- |
| 2702 | 12.2 | **2 цех** | 772.25d? | 2023-12-28 09:00 A | 2026-12-03 11:00 | 68% | 250.49d? | 69.34d |  |  | 18368.8h | 15463.4h |
| 2703 | 12.2.1 | обдув пыли с вентиляции и балки кровли зона жир + экструдер + упаковка | 3h | 2026-08-20 09:00 A | 2026-08-20 12:00 A | 100% |  |  | start no earlier than 2026-08-20 09:00 | Некрасов А; Тимофеев В | 6h | 6h |
| 2704 | 12.2.2 | **прекондицинер экструдера** | 645.03d? | 2024-04-18 09:00 A | 2026-09-29 09:15 | 99% | 7.17d? | 116.56d |  |  | 22.5h | 22.25h |
| 2705 | 12.2.2.1 | замена заднего подшипника ведомый вал | 8h | 2026-05-26 09:00 A | 2026-05-26 18:00 A | 100% |  |  | start no earlier than 2026-05-26 09:00 | Тимофеев В | 8h | 8h |
| 2706 | 12.2.2.2 | замена подшипников | 1h | 2024-04-18 09:00 A | 2024-04-18 10:00 A | 100% |  |  | start no earlier than 2024-04-18 08:00 | Тимофеев В | 1h | 1h |
| 2707 | 12.2.2.3 | Ревизия масла редуктора | 30min | 2024-04-18 09:00 A | 2024-04-18 09:30 A | 100% |  |  | start no earlier than 2024-04-18 08:00 | Тимофеев В | 0.5h | 0.5h |
| 2708 | 12.2.2.4 | контроль крепления лопаток | 30min | 2026-05-21 09:00 A | 2026-05-21 09:30 A | 100% |  |  | start no earlier than 2026-03-05 09:00 | Тимофеев В | 0.5h | 0.5h |
| 2709 | 12.2.2.5 | шприцевание подшипников | 1h | 2026-05-21 08:00 A | 2026-05-21 10:00 A | 100% |  |  | start no earlier than 2026-05-21 08:00 | Тимофеев В | 1h | 1h |
| 2710 | 12.2.2.6 | Ревизия масла редуктора | 15min | 2026-07-21 09:00 A | 2026-07-21 09:15 A | 100% |  |  | start no earlier than 2026-07-21 09:00 | Труфанов А | 0.25h | 0.25h |
| 2711 | 12.2.2.7 | шприцевание подшипников | 30min | 2026-07-21 09:00 A | 2026-07-21 09:30 A | 100% |  |  | start no earlier than 2026-07-21 09:00 | Труфанов А | 0.5h | 0.5h |
| 2712 | 12.2.2.8 | Осмотр подшипников | 15min | 2026-07-30 09:00 A | 2026-07-30 09:15 A | 100% |  |  | start no earlier than 2026-07-30 09:00 | Тимофеев В | 0.25h | 0.25h |
| 2713 | 12.2.2.9 | Осмотр подшипников | 1d? | 2026-08-06 09:00 A | 2026-08-06 18:00 A | 100% |  |  | start no earlier than 2026-08-06 09:00 | Бундин В | 8h | 8h |
| 2714 | 12.2.2.10 | Осмотр подшипников / смазка / по необходимости замена | 1h | 2026-08-13 09:00 A | 2026-08-13 10:00 A | 100% |  |  | start no earlier than 2026-08-13 09:00 | Некрасов А | 1h | 1h |
| 2715 | 12.2.2.11 | Осмотр подшипников / смазка | 15min | 2026-08-20 09:00 A | 2026-08-20 09:15 A | 100% |  |  | start no earlier than 2026-08-20 09:00 | Некрасов А | 0.25h | 0.25h |
| 2716 | 12.2.2.12 | Замена водяного фильтра на прекондиционере/парогенератор | 15min | 2026-09-03 09:00 A | 2026-09-03 09:15 A | 100% |  |  | start no earlier than 2026-09-03 09:00 | Труфанов А | 0.25h | 0.25h |
| 2717 | 12.2.2.13 | Осмотр подшипников / смазка | 15min | 2026-09-17 09:00 A | 2026-09-17 09:15 A | 100% |  |  | start no earlier than 2026-09-17 09:00 | Некрасов А | 0.25h | 0.25h |
| 2718 | 12.2.2.14 | Осмотр подшипников / смазка | 15min | 2026-09-24 09:00 A | 2026-09-24 09:15 A | 100% |  |  | start no earlier than 2026-09-24 09:00 | Некрасов А | 0.25h | 0.25h |
| 2719 | 12.2.2.15 | Ревизия масла редуктора | 15min | 2026-09-24 09:00 A | 2026-09-24 09:15 A | 100% |  |  | start no earlier than 2026-09-24 09:00 | Некрасов А | 0.25h | 0.25h |
| 2720 | 12.2.2.16 | Ревизия масла редуктора/осмотр подшипников/ смазка при необходимости | 15min | 2026-09-29 09:00 | 2026-09-29 09:15 |  |  | 116.56d | start no earlier than 2026-09-29 08:00 | Бундин В | 0.25h |  |
| 2721 | 12.2.3 | **парогенератор** | 645d | 2024-04-18 10:00 A | 2026-09-29 10:00 | 95% | 34.86d | 116.47d |  |  | 18.5h | 18.5h |
| 2722 | 12.2.3.1 | читска | 1h | 2024-04-18 10:00 A | 2024-04-18 11:00 A | 100% |  |  | start no earlier than 2024-04-18 08:00 | Тимофеев В | 1h | 1h |
| 2723 | 12.2.3.2 | замена гильзы | 1h | 2024-04-18 10:00 A | 2024-04-18 11:00 A | 100% |  |  | start no earlier than 2024-04-18 08:00 | Тимофеев В | 1h | 1h |
| 2724 | 12.2.3.3 | чистка | 2h | 2026-03-05 09:30 A | 2026-03-05 11:30 A | 100% |  |  | start no earlier than 2026-03-04 09:00 | Бундин В | 2h | 2h |
| 2725 | 12.2.3.4 | прорвеп срабатывания защитного клапана | 10min | 2026-03-05 09:30 A | 2026-03-05 09:40 A | 100% |  |  | start no earlier than 2024-10-03 09:00 | Бундин В | 0.17h | 0.17h |
| 2726 | 12.2.3.5 | читска | 1h | 2026-03-19 09:00 A | 2026-03-19 10:00 A | 100% |  |  | start no earlier than 2026-03-19 09:00 | Тимофеев В | 1h | 1h |
| 2727 | 12.2.3.6 | чистка | 1h | 2026-03-12 09:00 A | 2026-03-12 10:00 A | 100% |  |  | start no earlier than 2026-03-12 09:00 | Бундин В; Тимофеев В | 2h | 2h |
| 2728 | 12.2.3.7 | чистка | 1h | 2026-05-14 09:00 A | 2026-05-14 10:00 A | 100% |  |  | start no earlier than 2026-05-14 09:00 | Некрасов А | 1h | 1h |
| 2729 | 12.2.3.8 | чистка | 2h | 2026-07-14 09:00 A | 2026-07-14 11:00 A | 100% |  |  | start no earlier than 2026-07-14 09:00 | Некрасов А | 2h | 2h |
| 2730 | 12.2.3.9 | Чистка | 1h | 2026-07-30 09:00 A | 2026-07-30 10:00 A | 100% |  |  | start no earlier than 2026-07-30 09:00 | Бундин В | 1h | 1h |
| 2731 | 12.2.3.10 | Чистка | 1h | 2026-08-06 09:00 A | 2026-08-06 10:00 A | 100% |  |  | start no earlier than 2026-08-06 09:00 | Тимофеев В | 1h | 1h |
| 2732 | 12.2.3.11 | Чистка | 1h | 2026-08-13 09:00 A | 2026-08-13 10:00 A | 100% |  |  | start no earlier than 2026-08-13 09:00 | Некрасов А | 1h | 1h |
| 2733 | 12.2.3.12 | Чистка | 1h | 2026-08-19 09:00 A | 2026-08-19 10:00 A | 100% |  |  | start no earlier than 2026-08-19 09:00 | Некрасов А | 1h | 1h |
| 2734 | 12.2.3.13 | Чистка | 1h | 2026-09-02 08:00 A | 2026-09-02 10:00 A | 100% |  |  | start no earlier than 2026-09-02 08:00 | Бобренок В | 1h | 1h |
| 2735 | 12.2.3.14 | Убрать грязь с парогенератора, привести в порядок внешний вид, где что отлеплено, прилепить | 20min | 2026-09-03 09:00 A | 2026-09-03 09:20 A | 100% |  |  | start no earlier than 2026-09-03 09:00 | Тимофеев В | 0.33h | 0.33h |
| 2736 | 12.2.3.15 | Чистка | 1h | 2026-09-09 09:00 A | 2026-09-09 10:00 A | 100% |  |  | start no earlier than 2026-09-09 08:00 | Тимофеев В | 1h | 1h |
| 2737 | 12.2.3.16 | Чистка | 1h | 2026-09-17 09:00 A | 2026-09-17 10:00 A | 100% |  |  | start no earlier than 2026-09-17 09:00 | Тимофеев В | 1h | 1h |
| 2738 | 12.2.3.17 | Чистка | 1h | 2026-09-23 09:00 A | 2026-09-23 10:00 A | 100% |  |  | start no earlier than 2026-09-23 09:00 | Дедов В | 1h | 1h |
| 2739 | 12.2.3.18 | Чистка | 1h | 2026-09-29 09:00 | 2026-09-29 10:00 |  |  | 116.47d | start no earlier than 2026-09-29 08:00 |  |  |  |

| ID | WBS | Task | Duration | Start | Finish | Predecessors | Complete | Remaining | Total slack | Constraint | Resources | Work | Actual work |
| --- | --- | --- | --- | --- | --- | --- | --- | --- | --- | --- | --- | --- | --- |
| 2740 | 12.2.4 | **привод сетки ПЕЧИ сушки** | 692.25d | 2024-04-18 08:00 A | 2026-12-03 11:00 |  | 84% | 111.25d | 69.34d |  |  | 8.83h | 7.83h |
| 2741 | 12.2.4.1 | прорверка масла редуктор / натяжка цепи/ ремень | 30min | 2024-04-18 08:00 A | 2024-04-18 09:30 A |  | 100% |  |  | start no earlier than 2024-04-18 08:00 | Тимофеев В | 0.5h | 0.5h |
| 2742 | 12.2.4.2 | прорверка масла редуктор / натяжка цепи/ ремень | 30min | 2026-03-05 09:00 A | 2026-03-05 09:30 A |  | 100% |  |  | start no earlier than 2026-03-05 09:00 | Тимофеев В | 0.5h | 0.5h |
| 2743 | 12.2.4.3 | прорверка масла редуктор / натяжка цепи/ ремень | 30min | 2026-03-19 09:00 A | 2026-03-19 09:30 A |  | 100% |  |  | start no earlier than 2026-03-19 09:00 | Тимофеев В | 0.5h | 0.5h |
| 2744 | 12.2.4.4 | прорверка масла редуктор / натяжка цепи/ ремень/осмотр сетки | 30min | 2026-07-14 09:00 A | 2026-07-14 09:30 A |  | 100% |  |  | start no earlier than 2026-07-14 09:00 | Труфанов А | 0.5h | 0.5h |
| 2745 | 12.2.4.5 | прорверка масла редуктор / натяжка цепи/ ремень/осмотр сетки | 30min | 2026-07-30 09:00 A | 2026-07-30 09:30 A |  | 100% |  |  | start no earlier than 2026-07-30 09:00 | Труфанов А | 0.5h | 0.5h |
| 2746 | 12.2.4.6 | прорверка масла редуктор / натяжка цепи/ ремень/осмотр сетки | 20min | 2026-08-13 09:00 A | 2026-08-13 09:20 A |  | 100% |  |  | start no earlier than 2026-08-13 09:00 | Некрасов А | 0.33h | 0.33h |
| 2747 | 12.2.4.7 | прорверка масла редуктор / натяжка цепи/ ремень/осмотр сетки | 20min | 2026-08-20 09:00 A | 2026-08-20 09:20 A |  | 100% |  |  | start no earlier than 2026-08-20 09:00 | Некрасов А | 0.33h | 0.33h |
| 2748 | 12.2.4.8 | прорверка масла редуктор / натяжка цепи/ ремень/осмотр сетки | 20min | 2026-08-20 09:00 A | 2026-08-20 09:20 A |  | 100% |  |  | start no earlier than 2026-08-20 09:00 | Некрасов А | 0.33h | 0.33h |
| 2749 | 12.2.4.9 | прорверка масла редуктор / натяжка цепи/ ремень/осмотр сетки | 20min | 2026-09-09 09:00 A | 2026-09-09 09:20 A |  | 100% |  |  | start no earlier than 2026-09-09 08:00 | Бобренок В | 0.33h | 0.33h |
| 2750 | 12.2.4.10 | ремонт шестерни привода - наварить | 1h | 2026-09-16 09:00 A | 2026-09-16 10:00 A |  | 100% |  |  | start no earlier than 2026-09-16 09:00 | Бундин В | 1h | 1h |
| 2751 | 12.2.4.11 | смазка цепей пищ смазкой | 1h | 2026-09-16 09:00 A | 2026-09-16 10:00 A |  | 100% |  |  | start no earlier than 2026-09-16 09:00 | Бобренок В | 1h | 1h |
| 2752 | 12.2.4.12 | Снятие шестерен привода (отнести домоводову) | 2h | 2026-09-17 09:00 A | 2026-09-17 11:00 A |  | 100% |  |  | start no earlier than 2026-09-17 09:00 | Труфанов А | 2h | 2h |
| 2753 | 12.2.4.13 | смазка цепей пищ смазкой по графику 3 мес | 1h | 2026-12-03 10:00 | 2026-12-03 11:00 | 2751FS+3mo |  |  | 69.34d | start no earlier than 2026-09-16 09:00 | Бобренок В | 1h |  |
| 2754 | 12.2.4.14 | прорверка масла редуктор / натяжка цепи/ ремень/осмотр сетки | 30min | 2026-09-29 09:00 | 2026-09-29 09:30 |  |  |  | 116.53d | start no earlier than 2026-09-29 08:00 |  |  |  |
| 2755 | 12.2.5 | **блок тэнов сушки** | 645.12d | 2024-04-18 08:00 A | 2026-09-29 10:00 |  | 89% | 71.68d | 116.47d |  |  | 12h | 12h |
| 2756 | 12.2.5.1 | вскрыть все блоки | 1h | 2024-04-18 08:00 A | 2024-04-18 10:00 A |  | 100% |  |  | start no earlier than 2024-04-18 08:00 | Тимофеев В | 1h | 1h |
| 2757 | 12.2.5.2 | ревизия / замена критичных | 4h | 2024-04-18 09:00 A | 2024-04-18 13:00 A |  | 100% |  |  | start no earlier than 2024-04-18 08:00 | Некрасов А; Черепанов И | 8h | 8h |
| 2758 | 12.2.5.3 | ревизия | 1h | 2026-03-19 09:00 A | 2026-03-19 10:00 A |  | 100% |  |  | start no earlier than 2026-03-19 09:00 | Бундин В | 1h | 1h |
| 2759 | 12.2.5.4 | ревизия | 1h | 2026-05-14 09:00 A | 2026-05-14 10:00 A |  | 100% |  |  | start no earlier than 2026-05-14 09:00 | Труфанов А | 1h | 1h |
| 2760 | 12.2.5.5 | ревизия перемычек | 1h | 2026-08-13 09:00 A | 2026-08-13 10:00 A |  | 100% |  |  | start no earlier than 2026-08-13 09:00 | Некрасов А | 1h | 1h |
| 2761 | 12.2.5.6 | ревизия перемычек | 1h | 2026-09-29 09:00 | 2026-09-29 10:00 |  |  |  | 116.47d | start no earlier than 2026-09-29 08:00 |  |  |  |
| 2762 | 12.2.6 | **смеситель СМ-1500** | 155.02d | 2026-03-05 09:00 A | 2026-09-29 09:10 |  | 98% | 3.52d | 116.57d |  |  | 7.33h | 7.17h |
| 2763 | 12.2.6.1 | контроль масла | 15min | 2026-03-05 09:00 A | 2026-03-05 09:15 A |  | 100% |  |  | start no earlier than 2026-03-05 09:00 | Тимофеев В | 0.25h | 0.25h |
| 2764 | 12.2.6.2 | контроль масла | 15min | 2026-03-05 09:00 A | 2026-03-05 09:15 A |  | 100% |  |  | start no earlier than 2026-03-05 09:00 | Некрасов А | 0.25h | 0.25h |
| 2765 | 12.2.6.3 | замена сальника | 4h | 2026-04-16 09:00 A | 2026-04-16 13:00 A |  | 100% |  |  | start no earlier than 2026-04-16 09:00 | Тимофеев В | 4h | 4h |
| 2766 | 12.2.6.4 | контроль масла | 15min | 2026-07-30 09:00 A | 2026-07-30 09:15 A |  | 100% |  |  | start no earlier than 2026-07-30 09:00 | Тимофеев В | 0.25h | 0.25h |
| 2767 | 12.2.6.5 | ревизия подшипникой красного смесителя, просыпается мука со стороны редуктора | 1h | 2026-08-13 09:00 A | 2026-08-13 10:00 A |  | 100% |  |  | start no earlier than 2026-08-13 09:00 | Тимофеев В | 1h | 1h |
| 2768 | 12.2.6.6 | ревизия подшипникой красного смесителя, просыпается мука со стороны редуктора | 1h | 2026-08-27 09:00 A | 2026-08-27 10:00 A |  | 100% |  |  | start no earlier than 2026-08-27 09:00 | Тимофеев В | 1h | 1h |
| 2769 | 12.2.6.7 | контроль масла | 15min | 2026-09-03 09:00 A | 2026-09-03 09:15 A |  | 100% |  |  | start no earlier than 2026-09-03 09:00 | Тимофеев В | 0.25h | 0.25h |
| 2770 | 12.2.6.8 | контроль масла | 10min | 2026-09-09 09:00 A | 2026-09-09 09:10 A |  | 100% |  |  | start no earlier than 2026-09-09 08:00 | Бобренок В | 0.17h | 0.17h |
| 2771 | 12.2.6.9 | Осмотр подшипников/контроль масла | 10min | 2026-09-29 09:00 | 2026-09-29 09:10 |  |  |  | 116.57d | start no earlier than 2026-09-29 09:00 | Бундин В | 0.17h |  |

| ID | WBS | Task | Duration | Start | Finish | Complete | Remaining | Total slack | Constraint | Resources | Work | Actual work |
| --- | --- | --- | --- | --- | --- | --- | --- | --- | --- | --- | --- | --- |
| 2772 | 12.2.7 | **нория 2 выгрузки смесителя** | 150.5d | 2026-03-05 09:00 A | 2026-09-24 13:00 A | 100% |  |  |  | ТО | 66.58h | 66.58h |
| 2773 | 12.2.7.1 | смазка подшипников | 30min | 2026-03-05 09:00 A | 2026-03-05 09:30 A | 100% |  |  | start no earlier than 2026-03-05 09:00 | Бундин В | 0.5h | 0.5h |
| 2774 | 12.2.7.2 | Осмотр подшипников/смазка по необходимости | 30min | 2026-07-30 09:00 A | 2026-07-30 09:30 A | 100% |  |  | start no earlier than 2026-07-30 09:00 | Бундин В | 0.5h | 0.5h |
| 2775 | 12.2.7.3 | ревизия крепления редуктора | 15min | 2026-03-05 09:00 A | 2026-03-05 09:15 A | 100% |  |  | start no earlier than 2026-03-05 09:00 | Бундин В | 0.25h | 0.25h |
| 2776 | 12.2.7.4 | ревизия ленты, обрезать нитки | 4h | 2026-03-26 09:00 A | 2026-03-26 13:00 A | 100% |  |  | start no earlier than 2026-03-26 09:00 | Тимофеев В | 4h | 4h |
| 2777 | 12.2.7.5 | вскрыть для чистки | 10min | 2026-05-19 09:00 A | 2026-05-19 09:10 A | 100% |  |  | start no earlier than 2026-05-21 09:00 | Труфанов А | 0.17h | 0.17h |
| 2778 | 12.2.7.6 | Вскрыть, осмотреть ленту (держится на одном ковше, закрепили на доп болты) | 30min | 2026-09-03 09:00 A | 2026-09-03 09:30 A | 100% |  |  | start no earlier than 2026-09-03 09:00 | Тимофеев В | 0.5h | 0.5h |
| 2779 | 12.2.7.7 | вскрыть для чистки, осмотреть ленту, закрыить после чистки | 10min | 2026-08-13 09:00 A | 2026-08-13 09:10 A | 100% |  |  | start no earlier than 2026-08-13 09:00 | Труфанов А | 0.17h | 0.17h |
| 2780 | 12.2.7.8 | Ревизия ленты, контроль соединения | 30min | 2026-09-17 09:00 A | 2026-09-17 09:30 A | 100% |  |  | start no earlier than 2026-09-17 09:00 | Тимофеев В | 0.5h | 0.5h |
| 2781 | 12.2.7.9 | ремонт стыка ленты - ревитзия, ремонт продлить | 4h | 2026-09-24 09:00 A | 2026-09-24 13:00 A | 100% |  |  | start no earlier than 2026-09-24 09:00 | Тимофеев В; Бундин В | 8h | 8h |
| 2782 | 12.2.8 | **бункер-накопитель с шнековой разкгрузкой синий** | 100.12d | 2026-05-14 09:00 A | 2026-09-24 10:00 A | 100% |  |  |  |  | 10.17h | 10.17h |
| 2783 | 12.2.8.1 | смазка подшипников, ревизия редуктора (нужно разбирать все для смазки). Задний | 4h | 2026-05-14 09:00 A | 2026-05-14 13:00 A | 100% |  |  | start no earlier than 2026-05-14 09:00 | Тимофеев В | 4h | 4h |
| 2784 | 12.2.8.2 | смазка подшипников, ревизия редуктора (нужно разбирать все для смазки). Передний | 4h | 2026-05-28 09:00 A | 2026-05-28 13:00 A | 100% |  |  | start no earlier than 2026-05-28 09:00 | Бундин В | 4h | 4h |
| 2785 | 12.2.8.3 | Осмотр редуктора со стороны мойки, скрипит | 1h | 2026-08-13 09:00 A | 2026-08-13 10:00 A | 100% |  |  | start no earlier than 2026-08-13 09:00 | Тимофеев В | 1h | 1h |
| 2786 | 12.2.8.4 | Осмотр | 5min | 2026-09-03 09:00 A | 2026-09-03 09:05 A | 100% |  |  | start no earlier than 2026-09-03 09:00 | Тимофеев В | 0.08h | 0.08h |
| 2787 | 12.2.8.5 | перенос датчика / доработать лопатки - что бы останавливался раньше, без спресовывания шнеком | 1h | 2026-09-24 09:00 A | 2026-09-24 10:00 A | 100% |  |  | start no earlier than 2026-09-24 09:00 | Труфанов А | 1h | 1h |
| 2788 | 12.2.8.6 | Осмотр | 5min | 2026-09-24 09:00 A | 2026-09-24 09:05 A | 100% |  |  | start no earlier than 2026-09-24 09:00 | Труфанов А | 0.08h | 0.08h |
| 2789 | 12.2.9 | **питатель экструдера** | 140.12d | 2026-03-26 09:00 A | 2026-09-29 10:00 | 94% | 7.78d | 116.47d |  |  | 22h | 21h |
| 2790 | 12.2.9.1 | замена сальников питателя, сыпит муку | 4h | 2026-07-22 09:00 A | 2026-07-22 13:00 A | 100% |  |  | start no earlier than 2026-07-22 09:00 | Труфанов А | 4h | 4h |
| 2791 | 12.2.9.2 | ревизия подшипников, редутора, привода. Разборка/сборка (нужно разбирать) | 1h | 2026-03-26 09:00 A | 2026-03-26 10:00 A | 100% |  |  | start no earlier than 2026-03-26 09:00 | Тимофеев В | 1h | 1h |
| 2792 | 12.2.9.3 | ревизия подшипников, редутора, привода. Разборка/сборка (нужно разбирать) | 1h | 2026-08-19 09:00 A | 2026-08-19 10:00 A | 100% |  |  | start no earlier than 2026-08-19 09:00 | Тимофеев В | 1h | 1h |
| 2793 | 12.2.9.4 | замена шетсерен и подшипников узла. Поставили новый комплект | 4h | 2026-04-03 08:00 A | 2026-04-03 13:00 A | 100% |  |  | start no earlier than 2026-04-03 08:00 | Тимофеев В | 4h | 4h |
| 2794 | 12.2.9.5 | ревизия шестерни мал редуктора | 1h | 2026-04-16 09:00 A | 2026-04-16 10:00 A | 100% |  |  | start no earlier than 2026-04-16 09:00 | Тимофеев В | 1h | 1h |
| 2795 | 12.2.9.6 | ревизия шестерни мал редуктора | 2h | 2026-08-13 09:00 A | 2026-08-13 11:00 A | 100% |  |  | start no earlier than 2026-08-13 09:00 | Некрасов А; Зорькин В | 4h | 4h |
| 2796 | 12.2.9.7 | ревизия шестерни мал редуктора | 2h | 2026-08-27 09:00 A | 2026-08-27 11:00 A | 100% |  |  | start no earlier than 2026-08-27 09:00 | Некрасов А; Зорькин В | 4h | 4h |
| 2797 | 12.2.9.8 | ревизия шестерен питателя | 1h | 2026-09-03 09:00 A | 2026-09-03 10:00 A | 100% |  |  | start no earlier than 2026-09-03 09:00 | Некрасов А | 1h | 1h |
| 2798 | 12.2.9.9 | Ревизия шестерен и подшипников | 1h | 2026-09-17 09:00 A | 2026-09-17 10:00 A | 100% |  |  | start no earlier than 2026-09-17 09:00 | Тимофеев В | 1h | 1h |
| 2799 | 12.2.9.10 | Ревизия шестерен и подшипников | 1h | 2026-09-29 09:00 | 2026-09-29 10:00 |  |  | 116.47d | start no earlier than 2026-09-29 09:00 | Бундин В | 1h |  |

| ID | WBS | Task | Duration | Start | Finish | Predecessors | Complete | Remaining | Total slack | Constraint | Resources | Work | Actual work |
| --- | --- | --- | --- | --- | --- | --- | --- | --- | --- | --- | --- | --- | --- |
| 2800 | 12.2.10 | **привод прекондиционера** | 155.04d | 2026-03-05 09:00 A | 2026-09-29 09:20 |  | 94% | 8.86d | 116.55d |  |  | 9.83h | 9.5h |
| 2801 | 12.2.10.1 | проверка масла | 5min | 2026-03-05 09:00 A | 2026-03-05 09:05 A |  | 100% |  |  | start no earlier than 2026-03-05 09:00 | Тимофеев В | 0.08h | 0.08h |
| 2802 | 12.2.10.2 | контроль крепления шестерен | 5min | 2026-03-05 09:00 A | 2026-03-05 09:05 A |  | 100% |  |  | start no earlier than 2026-03-05 09:00 | Тимофеев В | 0.08h | 0.08h |
| 2803 | 12.2.10.3 | ревизия подшипников и стопорных винтов | 30min | 2026-03-05 09:00 A | 2026-03-05 09:30 A |  | 100% |  |  | start no earlier than 2026-03-05 09:00 | Бундин В | 0.5h | 0.5h |
| 2804 | 12.2.10.4 | Осмотр шестерён(стоит звон), подшипников, сальников | 30min | 2026-09-03 09:00 A | 2026-09-03 09:30 A |  | 100% |  |  | start no earlier than 2026-09-03 09:00 | Тимофеев В | 0.5h | 0.5h |
| 2805 | 12.2.10.5 | Замена подшипников кореных и передних | 4h | 2026-09-09 09:00 A | 2026-09-09 13:00 A |  | 100% |  |  | start no earlier than 2026-09-09 08:00 | Труфанов А; Некрасов А | 8h | 8h |
| 2806 | 12.2.10.6 | Осмотр подшипников, муфты, шестерен | 20min | 2026-09-17 09:00 A | 2026-09-17 09:20 A |  | 100% |  |  | start no earlier than 2026-09-17 09:00 | Некрасов А | 0.33h | 0.33h |
| 2807 | 12.2.10.7 | Осмотр подшипников, муфты, шестерен | 20min | 2026-09-29 09:00 | 2026-09-29 09:20 |  |  |  | 116.55d | start no earlier than 2026-09-29 08:00 | Бундин В | 0.33h |  |
| 2808 | 12.2.11 | **мотор-редуктор привод шнеков** | 35.02d | 2026-08-20 09:00 A | 2026-09-29 09:10 |  | 24% | 26.78d | 116.57d |  |  | 2.83h | 0.67h |
| 2809 | 12.2.11.1 | замена масла | 2h | 2026-08-20 09:00 | 2026-08-20 11:00 |  |  |  | 151.34d | start no earlier than 2026-08-20 09:00 | Тимофеев В | 2h |  |
| 2810 | 12.2.11.2 | Проверка масла (долил уровень) | 10min | 2026-09-03 09:00 A | 2026-09-03 09:10 A |  | 100% |  |  | start no earlier than 2026-09-03 09:00 | Труфанов А | 0.17h | 0.17h |
| 2811 | 12.2.11.3 | Проверка масла | 10min | 2026-09-09 09:00 A | 2026-09-09 09:10 A |  | 100% |  |  | start no earlier than 2026-09-09 08:00 | Бобренок В | 0.17h | 0.17h |
| 2812 | 12.2.11.4 | Проверка масла | 10min | 2026-09-17 09:00 A | 2026-09-17 09:10 A |  | 100% |  |  | start no earlier than 2026-09-17 09:00 | Некрасов А | 0.17h | 0.17h |
| 2813 | 12.2.11.5 | Проверка масла | 10min | 2026-09-24 09:00 A | 2026-09-24 09:10 A |  | 100% |  |  | start no earlier than 2026-09-24 09:00 | Некрасов А | 0.17h | 0.17h |
| 2814 | 12.2.11.6 | Проверка масла | 10min | 2026-09-29 09:00 | 2026-09-29 09:10 |  |  |  | 116.57d | start no earlier than 2026-09-29 08:00 | Бундин В | 0.17h |  |
| 2815 | 12.2.12 | **редуктор шнеков экструдера - проверка масла** | 428.03d | 2025-02-17 09:00 A | 2026-09-29 09:15 |  | 96% | 18.88d | 116.56d |  |  | 5.67h | 5.42h |
| 2816 | 12.2.12.1 | чистка фильтра редуктора | 15min | 2026-03-05 09:00 A | 2026-03-05 09:15 A |  | 100% |  |  | start no earlier than 2026-03-05 09:00 | Тимофеев В | 0.25h | 0.25h |
| 2817 | 12.2.12.2 | контоль цепи муфты привода | 5min | 2026-03-05 09:15 A | 2026-03-05 09:20 A | 2816, 2818, 2819, 2821, 2825, 2826 | 100% |  |  | start no earlier than 2026-03-04 08:00 | Тимофеев В | 0.08h | 0.08h |
| 2818 | 12.2.12.3 | чистка фильтра редуктора | 15min | 2026-03-19 09:00 A | 2026-03-19 09:15 A |  | 100% |  |  | start no earlier than 2026-03-19 09:00 | Тимофеев В | 0.25h | 0.25h |
| 2819 | 12.2.12.4 | чистка фильтра редуктора | 15min | 2026-06-18 09:00 A | 2026-06-18 09:15 A |  | 100% |  |  | start no earlier than 2026-06-18 09:00 | Тимофеев В | 0.25h | 0.25h |
| 2820 | 12.2.12.5 | чистка фильтра редуктора | 30min | 2026-08-06 08:00 A | 2026-08-06 09:30 A |  | 100% |  |  | start no earlier than 2026-08-06 08:00 | Тимофеев В | 0.5h | 0.5h |
| 2821 | 12.2.12.6 | чистка фильтра редуктора | 15min | 2026-07-14 09:00 A | 2026-07-14 09:15 A |  | 100% |  |  | start no earlier than 2026-07-14 09:00 | Бундин В | 0.25h | 0.25h |
| 2822 | 12.2.12.7 | тэны и термпоры шнеков | 2h | 2025-02-17 09:00 A | 2025-02-17 11:00 A |  | 100% |  |  | start no earlier than 2025-02-17 09:00 | Дедов В | 2h | 2h |
| 2823 | 12.2.12.8 | проверка масла | 5min | 2026-08-06 09:00 A | 2026-08-06 09:05 A |  | 100% |  |  | start no earlier than 2026-08-06 09:00 | Тимофеев В | 0.08h | 0.08h |
| 2824 | 12.2.12.9 | Проверка масла | 10min | 2026-07-30 09:00 A | 2026-07-30 09:10 A |  | 100% |  |  | start no earlier than 2026-07-30 09:00 | Бундин В | 0.17h | 0.17h |
| 2825 | 12.2.12.10 | чистка фильтра редуктора | 15min | 2026-08-13 09:00 A | 2026-08-13 09:15 A |  | 100% |  |  | start no earlier than 2026-08-13 09:00 | Тимофеев В | 0.25h | 0.25h |
| 2826 | 12.2.12.11 | чистка фильтра редуктора | 15min | 2026-08-20 09:00 A | 2026-08-20 09:15 A |  | 100% |  |  | start no earlier than 2026-08-20 09:00 | Тимофеев В | 0.25h | 0.25h |
| 2827 | 12.2.12.12 | Чистка фильтра | 15min | 2026-09-03 09:00 A | 2026-09-03 09:15 A |  | 100% |  |  | start no earlier than 2026-09-03 09:00 | Труфанов А | 0.25h | 0.25h |
| 2828 | 12.2.12.13 | Чистка фильтра | 15min | 2026-09-09 09:00 A | 2026-09-09 09:15 A |  | 100% |  |  | start no earlier than 2026-09-09 08:00 | Бобренок В | 0.25h | 0.25h |
| 2829 | 12.2.12.14 | Проверка масла | 5min | 2026-09-09 09:00 A | 2026-09-09 09:05 A |  | 100% |  |  | start no earlier than 2026-09-09 08:00 | Бобренок В | 0.08h | 0.08h |
| 2830 | 12.2.12.15 | Проверка масла/чистка фильтра | 15min | 2026-09-17 09:00 A | 2026-09-17 09:15 A |  | 100% |  |  | start no earlier than 2026-09-17 09:00 | Некрасов А | 0.25h | 0.25h |
| 2831 | 12.2.12.16 | Чистка фильтра | 15min | 2026-09-24 09:00 A | 2026-09-24 09:15 A |  | 100% |  |  | start no earlier than 2026-09-24 09:00 | Некрасов А | 0.25h | 0.25h |
| 2832 | 12.2.12.17 | Чистка фильтра | 15min | 2026-09-29 09:00 | 2026-09-29 09:15 |  |  |  | 116.56d | start no earlier than 2026-09-29 08:00 | Бундин В | 0.25h |  |

| ID | WBS | Task | Duration | Start | Finish | Predecessors | Complete | Remaining | Total slack | Constraint | Resources | Work | Actual work |
| --- | --- | --- | --- | --- | --- | --- | --- | --- | --- | --- | --- | --- | --- |
| 2833 | 12.2.13 | **шкаф управления экструдером** | 155.02d | 2026-03-05 09:00 A | 2026-09-29 09:10 |  | 90% | 15.5d | 116.57d |  |  | 1.67h | 1.5h |
| 2834 | 12.2.13.1 | продувка частотного привода | 10min | 2026-03-05 09:00 A | 2026-03-05 09:10 A |  | 100% |  |  | start no earlier than 2026-03-05 09:00 | Труфанов А | 0.17h | 0.17h |
| 2835 | 12.2.13.2 | продувка частотного привода | 10min | 2026-08-06 09:00 A | 2026-08-06 09:10 A |  | 100% |  |  | start no earlier than 2026-08-06 09:00 | Бундин В | 0.17h | 0.17h |
| 2836 | 12.2.13.3 | уложить и закрепить провода | 5min | 2026-03-05 09:10 A | 2026-03-05 09:15 A | 2834, 2835, 2838, 2839, 2840, 2841 | 100% |  |  | start no earlier than 2026-03-04 08:00 | Труфанов А | 0.08h | 0.08h |
| 2837 | 12.2.13.4 | протяжка контактов | 5min | 2026-03-05 09:15 A | 2026-03-05 09:20 A | 2836 | 100% |  |  | start no earlier than 2026-03-04 08:00 | Труфанов А | 0.08h | 0.08h |
| 2838 | 12.2.13.5 | продувка частотного привода | 10min | 2026-03-19 09:00 A | 2026-03-19 09:10 A |  | 100% |  |  | start no earlier than 2026-03-19 09:00 | Дедов В | 0.17h | 0.17h |
| 2839 | 12.2.13.6 | продувка частотного привода | 10min | 2026-05-14 09:00 A | 2026-05-14 09:10 A |  | 100% |  |  | start no earlier than 2026-05-14 09:00 | Макаревич А | 0.17h | 0.17h |
| 2840 | 12.2.13.7 | продувка частотного привода | 10min | 2026-08-13 09:00 A | 2026-08-13 09:10 A |  | 100% |  |  | start no earlier than 2026-08-13 09:00 | Некрасов А | 0.17h | 0.17h |
| 2841 | 12.2.13.8 | продувка частотного привода | 10min | 2026-08-20 09:00 A | 2026-08-20 09:10 A |  | 100% |  |  | start no earlier than 2026-08-20 09:00 | Дедов В | 0.17h | 0.17h |
| 2842 | 12.2.13.9 | продувка частотного привода | 10min | 2026-09-03 09:00 A | 2026-09-03 09:10 A |  | 100% |  |  | start no earlier than 2026-09-03 09:00 | Труфанов А | 0.17h | 0.17h |
| 2843 | 12.2.13.10 | продувка частотного привода | 10min | 2026-09-17 09:00 A | 2026-09-17 09:10 A |  | 100% |  |  | start no earlier than 2026-09-17 09:00 | Некрасов А | 0.17h | 0.17h |
| 2844 | 12.2.13.11 | продувка частотного привода | 10min | 2026-09-29 09:00 | 2026-09-29 09:10 |  |  |  | 116.57d | start no earlier than 2026-09-29 09:00 | Бундин В | 0.17h |  |
| 2845 | 12.2.14 | **пневотранспорт роторный питатель** | 140.04d | 2026-03-19 09:00 A | 2026-09-24 09:20 |  | 52% | 67.22d | 121.55d |  |  | 6.17h | 2.17h |
| 2846 | 12.2.14.1 | замена на ЗИП / вывод на ремонт промывку | 2h | 2026-06-25 09:00 | 2026-06-25 11:00 |  |  |  | 191.34d | start no earlier than 2026-06-25 09:00 | Труфанов А; Некрасов А | 4h |  |
| 2847 | 12.2.14.2 | проверка масла - высок температурная смазка | 1h | 2026-03-19 09:00 A | 2026-03-19 10:00 A |  | 100% |  |  | start no earlier than 2026-03-19 09:00 | Труфанов А | 1h | 1h |
| 2848 | 12.2.14.3 | Ревизия узлов/масла | 30min | 2026-07-30 09:00 A | 2026-07-30 09:30 A |  | 100% |  |  | start no earlier than 2026-07-30 09:00 | Труфанов А | 0.5h | 0.5h |
| 2849 | 12.2.14.4 | Ревизия узлов/масла (смазку свежую набил) | 20min | 2026-09-03 09:00 A | 2026-09-03 09:20 A |  | 100% |  |  | start no earlier than 2026-09-03 09:00 | Труфанов А | 0.33h | 0.33h |
| 2850 | 12.2.14.5 | Ревизия узлов/масла. Очистка мотора от пыли | 20min | 2026-09-24 09:00 A | 2026-09-24 09:20 A |  | 100% |  |  | start no earlier than 2026-09-24 09:00 | Бундин В | 0.33h | 0.33h |
| 2851 | 12.2.15 | **печь - валы этажей, подшипники, цепи** | 147.12d | 2026-03-19 09:00 A | 2026-10-01 10:00 |  | 75% | 36.78d | 114.47d |  |  | 6h | 4.5h |
| 2852 | 12.2.15.1 | осмотр смазка | 30min | 2026-03-19 09:00 A | 2026-03-19 09:30 A |  | 100% |  |  | start no earlier than 2026-03-19 09:00 | Тимофеев В | 0.5h | 0.5h |
| 2853 | 12.2.15.2 | осмотр смазка сетки | 2h | 2026-05-14 09:00 A | 2026-05-14 11:00 A |  | 100% |  |  | start no earlier than 2026-05-14 09:00 | Макаревич А | 2h | 2h |
| 2854 | 12.2.15.3 | натяжка цепей | 30min | 2026-08-13 09:00 A | 2026-08-13 09:30 A |  | 100% |  |  | start no earlier than 2026-08-13 09:00 | Некрасов А | 0.5h | 0.5h |
| 2855 | 12.2.15.4 | натяжка цепей, контроль привода | 30min | 2026-09-03 09:00 A | 2026-09-03 09:30 A |  | 100% |  |  | start no earlier than 2026-09-03 09:00 | Труфанов А | 0.5h | 0.5h |
| 2856 | 12.2.15.5 | Контроль редуктора, осмотр, проверка масла | 30min | 2026-09-17 09:00 A | 2026-09-17 09:30 A |  | 100% |  |  | start no earlier than 2026-09-17 09:00 | Труфанов А | 0.5h | 0.5h |
| 2857 | 12.2.15.6 | Контроль редуктора, осмотр, проверка масла | 30min | 2026-09-24 09:00 A | 2026-09-24 09:30 A |  | 100% |  |  | start no earlier than 2026-09-24 09:00 | Некрасов А | 0.5h | 0.5h |
| 2858 | 12.2.15.7 | Смазка всех цепей (если не смазаны) | 1h | 2026-10-01 09:00 | 2026-10-01 10:00 |  |  |  | 114.47d | start no earlier than 2026-10-01 09:00 | Бобренок В | 1h |  |
| 2859 | 12.2.15.8 | Контроль редуктора, осмотр, проверка масла | 30min | 2026-09-29 09:00 | 2026-09-29 09:30 |  |  |  | 116.53d | start no earlier than 2026-09-29 08:00 | Бундин В | 0.5h |  |

| ID | WBS | Task | Duration | Start | Finish | Complete | Remaining | Total slack | Constraint | Resources | Work | Actual work |
| --- | --- | --- | --- | --- | --- | --- | --- | --- | --- | --- | --- | --- |
| 2860 | 12.2.16 | **вентиляторы обдува сушки** | 150.25d? | 2026-03-05 09:00 A | 2026-09-24 11:00 | 20% | 120.2d? | 121.34d |  | ТО | 1206h | 12h |
| 2861 | 12.2.16.1 | чистка крыльчатки | 1d? | 2026-03-05 09:00 | 2026-03-05 18:00 |  |  | 270.59d | start no earlier than 2026-03-05 09:00 |  |  |  |
| 2862 | 12.2.16.2 | замена подшипников | 1d? | 2026-03-05 09:00 | 2026-03-05 18:00 |  |  | 270.59d | start no earlier than 2026-03-05 09:00 |  |  |  |
| 2863 | 12.2.16.3 | Осмотр, чистка | 2h | 2026-09-17 09:00 A | 2026-09-17 11:00 A | 100% |  |  | start no earlier than 2026-09-17 09:00 | Бобренок В | 2h | 2h |
| 2864 | 12.2.16.4 | Осмотр, очистка от пыли | 2h | 2026-09-24 09:00 A | 2026-09-24 11:00 A | 100% |  |  | start no earlier than 2026-09-24 09:00 | Некрасов А | 2h | 2h |
| 2865 | 12.2.17 | **шкаф управления тэнами сушки главный** | 155.02d | 2026-03-05 09:00 A | 2026-09-29 09:10 | 90% | 15.12d | 116.57d |  |  | 6.67h | 6.17h |
| 2866 | 12.2.17.1 | протяжка контактов, продувка шкафа, частотного привода | 10min | 2026-03-05 09:00 A | 2026-03-05 09:10 A | 100% |  |  | start no earlier than 2026-03-05 09:00 | Труфанов А | 0.17h | 0.17h |
| 2867 | 12.2.17.2 | протяжка контактов, продувка шкафа, частотного привода | 10min | 2026-07-14 09:00 A | 2026-07-14 09:10 A | 100% |  |  | start no earlier than 2026-07-14 09:00 | Некрасов А | 0.17h | 0.17h |
| 2868 | 12.2.17.3 | осмотср замена подгоревших кабелей | 30min | 2026-05-21 09:00 A | 2026-05-21 09:30 A | 100% |  |  | start no earlier than 2026-05-21 09:00 | Тимофеев В | 0.5h | 0.5h |
| 2869 | 12.2.17.4 | протяжка контактов, продувка шкафа, частотного привода | 30min | 2026-08-06 09:00 | 2026-08-06 09:30 |  |  | 161.53d | start no earlier than 2026-08-06 08:00 | Бундин В | 0.5h |  |
| 2870 | 12.2.17.5 | осмотср замена подгоревших кабелей | 30min | 2026-05-21 09:00 A | 2026-05-21 09:30 A | 100% |  |  | start no earlier than 2026-05-21 09:00 | Некрасов А | 0.5h | 0.5h |
| 2871 | 12.2.17.6 | продуть, протяжка контактов | 1h | 2026-05-21 08:00 A | 2026-05-21 10:00 A | 100% |  |  | start no earlier than 2026-05-21 08:00 | Тимофеев В | 1h | 1h |
| 2872 | 12.2.17.7 | осмотср замена подгоревших кабелей | 30min | 2026-07-14 09:00 A | 2026-07-14 09:30 A | 100% |  |  | start no earlier than 2026-07-14 09:00 | Труфанов А | 0.5h | 0.5h |
| 2873 | 12.2.17.8 | осмотср замена подгоревших кабелей | 1h | 2026-08-13 09:00 A | 2026-08-13 10:00 A | 100% |  |  | start no earlier than 2026-08-13 09:00 | Труфанов А | 1h | 1h |
| 2874 | 12.2.17.9 | продувка | 10min | 2026-09-03 09:00 A | 2026-09-03 09:10 A | 100% |  |  | start no earlier than 2026-09-03 09:00 | Труфанов А | 0.17h | 0.17h |
| 2875 | 12.2.17.10 | Продувка | 10min | 2026-09-17 09:00 A | 2026-09-17 09:10 A | 100% |  |  | start no earlier than 2026-09-17 09:00 | Некрасов А | 0.17h | 0.17h |
| 2876 | 12.2.17.11 | Продувка. Замена подогретых жил | 2h | 2026-09-24 09:00 A | 2026-09-24 11:00 A | 100% |  |  | start no earlier than 2026-09-24 09:00 | Труфанов А | 2h | 2h |
| 2877 | 12.2.17.12 | протяжка контактов, продувка шкафа, частотного привода | 10min | 2026-09-29 09:00 | 2026-09-29 09:10 |  |  | 116.57d | start no earlier than 2026-09-29 08:00 |  |  |  |
| 2878 | 12.2.18 | **шкаф управления тэнами твердотельный** | 155.02d | 2026-03-05 09:00 A | 2026-09-29 09:10 | 95% | 7.05d | 116.57d |  |  | 3.67h | 3.5h |
| 2879 | 12.2.18.1 | продувка, протяжка | 10min | 2026-03-05 09:00 A | 2026-03-05 09:10 A | 100% |  |  | start no earlier than 2026-03-05 09:00 | Труфанов А | 0.17h | 0.17h |
| 2880 | 12.2.18.2 | продувка, протяжка | 10min | 2026-07-14 09:00 A | 2026-07-14 09:10 A | 100% |  |  | start no earlier than 2026-07-14 09:00 | Труфанов А | 0.17h | 0.17h |
| 2881 | 12.2.18.3 | продувка, протяжка | 10min | 2026-08-06 09:00 A | 2026-08-06 09:10 A | 100% |  |  | start no earlier than 2026-08-06 08:00 | Бундин В | 0.17h | 0.17h |
| 2882 | 12.2.18.4 | замена подгоревших кабелей | 30min | 2026-08-13 09:00 A | 2026-08-13 09:30 A | 100% |  |  | start no earlier than 2026-08-13 09:00 | Труфанов А | 0.5h | 0.5h |
| 2883 | 12.2.18.5 | продувка, протяжка | 10min | 2026-08-06 09:00 A | 2026-08-06 09:10 A | 100% |  |  | start no earlier than 2026-08-06 08:00 | Труфанов А | 0.17h | 0.17h |
| 2884 | 12.2.18.6 | продувка, протяжка | 10min | 2026-09-03 09:00 A | 2026-09-03 09:10 A | 100% |  |  | start no earlier than 2026-09-03 09:00 | Труфанов А | 0.17h | 0.17h |
| 2885 | 12.2.18.7 | Продувка | 10min | 2026-09-17 09:00 A | 2026-09-17 09:10 A | 100% |  |  | start no earlier than 2026-09-17 09:00 | Некрасов А | 0.17h | 0.17h |
| 2886 | 12.2.18.8 | Продувка. Замена подогретых жил | 2h | 2026-09-24 09:00 A | 2026-09-24 11:00 A | 100% |  |  | start no earlier than 2026-09-24 09:00 | Труфанов А | 2h | 2h |
| 2887 | 12.2.18.9 | Продувка | 10min | 2026-09-29 09:00 | 2026-09-29 09:10 |  |  | 116.57d | start no earlier than 2026-09-29 08:00 | Бундин В | 0.17h |  |

| ID | WBS | Task | Duration | Start | Finish | Complete | Remaining | Total slack | Constraint | Resources | Work | Actual work |
| --- | --- | --- | --- | --- | --- | --- | --- | --- | --- | --- | --- | --- |
| 2888 | 12.2.19 | **конвейер №1 с печи в дрожировщик** | 150.06d | 2026-03-05 09:00 A | 2026-09-24 09:30 A | 100% |  |  |  |  | 3.08h | 3.08h |
| 2889 | 12.2.19.1 | ослабить ленту для чистки барабана / натяжка после чистки | 30min | 2026-03-05 09:00 A | 2026-03-05 09:30 A | 100% |  |  | start no earlier than 2026-03-05 09:00 | Тимофеев В | 0.5h | 0.5h |
| 2890 | 12.2.19.2 | ревизия люфтов, фиксации смазки подшипников | 30min | 2026-03-05 09:00 A | 2026-03-05 09:30 A | 100% |  |  | start no earlier than 2026-03-05 09:00 | Тимофеев В | 0.5h | 0.5h |
| 2891 | 12.2.19.3 | ослабить ленту для чистки барабана / натяжка после чистки | 10min | 2026-03-12 09:00 A | 2026-03-12 09:10 A | 100% |  |  | start no earlier than 2026-03-12 09:00 | Тимофеев В | 0.17h | 0.17h |
| 2892 | 12.2.19.4 | чистка ленты контроль операторов, если нужно ослаить | 15min | 2026-08-13 09:00 A | 2026-08-13 09:15 A | 100% |  |  | start no earlier than 2026-08-13 09:00 | Тимофеев В | 0.25h | 0.25h |
| 2893 | 12.2.19.5 | ревизия люфтов, фиксации смазки подшипников | 30min | 2026-09-03 09:00 A | 2026-09-03 09:30 A | 100% |  |  | start no earlier than 2026-09-03 09:00 | Тимофеев В | 0.5h | 0.5h |
| 2894 | 12.2.19.6 | ослабить ленту для чистки барабана / натяжка после чистки | 10min | 2026-09-03 09:00 A | 2026-09-03 09:10 A | 100% |  |  | start no earlier than 2026-09-03 09:00 | Тимофеев В | 0.17h | 0.17h |
| 2895 | 12.2.19.7 | ревизия люфтов, фиксации смазки подшипников | 30min | 2026-09-17 09:00 A | 2026-09-17 09:30 A | 100% |  |  | start no earlier than 2026-09-17 09:00 | Тимофеев В | 0.5h | 0.5h |
| 2896 | 12.2.19.8 | очистка валов и ленты / контроль крепления редуктора / состояния подшипника | 30min | 2026-09-24 09:00 A | 2026-09-24 09:30 A | 100% |  |  | start no earlier than 2026-09-24 09:00 | Тимофеев В | 0.5h | 0.5h |
| 2897 | 12.2.20 | **барабан смесительный дрожировка** | 725.03d | 2023-12-28 09:00 A | 2026-09-29 09:15 | 78% | 159.4d | 116.56d |  | ТО | 125.75h | 98.1h |
| 2898 | 12.2.20.1 | ревизия состяния валов, подшипников | 2h | 2026-02-25 09:00 A | 2026-02-25 11:00 A | 100% |  |  | start no earlier than 2026-02-25 09:00 | Тимофеев В | 2h | 2h |
| 2899 | 12.2.20.2 | ремонт вала временный. 11 час | 2h | 2026-02-25 09:00 A | 2026-02-25 11:00 A | 100% |  |  | start no earlier than 2026-02-25 09:00 | Тимофеев В | 2h | 2h |
| 2900 | 12.2.20.3 | замена подшипников мотора привода | 2h | 2026-02-25 09:00 A | 2026-02-25 11:00 A | 100% |  |  | start no earlier than 2026-02-25 09:00 | Тимофеев В | 2h | 2h |
| 2901 | 12.2.20.4 | заменаить вал дрожировки по стрелкам на 11час / после прихода с ремонта | 2h | 2026-04-30 09:00 A | 2026-04-30 11:00 A | 100% |  |  | start no earlier than 2026-04-30 09:00 | Тимофеев В | 2h | 2h |
| 2902 | 12.2.20.5 | насос подачи жира и смесительный узел, баки подогрева | 2h | 2023-12-28 09:00 | 2023-12-28 11:00 |  |  | 841.34d | start no earlier than 2023-12-28 09:00 | ТО | 2h |  |
| 2903 | 12.2.20.6 | Осмотр подшипников редукторов | 20min | 2026-07-30 09:00 A | 2026-07-30 09:20 A | 100% |  |  | start no earlier than 2026-07-30 09:00 | Труфанов А | 0.33h | 0.33h |
| 2904 | 12.2.20.7 | Осмотр подшипников редукторов | 15min | 2026-08-13 09:00 A | 2026-08-13 09:15 A | 100% |  |  | start no earlier than 2026-08-13 09:00 | Тимофеев В | 0.25h | 0.25h |
| 2905 | 12.2.20.8 | Осмотр подшипников редукторов | 15min | 2026-09-03 09:00 A | 2026-09-03 09:15 A | 100% |  |  | start no earlier than 2026-09-03 09:00 | Тимофеев В | 0.25h | 0.25h |
| 2906 | 12.2.20.9 | Осмотр соединений фитингов, трехходового крана бежит/не бежит | 10min | 2026-09-03 09:00 A | 2026-09-03 09:10 A | 100% |  |  | start no earlier than 2026-09-03 09:00 | Тимофеев В | 0.17h | 0.17h |
| 2907 | 12.2.20.10 | Осмотр соединений фитингов, трехходового крана бежит/не бежит | 10min | 2026-09-17 09:00 A | 2026-09-17 09:10 A | 100% |  |  | start no earlier than 2026-09-17 09:00 | Тимофеев В | 0.17h | 0.17h |
| 2908 | 12.2.20.11 | Осмотр соединений фитингов, трехходового крана бежит/не бежит | 10min | 2026-09-18 09:00 | 2026-09-18 09:10 |  |  | 127.57d | start no earlier than 2026-09-18 09:00 | Тимофеев В | 0.17h |  |
| 2909 | 12.2.20.12 | Осмотр подшипников редукторов | 15min | 2026-09-29 09:00 | 2026-09-29 09:15 |  |  | 116.56d | start no earlier than 2026-09-29 08:00 | Бундин В | 0.25h |  |
| 2910 | 12.2.20.13 | Осмотр соединений фитингов, трехходового крана бежит/не бежит | 10min | 2026-09-29 09:00 | 2026-09-29 09:10 |  |  | 116.57d | start no earlier than 2026-09-29 08:00 | Бундин В | 0.17h |  |
| 2911 | 12.2.21 | **Узел подачи гидролизата** | 62.02d | 2026-07-14 09:00 A | 2026-09-29 09:10 | 96% | 2.7d | 116.57d |  |  | 3.83h | 3.67h |
| 2912 | 12.2.21.1 | Дефектовка/ выяснить причу почему еле крутит/ устранить | 2h | 2026-07-14 09:00 A | 2026-07-14 11:00 A | 100% |  |  | start no earlier than 2026-07-14 09:00 | Бундин В | 2h | 2h |
| 2913 | 12.2.21.2 | осмотр цепи, редуктора, протяжка | 20min | 2026-08-13 09:00 A | 2026-08-13 09:20 A | 100% |  |  | start no earlier than 2026-08-13 09:00 | Тимофеев В | 0.33h | 0.33h |
| 2914 | 12.2.21.3 | Осмотр/ревизия насоса гидролизата, проверка всех соединений | 10min | 2026-09-03 09:00 A | 2026-09-03 09:10 A | 100% |  |  | start no earlier than 2026-09-03 09:00 | Тимофеев В | 0.17h | 0.17h |
| 2915 | 12.2.21.4 | Осмотр/ревизия насоса гидролизата, проверка всех соединений | 10min | 2026-09-17 09:00 A | 2026-09-17 09:10 A | 100% |  |  | start no earlier than 2026-09-17 09:00 | Тимофеев В | 0.17h | 0.17h |
| 2916 | 12.2.21.5 | перенос розеток со стола на раму | 1h | 2026-09-17 09:00 A | 2026-09-17 10:00 A | 100% |  |  | start no earlier than 2026-09-17 09:00 | Тимофеев В | 1h | 1h |
| 2917 | 12.2.21.6 | Осмотр/ревизия насоса гидролизата, проверка всех соединений | 10min | 2026-09-29 09:00 | 2026-09-29 09:10 |  |  | 116.57d | start no earlier than 2026-09-29 08:00 | Бундин В | 0.17h |  |

| ID | WBS | Task | Duration | Start | Finish | Complete | Remaining | Total slack | Constraint | Resources | Work | Actual work |
| --- | --- | --- | --- | --- | --- | --- | --- | --- | --- | --- | --- | --- |
| 2918 | 12.2.22 | **конвейер №2 с дрожировки в охладитель** | 150.06d | 2026-03-05 09:00 A | 2026-09-24 09:30 A | 100% |  |  |  |  | 3.17h | 3.17h |
| 2919 | 12.2.22.1 | ослабить ленту для чистки барабана / натяжка после чистки | 30min | 2026-03-05 09:00 A | 2026-03-05 09:30 A | 100% |  |  | start no earlier than 2026-03-05 09:00 | Тимофеев В | 0.5h | 0.5h |
| 2920 | 12.2.22.2 | ревизия люфтов, фиксации смазки подшипников | 30min | 2026-03-05 09:00 A | 2026-03-05 09:30 A | 100% |  |  | start no earlier than 2026-03-05 09:00 | Тимофеев В | 0.5h | 0.5h |
| 2921 | 12.2.22.3 | ослабить ленту для чистки барабана / натяжка после чистки | 10min | 2026-03-12 09:00 A | 2026-03-12 09:10 A | 100% |  |  | start no earlier than 2026-03-12 09:00 | Тимофеев В | 0.17h | 0.17h |
| 2922 | 12.2.22.4 | чистка ленты контроль операторов, если нужно ослаить | 15min | 2026-08-13 09:00 A | 2026-08-13 09:15 A | 100% |  |  | start no earlier than 2026-08-13 09:00 | Тимофеев В | 0.25h | 0.25h |
| 2923 | 12.2.22.5 | чистка ленты контроль операторов, если нужно ослаить | 15min | 2026-08-13 09:00 A | 2026-08-13 09:15 A | 100% |  |  | start no earlier than 2026-08-13 09:00 | Тимофеев В | 0.25h | 0.25h |
| 2924 | 12.2.22.6 | ослабить ленту для чистки барабана / натяжка после чистки | 30min | 2026-09-03 09:00 A | 2026-09-03 09:30 A | 100% |  |  | start no earlier than 2026-09-03 09:00 | Тимофеев В | 0.5h | 0.5h |
| 2925 | 12.2.22.7 | ревизия люфтов, фиксации смазки подшипников | 30min | 2026-09-17 09:00 A | 2026-09-17 09:30 A | 100% |  |  | start no earlier than 2026-09-17 09:00 | Тимофеев В | 0.5h | 0.5h |
| 2926 | 12.2.22.8 | ревизия люфтов, фиксации смазки подшипников | 30min | 2026-09-24 09:00 A | 2026-09-24 09:30 A | 100% |  |  | start no earlier than 2026-09-24 09:00 | Тимофеев В | 0.5h | 0.5h |
| 2927 | 12.2.23 | **охладитель сеточный** | 645.06d? | 2024-04-18 09:00 A | 2026-09-29 09:30 | 63% | 241.32d? | 116.53d |  |  | 18.17h | 17.5h |
| 2928 | 12.2.23.1 | ревизия осей сетки, замена шплинтов | 2h | 2024-04-18 09:00 A | 2024-04-18 11:00 A | 100% |  |  | start no earlier than 2024-04-18 08:00 | Некрасов А; Черепанов И | 4h | 4h |
| 2929 | 12.2.23.2 | ревизия привода - масло, ремень (не проверено масло) | 10min | 2026-03-19 09:00 A | 2026-03-19 09:10 A | 100% |  |  | start no earlier than 2026-03-05 09:00 | Тимофеев В | 0.17h | 0.17h |
| 2930 | 12.2.23.3 | ревизия привода - масло, ремень (не проверено масло) | 10min | 2026-07-14 09:00 | 2026-07-14 09:10 |  |  | 178.57d | start no earlier than 2026-07-14 09:00 | Некрасов А | 0.17h |  |
| 2931 | 12.2.23.4 | ревизия состояния сетки | 2h | 2026-07-14 09:00 A | 2026-07-14 11:00 A | 100% |  |  | start no earlier than 2026-07-14 08:00 | Некрасов А | 2h | 2h |
| 2932 | 12.2.23.5 | ревизия состояния сетки | 1h | 2026-07-30 09:00 A | 2026-07-30 10:00 A | 100% |  |  | start no earlier than 2026-07-30 09:00 | Бундин В | 1h | 1h |
| 2933 | 12.2.23.6 | ревизия состояния сетки | 1d? | 2026-08-20 09:00 | 2026-08-20 18:00 |  |  | 150.59d | start no earlier than 2026-08-20 09:00 |  |  |  |
| 2934 | 12.2.23.7 | контроль натяжки цепей | 20min | 2026-03-05 09:00 A | 2026-03-05 09:20 A | 100% |  |  | start no earlier than 2026-03-05 09:00 | Бундин В | 0.33h | 0.33h |
| 2935 | 12.2.23.8 | текущий ремонт силиконовых уплотнений | 30min | 2026-03-05 09:00 A | 2026-03-05 09:30 A | 100% |  |  | start no earlier than 2026-03-05 09:00 | Бундин В | 0.5h | 0.5h |
| 2936 | 12.2.23.9 | осмотр ремней, натяжка цепей, ремонт силиконовых отбортовок | 1h | 2026-05-14 09:00 A | 2026-05-14 10:00 A | 100% |  |  | start no earlier than 2026-05-14 09:00 | Макаревич А | 1h | 1h |
| 2937 | 12.2.23.10 | осмотр ремней, натяжка цепей, ремонт силиконовых отбортовок | 1h | 2026-07-14 09:00 A | 2026-07-14 10:00 A | 100% |  |  | start no earlier than 2026-07-14 09:00 | Некрасов А | 1h | 1h |
| 2938 | 12.2.23.11 | осмотр ремней, натяжка цепей, ремонт силиконовых отбортовок | 1h | 2026-07-30 09:00 A | 2026-07-30 10:00 A | 100% |  |  | start no earlier than 2026-07-30 09:00 | Бундин В | 1h | 1h |
| 2939 | 12.2.23.12 | осмотр ремней, натяжка цепей, ремонт силиконовых отбортовок | 1h | 2026-08-20 09:00 A | 2026-08-20 10:00 A | 100% |  |  | start no earlier than 2026-08-20 09:00 | Труфанов А; Некрасов А | 2h | 2h |
| 2940 | 12.2.23.13 | осмотр ремней, натяжка цепей, ремонт силиконовых отбортовок | 1h | 2026-08-20 09:00 A | 2026-08-20 10:00 A | 100% |  |  | start no earlier than 2026-08-20 09:00 | Дедов В | 1h | 1h |
| 2941 | 12.2.23.14 | Ревизия сетки, контроль роспуска, подогнуть, где что можно, что бы не зацепилось | 1h | 2026-09-24 09:00 A | 2026-09-24 10:00 A | 100% |  |  | start no earlier than 2026-09-24 09:00 | Труфанов А | 1h | 1h |
| 2942 | 12.2.23.15 | Смазка подшипников привод охладителя | 30min | 2026-09-24 09:00 A | 2026-09-24 09:30 A | 100% |  |  | start no earlier than 2026-09-24 09:00 | Труфанов А | 0.5h | 0.5h |
| 2943 | 12.2.23.16 | Смазка всех цепей | 2h | 2026-09-24 09:00 A | 2026-09-24 11:00 A | 100% |  |  | start no earlier than 2026-09-24 09:00 | Труфанов А | 2h | 2h |
| 2944 | 12.2.23.17 | Ремонт уголка на охладителе, позвонить мне, перешлю видео | 30min | 2026-09-29 09:00 | 2026-09-29 09:30 |  |  | 116.53d | start no earlier than 2026-09-29 08:00 | Бундин В | 0.5h |  |

| ID | WBS | Task | Duration | Start | Finish | Predecessors | Complete | Remaining | Total slack | Free slack | Constraint | Resources | Work | Actual work |
| --- | --- | --- | --- | --- | --- | --- | --- | --- | --- | --- | --- | --- | --- | --- |
| 2945 | 12.2.24 | **конвейер 3 с охладителя в упаковку** | 43.03d | 2026-08-12 09:00 A | 2026-10-01 09:15 |  | 80% | 8.61d | 114.56d |  |  | ТО | 337.5h | 97.19h |
| 2946 | 12.2.24.1 | ослабить ленту для чистки барабана / натяжка после чистки | 15min | 2026-08-12 09:00 A | 2026-08-12 09:15 A |  | 100% |  |  |  | start no earlier than 2026-08-12 09:00 | Тимофеев В | 0.25h | 0.25h |
| 2947 | 12.2.24.2 | ревизия люфтов, фиксации, смазки подшипников | 15min | 2026-08-12 09:00 A | 2026-08-12 09:15 A |  | 100% |  |  |  | start no earlier than 2026-08-12 09:00 | Тимофеев В | 0.25h | 0.25h |
| 2948 | 12.2.24.3 | ослабить ленту для чистки барабана / натяжка после чистки | 15min | 2026-09-03 09:00 A | 2026-09-03 09:15 A |  | 100% |  |  |  | start no earlier than 2026-09-03 09:00 | Макаревич А | 0.25h | 0.25h |
| 2949 | 12.2.24.4 | ревизия люфтов, фиксации, смазки подшипников | 15min | 2026-09-17 09:00 A | 2026-09-17 09:15 A |  | 100% |  |  |  | start no earlier than 2026-09-17 09:00 | Некрасов А | 0.25h | 0.25h |
| 2950 | 12.2.24.5 | ревизия люфтов, фиксации, смазки подшипников | 15min | 2026-10-01 09:00 | 2026-10-01 09:15 |  |  |  | 114.56d |  | start no earlier than 2026-10-01 09:00 | Некрасов А | 0.25h |  |
| 2951 | 12.2.25 | **упаковка** | 720.12d | 2023-12-28 09:00 A | 2026-09-24 10:00 A |  | 100% |  |  |  |  | ТО | 5101h | 5101h |
| 2952 | 12.2.25.1 | НОТИС 1 | 2h | 2023-12-28 09:00 A | 2023-12-28 11:00 A |  | 100% |  |  |  | start no earlier than 2023-12-28 09:00 | ТО | 2h | 2h |
| 2953 | 12.2.25.2 | НОТИС 2 | 2h | 2023-12-28 09:00 A | 2023-12-28 11:00 A |  | 100% |  |  |  | start no earlier than 2023-12-28 09:00 | ТО | 2h | 2h |
| 2954 | 12.2.25.3 | запайщик 1 | 2h | 2026-06-18 09:00 A | 2026-06-18 11:00 A |  | 100% |  |  |  | start no earlier than 2026-06-18 09:00 | Труфанов А | 2h | 2h |
| 2955 | 12.2.25.4 | запайщик 2 | 2h | 2026-06-18 09:00 A | 2026-06-18 11:00 A |  | 100% |  |  |  | start no earlier than 2026-06-18 09:00 | Труфанов А | 2h | 2h |
| 2956 | 12.2.25.5 | запайщик 1 проверка перемычек/тефлона замена при необходимости | 2h | 2026-09-03 09:00 A | 2026-09-03 11:00 A |  | 100% |  |  |  | start no earlier than 2026-09-03 09:00 | Макаревич А | 2h | 2h |
| 2957 | 12.2.25.6 | запайщик 1 проверка перемычек/тефлона замена при необходимости | 2h | 2026-09-03 09:00 A | 2026-09-03 11:00 A |  | 100% |  |  |  | start no earlier than 2026-09-03 09:00 | Макаревич А | 2h | 2h |
| 2958 | 12.2.25.7 | запайщик 1 и 2 проверка перемычек/тефлона замена при необходимости | 1h | 2026-09-24 09:00 A | 2026-09-24 10:00 A |  | 100% |  |  |  | start no earlier than 2026-09-24 09:00 | Некрасов А | 1h | 1h |
| 2959 | 12.2.26 | **квадропак** | 43.19d | 2026-08-12 09:00 A | 2026-10-01 10:30 |  | 55% | 19.63d | 114.41d |  |  |  | 5.5h | 3h |
| 2960 | 12.2.26.1 | смазка вращающиющихся механизмов | 30min | 2026-10-01 09:00 | 2026-10-01 09:30 |  |  |  | 114.41d | 0d | start no earlier than 2026-10-01 09:00 | Бундин В | 0.5h |  |
| 2961 | 12.2.26.2 | протяжка креплений поворотных лап захвата | 30min | 2026-10-01 09:30 | 2026-10-01 10:00 | 2960 |  |  | 114.41d | 0d | start no earlier than 2026-03-05 09:00 | Бундин В | 0.5h |  |
| 2962 | 12.2.26.3 | чистка вала ленты выгрзного транспортера | 30min | 2026-10-01 10:00 | 2026-10-01 10:30 | 2961 |  |  | 114.41d |  | start no earlier than 2026-03-31 08:00 | Бундин В | 0.5h |  |
| 2963 | 12.2.26.4 | осмотр приводной системы нории / смазка | 30min | 2026-08-12 09:00 | 2026-08-12 09:30 |  |  |  | 157.53d |  | start no earlier than 2026-08-12 09:00 | Тимофеев В | 0.5h |  |
| 2964 | 12.2.26.5 | осмотр приводной системы нории / смазка | 30min | 2026-08-20 09:00 | 2026-08-20 09:30 |  |  |  | 151.53d |  | start no earlier than 2026-08-20 09:00 | Бобренок В | 0.5h |  |
| 2965 | 12.2.26.6 | осмотр приводной системы нории / смазка | 30min | 2026-09-03 09:00 A | 2026-09-03 09:30 A |  | 100% |  |  |  | start no earlier than 2026-09-03 09:00 | Макаревич А | 0.5h | 0.5h |
| 2966 | 12.2.26.7 | протяжка креплений поворотных лап захвата | 30min | 2026-09-03 09:00 A | 2026-09-03 09:30 A |  | 100% |  |  |  | start no earlier than 2026-09-03 09:00 | Макаревич А | 0.5h | 0.5h |
| 2967 | 12.2.26.8 | снимать ковши для доступка к подшинику, нуждающего в смазке( сообщил Некрасов) | 2h | 2026-09-24 09:00 A | 2026-09-24 11:00 A |  | 100% |  |  |  | start no earlier than 2026-09-24 09:00 | Бундин В | 2h | 2h |
| 2968 | 12.2.27 | **БЕСТРОМ** | 720.25d | 2023-12-28 09:00 A | 2026-09-24 11:00 |  | 80% | 147.59d | 121.34d |  |  | ТО | 1100.83h | 72.33h |
| 2969 | 12.2.27.1 | чистка тен с демантожем | 2.5h | 2026-03-05 09:00 A | 2026-03-05 11:30 A |  | 100% |  |  |  | start no earlier than 2026-03-05 09:00 | Бундин В | 2.5h | 2.5h |
| 2970 | 12.2.27.2 | ослабить ленту для чистки барабана / натяжка после чистки | 10min | 2026-03-12 09:00 A | 2026-03-12 09:10 A |  | 100% |  |  |  | start no earlier than 2026-03-12 09:00 | Бундин В | 0.17h | 0.17h |
| 2971 | 12.2.27.3 | чистка тенов | 1h | 2026-05-14 09:00 A | 2026-05-14 10:00 A |  | 100% |  |  |  | start no earlier than 2026-05-14 09:00 | Макаревич А | 1h | 1h |
| 2972 | 12.2.27.4 | чистка тенов | 2h | 2026-07-14 09:00 | 2026-07-14 11:00 |  |  |  | 178.34d |  | start no earlier than 2026-07-14 09:00 | Бундин В | 2h |  |
| 2973 | 12.2.27.5 | конвейер и вибробункер БЕСТРОМ | 2h | 2023-12-28 09:00 | 2023-12-28 11:00 |  |  |  | 841.34d |  | start no earlier than 2023-12-28 09:00 | ТО | 2h |  |
| 2974 | 12.2.27.6 | бестром чистка тен, проверка тефлона, роликов (согласовать с мастером) | 2h | 2026-07-08 09:00 A | 2026-07-08 11:00 A |  | 100% |  |  |  | start no earlier than 2026-07-08 09:00 | Бобренок В | 2h | 2h |
| 2975 | 12.2.27.7 | бестром чистка тен, проверка тефлона, роликов (согласовать с мастером) | 1h | 2026-07-30 09:00 A | 2026-07-30 10:00 A |  | 100% |  |  |  | start no earlier than 2026-07-30 09:00 | Тимофеев В | 1h | 1h |
| 2976 | 12.2.27.8 | бестром чистка тен, проверка тефлона, роликов (согласовать с мастером) | 1h | 2026-08-13 09:00 A | 2026-08-13 10:00 A |  | 100% |  |  |  | start no earlier than 2026-08-13 09:00 | Тимофеев В | 1h | 1h |
| 2977 | 12.2.27.9 | бестром чистка тен, проверка тефлона, роликов (согласовать с мастером) | 1h | 2026-08-20 09:00 A | 2026-08-20 10:00 A |  | 100% |  |  |  | start no earlier than 2026-08-20 09:00 | Дедов В | 1h | 1h |
| 2978 | 12.2.27.10 | бестром чистка тен, проверка тефлона, роликов (согласовать с мастером) | 1h | 2026-09-03 09:00 A | 2026-09-03 10:00 A |  | 100% |  |  |  | start no earlier than 2026-09-03 09:00 | Макаревич А | 1h | 1h |
| 2979 | 12.2.27.11 | Замена линейного подшипника ISKRA KH2030-PP (согласование с Домоводовым) не делали, все норм там) | 2h | 2026-09-03 09:00 A | 2026-09-03 11:00 A |  | 100% |  |  |  | start no earlier than 2026-09-03 09:00 | Макаревич А | 2h | 2h |
| 2980 | 12.2.27.12 | ослабить ленту для чистки барабана / натяжка после чистки | 10min | 2026-09-10 09:00 | 2026-09-10 09:10 |  |  |  | 135.57d |  | start no earlier than 2026-09-10 09:00 | Макаревич А | 0.17h |  |
| 2981 | 12.2.27.13 | Замена поролоновой губки на горизонтальных тенах запайки пакетов | 30min | 2026-09-17 09:00 A | 2026-09-17 09:30 A |  | 100% |  |  |  | start no earlier than 2026-09-17 09:00 | Бобренок В | 0.5h | 0.5h |
| 2982 | 12.2.27.14 | Чистка ТЭНов | 2h | 2026-09-16 09:00 A | 2026-09-16 11:00 A |  | 100% |  |  |  | start no earlier than 2026-09-16 08:00 | Бундин В | 2h | 2h |
| 2983 | 12.2.27.15 | Чистка ТЭНов | 2h | 2026-09-24 09:00 A | 2026-09-24 11:00 A |  | 100% |  |  |  | start no earlier than 2026-09-24 09:00 | Бундин В | 2h | 2h |

| ID | WBS | Task | Duration | Start | Finish | Complete | Remaining | Total slack | Constraint | Resources | Work | Actual work |
| --- | --- | --- | --- | --- | --- | --- | --- | --- | --- | --- | --- | --- |
| 2984 | 12.2.28 | **электрооборудование** | 700.02d? | 2023-12-28 09:00 A | 2026-09-03 09:10 |  | 696.66d? | 141.57d |  |  | 69.33h | 0.33h |
| 2985 | 12.2.28.1 | ВРУ3 | 30min | 2024-10-03 09:00 | 2024-10-03 09:30 |  |  | 641.53d | start no earlier than 2024-10-03 09:00 | Тимофеев В | 0.5h |  |
| 2986 | 12.2.28.2 | ВРУ4 | 2h | 2023-12-28 09:00 | 2023-12-28 11:00 |  |  | 841.34d | start no earlier than 2023-12-28 09:00 | ТО | 2h |  |
| 2987 | 12.2.28.3 | ВРУ5 | 2h | 2023-12-28 09:00 | 2023-12-28 11:00 |  |  | 841.34d | start no earlier than 2023-12-28 09:00 | ТО | 2h |  |
| 2988 | 12.2.28.4 | ВРУ6 | 2h | 2023-12-28 09:00 | 2023-12-28 11:00 |  |  | 841.34d | start no earlier than 2023-12-28 09:00 | ТО | 2h |  |
| 2989 | 12.2.28.5 | ЩР4 у печи | 2h | 2023-12-28 09:00 | 2023-12-28 11:00 |  |  | 841.34d | start no earlier than 2023-12-28 09:00 | ТО | 2h |  |
| 2990 | 12.2.28.6 | ЩО1 у печи | 30min | 2024-10-03 09:00 | 2024-10-03 09:30 |  |  | 641.53d | start no earlier than 2024-10-03 09:00 | Тимофеев В | 0.5h |  |
| 2991 | 12.2.28.7 | ЩР5 у жиротопки | 2h | 2023-12-28 09:00 | 2023-12-28 11:00 |  |  | 841.34d | start no earlier than 2023-12-28 09:00 | ТО | 2h |  |
| 2992 | 12.2.28.8 | ЩР6 упаковка стна жир | 2h | 2023-12-28 09:00 | 2023-12-28 11:00 |  |  | 841.34d | start no earlier than 2023-12-28 09:00 | ТО | 2h |  |
| 2993 | 12.2.28.9 | ЩР7 упаковка колонна | 2h | 2023-12-28 09:00 | 2023-12-28 11:00 |  |  | 841.34d | start no earlier than 2023-12-28 09:00 | ТО | 2h |  |
| 2994 | 12.2.28.10 | ЩР8 склад навесок | 2h | 2023-12-28 09:00 | 2023-12-28 11:00 |  |  | 841.34d | start no earlier than 2023-12-28 09:00 | ТО | 2h |  |
| 2995 | 12.2.28.11 | ЩР9 2 этаж | 2h | 2023-12-28 09:00 | 2023-12-28 11:00 |  |  | 841.34d | start no earlier than 2023-12-28 09:00 | ТО | 2h |  |
| 2996 | 12.2.28.12 | электрокотел 1 - 2 цех | 2h | 2023-12-28 09:00 | 2023-12-28 11:00 |  |  | 841.34d | start no earlier than 2023-12-28 09:00 | ТО | 2h |  |
| 2997 | 12.2.28.13 | электрокотел 2 - 2 цех | 1d? | 2023-12-28 09:00 | 2023-12-28 18:00 |  |  | 840.59d | start no earlier than 2023-12-28 09:00 | ТО | 8h |  |
| 2998 | 12.2.28.14 | электрокотел 3 - 2 цех | 1d? | 2023-12-28 09:00 | 2023-12-28 18:00 |  |  | 840.59d | start no earlier than 2023-12-28 09:00 | ТО | 8h |  |
| 2999 | 12.2.28.15 | бойлер 4 2 цех раковина | 1d? | 2023-12-28 09:00 | 2023-12-28 18:00 |  |  | 840.59d | start no earlier than 2023-12-28 09:00 | ТО | 8h |  |
| 3000 | 12.2.28.16 | бойлер 5 2 цех душ М | 1d? | 2023-12-28 09:00 | 2023-12-28 18:00 |  |  | 840.59d | start no earlier than 2023-12-28 09:00 | ТО | 8h |  |
| 3001 | 12.2.28.17 | бойлер 6 2 цех душ Ж | 1d? | 2023-12-28 09:00 | 2023-12-28 18:00 |  |  | 840.59d | start no earlier than 2023-12-28 09:00 | ТО | 8h |  |
| 3002 | 12.2.28.18 | насос санитарный | 1d? | 2023-12-28 09:00 | 2023-12-28 18:00 |  |  | 840.59d | start no earlier than 2023-12-28 09:00 | ТО | 8h |  |
| 3003 | 12.2.28.19 | ЩР4 у печи продувка | 10min | 2026-09-03 09:00 A | 2026-09-03 09:10 A | 100% |  |  | start no earlier than 2026-09-03 09:00 | Труфанов А | 0.17h | 0.17h |
| 3004 | 12.2.28.20 | ЩО1 у печи продувка | 10min | 2026-09-03 09:00 A | 2026-09-03 09:10 A | 100% |  |  | start no earlier than 2026-09-03 09:00 | Труфанов А | 0.17h | 0.17h |
| 3005 | 12.2.29 | **Компрессор 2 цех** | 33.06d | 2026-08-06 09:00 A | 2026-09-17 09:30 | 99% | 0d | 0d |  | ТО | 4h | 4h |
| 3006 | 12.2.29.1 | продувка фильтров | 30min | 2026-08-06 09:00 A | 2026-08-06 09:30 A | 100% |  |  | start no earlier than 2026-08-06 09:00 | Тимофеев В | 0.5h | 0.5h |
| 3007 | 12.2.29.2 | слив конденсат с осушителя | 30min | 2026-08-06 09:00 A | 2026-08-06 09:30 A | 100% |  |  | start no earlier than 2026-08-06 09:00 | Тимофеев В | 0.5h | 0.5h |
| 3008 | 12.2.29.3 | слив конденсат с осушителя | 30min | 2026-08-20 09:00 A | 2026-08-20 09:30 A | 100% |  |  | start no earlier than 2026-08-20 09:00 | Дедов В | 0.5h | 0.5h |
| 3009 | 12.2.29.4 | продувка фильтров | 30min | 2026-08-29 09:00 A | 2026-08-31 09:30 A | 100% |  |  | start no earlier than 2026-08-29 09:00 | Макаревич А | 0.5h | 0.5h |
| 3010 | 12.2.29.5 | слив конденсат с осушителя | 30min | 2026-08-29 09:00 A | 2026-08-31 09:30 A | 100% |  |  | start no earlier than 2026-08-29 09:00 | Макаревич А | 0.5h | 0.5h |
| 3011 | 12.2.29.6 | слив конденсат с осушителя | 30min | 2026-08-29 09:00 A | 2026-08-31 09:30 A | 100% |  |  | start no earlier than 2026-08-29 09:00 | Макаревич А | 0.5h | 0.5h |
| 3012 | 12.2.29.7 | слив конденсат с осушителя | 30min | 2026-09-03 09:00 A | 2026-09-03 09:30 A | 100% |  |  | start no earlier than 2026-09-03 09:00 | Макаревич А | 0.5h | 0.5h |
| 3013 | 12.2.29.8 | продувка фильтров (дать размеры фильтра) | 30min | 2026-09-17 09:00 A | 2026-09-17 09:30 A | 100% |  |  | start no earlier than 2026-09-17 09:00 | Труфанов А | 0.5h | 0.5h |

| ID | WBS | Task | Duration | Start | Finish | Complete | Remaining | Total slack | Constraint | Resources | Work | Actual work |
| --- | --- | --- | --- | --- | --- | --- | --- | --- | --- | --- | --- | --- |
| 3014 | 12.2.30 | **насосная станция 2 цех** | 130.06d | 2026-03-05 09:00 A | 2026-09-03 09:30 A | 100% |  |  |  |  | 1h | 1h |
| 3015 | 12.2.30.1 | замена фильтров | 30min | 2026-03-05 09:00 A | 2026-03-05 09:30 A | 100% |  |  | start no earlier than 2026-03-05 09:00 | Тимофеев В | 0.5h | 0.5h |
| 3016 | 12.2.30.2 | замена фильтров | 30min | 2026-09-03 09:00 A | 2026-09-03 09:30 A | 100% |  |  | start no earlier than 2026-09-03 09:00 | Труфанов А | 0.5h | 0.5h |
| 3017 | 12.2.31 | **приточнго-вытяжная венгтиляция и смесительный узел** | 127.06d | 2026-04-16 09:00 A | 2026-10-01 09:30 A | 100% |  |  |  |  | 2.5h | 2.5h |
| 3018 | 12.2.31.1 | замена фильтра | 1h | 2026-04-16 09:00 A | 2026-04-16 10:00 A | 100% |  |  | start no earlier than 2026-04-16 09:00 | Труфанов А; Некрасов А | 2h | 2h |
| 3019 | 12.2.31.2 | Осмотр состояния фильтра приточки/замена | 30min | 2026-10-01 09:00 A | 2026-10-01 09:30 A | 100% |  |  | start no earlier than 2026-10-01 09:00 | Труфанов А | 0.5h | 0.5h |
| 3020 | 12.2.32 | **кондиционер 1** | 640.04d? | 2024-04-18 09:00 A | 2026-09-24 09:20 | 99% | 0d? | 0d |  | ТО | 5070.33h | 4827.32h |
| 3021 | 12.2.32.1 | чистка фильтра | 1h | 2024-04-18 09:00 A | 2024-04-18 10:00 A | 100% |  |  | start no earlier than 2024-04-18 08:00 | Черепанов И; Некрасов А | 2h | 2h |
| 3022 | 12.2.32.2 | чистка фильтра | 20min | 2026-03-05 09:00 A | 2026-03-05 09:20 A | 100% |  |  | start no earlier than 2026-03-05 09:00 | Некрасов А; Бундин В | 0.67h | 0.67h |
| 3023 | 12.2.32.3 | чистка фильтров | 1d? | 2026-06-25 09:00 A | 2026-06-25 18:00 A | 100% |  |  | start no earlier than 2026-06-25 09:00 | Тимофеев В; Дедов В | 16h | 16h |
| 3024 | 12.2.32.4 | чистка фильтров | 20min | 2026-07-14 09:00 A | 2026-07-14 09:20 A | 100% |  |  | start no earlier than 2026-07-14 09:00 | Некрасов А; Бундин В | 0.67h | 0.67h |
| 3025 | 12.2.32.5 | чистка фильтров | 20min | 2026-08-13 09:00 A | 2026-08-13 09:20 A | 100% |  |  | start no earlier than 2026-08-13 09:00 | Некрасов А; Труфанов А | 0.67h | 0.67h |
| 3026 | 12.2.32.6 | чистка фильтров | 20min | 2026-09-03 09:00 A | 2026-09-03 09:20 A | 100% |  |  | start no earlier than 2026-09-03 09:00 | Некрасов А; Тимофеев В | 0.67h | 0.67h |
| 3027 | 12.2.32.7 | чистка фильтров | 20min | 2026-09-17 09:00 A | 2026-09-17 09:20 A | 100% |  |  | start no earlier than 2026-09-17 09:00 | Тимофеев В; Бобренок В | 0.67h | 0.67h |
| 3028 | 12.2.32.8 | чистка фильтров | 20min | 2026-09-24 09:00 A | 2026-09-24 09:20 A | 100% |  |  | start no earlier than 2026-09-24 09:00 | Тимофеев В; Бундин В | 0.67h | 0.67h |
| 3029 | 12.2.33 | **кондиционер 2** | 640.04d? | 2024-04-18 09:00 A | 2026-09-24 09:20 | 99% | 0d? | 0d |  | ТО | 5071.5h | 4983.33h |
| 3030 | 12.2.33.1 | чистка фильтров | 1d? | 2026-06-25 09:00 A | 2026-06-25 18:00 A | 100% |  |  | start no earlier than 2026-06-25 09:00 | Тимофеев В; Дедов В | 16h | 16h |
| 3031 | 12.2.33.2 | чистка фильтра | 1h | 2024-04-18 09:00 A | 2024-04-18 10:00 A | 100% |  |  | start no earlier than 2024-04-18 08:00 | Черепанов И; Некрасов А | 2h | 2h |
| 3032 | 12.2.33.3 | чистка фильтра | 20min | 2026-03-05 09:00 A | 2026-03-05 09:20 A | 100% |  |  | start no earlier than 2026-03-05 09:00 | Некрасов А; Бундин В | 0.67h | 0.67h |
| 3033 | 12.2.33.4 | чистка фильтров | 20min | 2026-07-14 09:00 A | 2026-07-14 09:20 A | 100% |  |  | start no earlier than 2026-07-14 09:00 | Некрасов А; Бундин В | 0.67h | 0.67h |
| 3034 | 12.2.33.5 | чистка фильтров | 20min | 2026-08-13 09:00 A | 2026-08-13 09:20 A | 100% |  |  | start no earlier than 2026-08-13 09:00 | Некрасов А; Труфанов А | 0.67h | 0.67h |
| 3035 | 12.2.33.6 | чистка фильтров | 20min | 2026-08-13 09:00 A | 2026-08-13 09:20 A | 100% |  |  | start no earlier than 2026-08-13 09:00 | Некрасов А; Труфанов А | 0.67h | 0.67h |
| 3036 | 12.2.33.7 | чистка фильтров | 20min | 2026-09-03 09:00 A | 2026-09-03 09:20 A | 100% |  |  | start no earlier than 2026-09-03 09:00 | Некрасов А; Тимофеев В | 0.67h | 0.67h |
| 3037 | 12.2.33.8 | чистка фильтров | 30min | 2026-09-17 09:00 A | 2026-09-17 09:30 A | 100% |  |  | start no earlier than 2026-09-17 09:00 | Тимофеев В; Бобренок В | 1h | 1h |
| 3038 | 12.2.33.9 | чистка фильтров | 20min | 2026-09-24 09:00 A | 2026-09-24 09:20 A | 100% |  |  | start no earlier than 2026-09-24 09:00 | Тимофеев В; Бундин В | 0.67h | 0.67h |

| ID | WBS | Task | Type | Duration | Start | Finish | Complete | Total slack | Constraint | Resources | Work | Actual work |
| --- | --- | --- | --- | --- | --- | --- | --- | --- | --- | --- | --- | --- |
| 3039 | 12.2.34 | **кондиционер 3** |  | 150.04d | 2026-03-05 09:00 A | 2026-09-24 09:20 A | 100% |  |  |  | 4.67h | 4.67h |
| 3040 | 12.2.34.1 | чистка фильтра |  | 20min | 2026-03-05 09:00 A | 2026-03-05 09:20 A | 100% |  | start no earlier than 2026-03-05 09:00 | Некрасов А; Бундин В | 0.67h | 0.67h |
| 3041 | 12.2.34.2 | чистка фильтров |  | 20min | 2026-07-14 09:00 A | 2026-07-14 09:20 A | 100% |  | start no earlier than 2026-07-14 09:00 | Некрасов А; Бундин В | 0.67h | 0.67h |
| 3042 | 12.2.34.3 | чистка фильтров |  | 20min | 2026-08-13 09:00 A | 2026-08-13 09:20 A | 100% |  | start no earlier than 2026-08-13 09:00 | Некрасов А; Труфанов А | 0.67h | 0.67h |
| 3043 | 12.2.34.4 | чистка фильтров |  | 20min | 2026-08-13 09:00 A | 2026-08-13 09:20 A | 100% |  | start no earlier than 2026-08-13 09:00 | Некрасов А; Труфанов А | 0.67h | 0.67h |
| 3044 | 12.2.34.5 | чистка фильтров |  | 20min | 2026-09-03 09:00 A | 2026-09-03 09:20 A | 100% |  | start no earlier than 2026-09-03 09:00 | Некрасов А; Тимофеев В | 0.67h | 0.67h |
| 3045 | 12.2.34.6 | чистка фильтров |  | 20min | 2026-09-17 09:00 A | 2026-09-17 09:20 A | 100% |  | start no earlier than 2026-09-17 09:00 | Тимофеев В; Бобренок В | 0.67h | 0.67h |
| 3046 | 12.2.34.7 | чистка фильтров |  | 20min | 2026-09-24 09:00 A | 2026-09-24 09:20 A | 100% |  | start no earlier than 2026-09-24 09:00 | Тимофеев В; Бундин В | 0.67h | 0.67h |
| 3047 | 12.2.35 | **электроштабелер** |  | 2.38d | 2026-08-11 09:00 A | 2026-08-13 12:00 A | 100% |  |  | ТО | 22.25h | 22.25h |
| 3048 | 12.2.35.1 | **хруст в колесе устранить** |  | 2.38d | 2026-08-11 09:00 A | 2026-08-13 12:00 A | 100% |  |  |  | 3.25h | 3.25h |
| 3049 | 12.2.35.1.1 | хруст с правой стороны штабелера- ревизия, скорее всего подшипник (экструдер). Осмотр, доложить | manual | 15min | 2026-08-11 09:00 A | 2026-08-11 09:15 A | 100% |  | start no earlier than 2026-08-11 09:00 | Тимофеев В | 0.25h | 0.25h |
| 3050 | 12.2.35.1.2 | ремонт замена подшипник колесо штабелер |  | 3h | 2026-08-13 09:00 A | 2026-08-13 12:00 A | 100% |  | start no earlier than 2026-08-13 09:00 | Тимофеев В | 3h | 3h |
| 3051 | 12.2.36 | **Лаборатория** |  | 0.25d | 2026-09-18 09:00 A | 2026-09-18 11:00 A | 100% |  |  |  | 2h | 2h |
| 3052 | 12.2.36.1 | Прочистка дистилятора/ТО, очистка накипи, инструкция смотреть в лаборатории |  | 2h | 2026-09-18 09:00 A | 2026-09-18 11:00 A | 100% |  | start no earlier than 2026-09-18 09:00 | Бобренок В | 2h | 2h |
| 3053 | 12.3 | **3 цех** |  | 1d? | 2023-12-28 09:00 | 2023-12-28 18:00 |  | 840.59d |  | ТО | 88h |  |
| 3054 | 12.3.1 | **электрооборудование** |  | 1d? | 2023-12-28 09:00 | 2023-12-28 18:00 |  | 840.59d |  | ТО | 48h |  |
| 3055 | 12.3.1.1 | ВРУ7 |  | 1d? | 2023-12-28 09:00 | 2023-12-28 18:00 |  | 840.59d | start no earlier than 2023-12-28 09:00 | ТО | 8h |  |
| 3056 | 12.3.1.2 | ОЩР |  | 1d? | 2023-12-28 09:00 | 2023-12-28 18:00 |  | 840.59d | start no earlier than 2023-12-28 09:00 | ТО | 8h |  |
| 3057 | 12.3.1.3 | электрокотел 4 - 3 цех |  | 1d? | 2023-12-28 09:00 | 2023-12-28 18:00 |  | 840.59d | start no earlier than 2023-12-28 09:00 | ТО | 8h |  |
| 3058 | 12.3.1.4 | электрокотел 5 - 3 цех |  | 1d? | 2023-12-28 09:00 | 2023-12-28 18:00 |  | 840.59d | start no earlier than 2023-12-28 09:00 | ТО | 8h |  |
| 3059 | 12.3.1.5 | электрокотел 6 - 3 цех |  | 1d? | 2023-12-28 09:00 | 2023-12-28 18:00 |  | 840.59d | start no earlier than 2023-12-28 09:00 | ТО | 8h |  |
| 3060 | 12.3.2 | электроштабелер 1 |  | 1d? | 2023-12-28 09:00 | 2023-12-28 18:00 |  | 840.59d | start no earlier than 2023-12-28 09:00 | ТО | 8h |  |
| 3061 | 12.3.3 | электроштабелер 2 |  | 1d? | 2023-12-28 09:00 | 2023-12-28 18:00 |  | 840.59d | start no earlier than 2023-12-28 09:00 | ТО | 8h |  |
| 3062 | 12.3.4 | вилочный погрузчик 1 |  | 1d? | 2023-12-28 09:00 | 2023-12-28 18:00 |  | 840.59d | start no earlier than 2023-12-28 09:00 | ТО | 8h |  |
| 3063 | 12.3.5 | вилочный погрузчик 2 |  | 1d? | 2023-12-28 09:00 | 2023-12-28 18:00 |  | 840.59d | start no earlier than 2023-12-28 09:00 | ТО | 8h |  |

| ID | WBS | Task | Type | Duration | Start | Finish | Complete | Remaining | Total slack | Constraint | Resources | Work | Actual work |
| --- | --- | --- | --- | --- | --- | --- | --- | --- | --- | --- | --- | --- | --- |
| 3064 | 12.4 | **5 цех** |  | 656.25d? | 2023-12-28 09:00 A | 2026-07-03 11:00 | 10% | 593.75d? | 185.34d |  | ТО | 6302h | 906.67h |
| 3065 | 12.4.1 | насосная станция 5 цех |  | 1d? | 2023-12-28 09:00 | 2023-12-28 18:00 |  |  | 840.59d | start no earlier than 2023-12-28 09:00 | ТО | 8h |  |
| 3066 | 12.4.2 | растариватель |  | 1d? | 2023-12-28 09:00 | 2023-12-28 18:00 |  |  | 840.59d | start no earlier than 2023-12-28 09:00 | ТО | 8h |  |
| 3067 | 12.4.3 | **шнек 1 растариватель-смеситель** |  | 65.25d | 2026-04-03 09:00 A | 2026-07-03 11:00 | 67% | 21.75d | 0d |  | ТО | 492h | 342.67h |
| 3068 | 12.4.3.1 | замена подшипник нижний | manual | 2h | 2026-04-03 09:00 A | 2026-04-03 11:00 A | 100% |  |  |  | Некрасов А; Труфанов А | 4h | 4h |
| 3069 | 12.4.3.2 | ревизия подшипник верхний - не снимается.ревизия - все ок, мазка | manual | 2h | 2026-04-03 09:00 A | 2026-04-03 11:00 A | 100% |  |  |  | Некрасов А; Труфанов А | 4h | 4h |
| 3070 | 12.4.3.3 | осмотр износа, смазка | manual | 2h | 2026-07-03 09:00 | 2026-07-03 11:00 |  |  |  |  | Тимофеев В | 2h |  |
| 3071 | 12.4.4 | смеситель СМ1500 |  | 1d? | 2023-12-28 09:00 | 2023-12-28 18:00 |  |  | 840.59d | start no earlier than 2023-12-28 09:00 | ТО | 8h |  |
| 3072 | 12.4.5 | **шнек 2 смеситель -дробилка** |  | 68.5d? | 2026-03-24 09:00 A | 2026-06-26 13:00 | 67% | 22.83d? | 190.09d |  | ТО | 440h | 64h |
| 3073 | 12.4.5.1 | ремонт вала, т.к съело посадку на верх подшипник |  | 1d? | 2026-03-24 09:00 A | 2026-03-24 18:00 A | 100% |  |  | start no earlier than 2026-03-24 09:00 | Труфанов А; Некрасов А | 16h | 16h |
| 3074 | 12.4.5.2 | осмотр износа |  | 4h | 2026-06-26 09:00 | 2026-06-26 13:00 |  |  | 190.09d | start no earlier than 2026-06-26 09:00 | Тимофеев В | 4h |  |
| 3075 | 12.4.6 | **дробилка ДМС3** |  | 0.5d | 2026-05-11 09:00 | 2026-05-11 13:00 |  |  | 224.09d |  | ТО | 8h |  |
| 3076 | 12.4.6.1 | замена подшипник буксы сторона мотора |  | 4h | 2026-05-11 09:00 | 2026-05-11 13:00 |  |  | 224.09d | start no earlier than 2026-05-10 09:00 | Бундин В | 4h |  |
| 3077 | 12.4.7 | шнек 3 дробилка-накопитель |  | 1d? | 2023-12-28 09:00 | 2023-12-28 18:00 |  |  | 840.59d | start no earlier than 2023-12-28 09:00 | ТО | 8h |  |
| 3078 | 12.4.8 | дробилка 11квт |  | 1d? | 2023-12-28 09:00 | 2023-12-28 18:00 |  |  | 840.59d | start no earlier than 2023-12-28 09:00 | ТО | 8h |  |
| 3079 | 12.4.9 | дробилка 7,5квт |  | 1d? | 2023-12-28 09:00 | 2023-12-28 18:00 |  |  | 840.59d | start no earlier than 2023-12-28 09:00 | ТО | 8h |  |
| 3080 | 12.4.10 | вибросито А |  | 1d? | 2023-12-28 09:00 | 2023-12-28 18:00 |  |  | 840.59d | start no earlier than 2023-12-28 09:00 | ТО | 8h |  |
| 3081 | 12.4.11 | вибросито Б |  | 1d? | 2023-12-28 09:00 | 2023-12-28 18:00 |  |  | 840.59d | start no earlier than 2023-12-28 09:00 | ТО | 8h |  |
| 3082 | 12.4.12 | **электрооборудование** |  | 1d? | 2023-12-28 09:00 | 2023-12-28 18:00 |  |  | 840.59d |  | ТО | 48h |  |
| 3083 | 12.4.12.1 | ВРУ7 |  | 1d? | 2023-12-28 09:00 | 2023-12-28 18:00 |  |  | 840.59d | start no earlier than 2023-12-28 09:00 | ТО | 8h |  |
| 3084 | 12.4.12.2 | ЩР2 |  | 1d? | 2023-12-28 09:00 | 2023-12-28 18:00 |  |  | 840.59d | start no earlier than 2023-12-28 09:00 | ТО | 8h |  |
| 3085 | 12.4.12.3 | котельная газовая 5 цех |  | 1d? | 2023-12-28 09:00 | 2023-12-28 18:00 |  |  | 840.59d | start no earlier than 2023-12-28 09:00 | ТО | 8h |  |
| 3086 | 12.4.12.4 | бойлеры душ |  | 1d? | 2023-12-28 09:00 | 2023-12-28 18:00 |  |  | 840.59d | start no earlier than 2023-12-28 09:00 | ТО | 8h |  |
| 3087 | 12.4.12.5 | вентилятор вытяжной в дробилке |  | 1d? | 2023-12-28 09:00 | 2023-12-28 18:00 |  |  | 840.59d | start no earlier than 2023-12-28 09:00 | ТО | 8h |  |

| ID | WBS | Task | Type | Duration | Start | Finish | Complete | Remaining | Total slack | Constraint | Resources | Work | Actual work |
| --- | --- | --- | --- | --- | --- | --- | --- | --- | --- | --- | --- | --- | --- |
| 3088 | 12.5 | **адм корпус** |  | 1d? | 2023-12-28 09:00 | 2023-12-28 18:00 |  |  | 840.59d |  | ТО | 24h |  |
| 3089 | 12.5.1 | бойлер туалет |  | 1d? | 2023-12-28 09:00 | 2023-12-28 18:00 |  |  | 840.59d | start no earlier than 2023-12-28 09:00 | ТО | 8h |  |
| 3090 | 12.5.2 | ОЩР |  | 1d? | 2023-12-28 09:00 | 2023-12-28 18:00 |  |  | 840.59d | start no earlier than 2023-12-28 09:00 | ТО | 8h |  |
| 3091 | 12.6 | **склад упаковки** |  | 1d? | 2023-12-28 09:00 | 2023-12-28 18:00 |  |  | 840.59d |  | ТО | 32h |  |
| 3092 | 12.6.1 | **электрооборудование** |  | 1d? | 2023-12-28 09:00 | 2023-12-28 18:00 |  |  | 840.59d |  | ТО | 24h |  |
| 3093 | 12.6.1.1 | ЩО и ЩР |  | 1d? | 2023-12-28 09:00 | 2023-12-28 18:00 |  |  | 840.59d | start no earlier than 2023-12-28 09:00 | ТО | 8h |  |
| 3094 | 12.6.1.2 | санитарный насос |  | 1d? | 2023-12-28 09:00 | 2023-12-28 18:00 |  |  | 840.59d | start no earlier than 2023-12-28 09:00 | ТО | 8h |  |
| 3095 | 12.7 | **цех наполнителей** |  | 1d? | 2023-12-28 09:00 | 2023-12-28 18:00 |  |  | 840.59d |  | ТО | 56h |  |
| 3096 | 12.7.1 | ЩО и ЩР |  | 1d? | 2023-12-28 09:00 | 2023-12-28 18:00 |  |  | 840.59d | start no earlier than 2023-12-28 09:00 | ТО | 8h |  |
| 3097 | 12.7.2 | комппрессор |  | 1d? | 2023-12-28 09:00 | 2023-12-28 18:00 |  |  | 840.59d | start no earlier than 2023-12-28 09:00 | ТО | 8h |  |
| 3098 | 12.7.3 | конвейер загрузки |  | 1d? | 2023-12-28 09:00 | 2023-12-28 18:00 |  |  | 840.59d | start no earlier than 2023-12-28 09:00 | ТО | 8h |  |
| 3099 | 12.7.4 | дозатор НОТИС |  | 1d? | 2023-12-28 09:00 | 2023-12-28 18:00 |  |  | 840.59d | start no earlier than 2023-12-28 09:00 | ТО | 8h |  |
| 3100 | 12.7.5 | запайщик |  | 1d? | 2023-12-28 09:00 | 2023-12-28 18:00 |  |  | 840.59d | start no earlier than 2023-12-28 09:00 | ТО | 8h |  |
| 3101 | 12.7.6 | вилочный погрузчик тойота |  | 1d? | 2023-12-28 09:00 | 2023-12-28 18:00 |  |  | 840.59d | start no earlier than 2023-12-28 09:00 | ТО | 8h |  |
| 3102 | 12.8 | Установка розетки под литийионный аккумклятор 3-х фазный, установить рядом с существующей ВРУ |  | 2h | 2026-07-08 09:00 | 2026-07-08 11:00 |  |  | 182.34d | start no earlier than 2026-07-08 08:00 | Бундин В | 2h |  |
| 3103 | 13 | **синий склад** |  | 111.38d | 2026-05-07 09:00 A | 2026-09-30 12:00 | 52% | 53.27d | 115.22d |  |  | 23h | 12h |
| 3104 | 13.1 | установить на место крышки вентиляторов |  | 1h | 2026-08-17 09:00 A | 2026-08-17 10:00 A | 100% |  |  | start no earlier than 2026-08-17 09:00 | Бобренок В | 1h | 1h |
| 3105 | 13.2 | Монтаж доп освещения |  | 2h | 2026-09-26 09:00 A | 2026-09-26 11:00 A | 100% |  |  | start no earlier than 2026-09-26 09:00 | Бобренок В | 2h | 2h |
| 3106 | 13.3 | монтаж включателя света с улицы, возле вход. Двери |  | 3h | 2026-09-30 09:00 | 2026-09-30 12:00 |  |  | 115.22d | start no earlier than 2026-09-30 09:00 | Бобренок В | 3h |  |
| 3107 | 13.4 | расширить проем вверху для проезда погрузчиков, врезаются | manual | 1d | 2026-09-21 09:00 | 2026-09-21 18:00 |  |  |  | start no earlier than 2026-09-21 09:00 | Олег | 8h |  |
| 3108 | 13.5 | замерить диаметр крыльчатки двигателя экструдера, инфу передать мне |  | 1h | 2026-06-13 09:00 A | 2026-06-15 10:00 A | 100% |  |  | start no earlier than 2026-06-13 09:00 | Бобренок В | 1h | 1h |
| 3109 | 13.6 | найти амперметры 30А и 150А (сказать кол-во) |  | 2h | 2026-06-10 09:00 A | 2026-06-10 11:00 A | 100% |  |  | start no earlier than 2026-06-10 09:00 | Труфанов А | 2h | 2h |
| 3110 | 13.7 | Навести порядок на входе в синий склад |  | 2h | 2026-07-23 09:00 A | 2026-07-23 11:00 A | 100% |  |  | start no earlier than 2026-07-24 09:00 | Бундин В | 2h | 2h |
| 3111 | 13.8 | проверить и подписать все материалы в синем складе с Алексеем |  | 4h | 2026-05-07 09:00 A | 2026-05-07 13:00 A | 100% |  |  | start no earlier than 2026-05-07 09:00 | Шуранов Ю | 4h | 4h |

| ID | WBS | Task | Duration | Start | Finish | Predecessors | Complete | Constraint | Resources | Work | Actual work |
| --- | --- | --- | --- | --- | --- | --- | --- | --- | --- | --- | --- |
| 3112 | 14 | **хим лаб** | 652.25d? | 2024-01-11 08:00 A | 2026-07-13 11:00 A |  | 100% |  |  | 71.75h | 71.75h |
| 3113 | 14.1 | замена кран РР | 2h | 2026-07-13 09:00 A | 2026-07-13 11:00 A |  | 100% | start no earlier than 2026-07-13 09:00 | Тимофеев В | 2h | 2h |
| 3114 | 14.2 | ремонт термоконтроллера - замена реле / перепаять с сзоны ALARM | 1h | 2026-06-09 09:00 A | 2026-06-09 10:00 A |  | 100% | start no earlier than 2026-06-09 09:00 | Дедов В | 1h | 1h |
| 3115 | 14.3 | **усилить питание хим лаб, что бы не отключался автомат при вкл быт приборов** | 0.12d | 2026-05-29 09:00 A | 2026-05-29 10:00 A |  | 100% |  |  | 2h | 2h |
| 3116 | 14.3.1 | переключение питания хим лаб на отдельный ШУ | 1h | 2026-05-29 09:00 A | 2026-05-29 10:00 A |  | 100% | start no earlier than 2026-05-29 09:00 | Некрасов А; Бобренок В | 2h | 2h |
| 3117 | 14.4 | **ремонт бойлер вода - ПУН** | 10.25d | 2026-05-14 08:00 A | 2026-05-28 11:00 A |  | 100% |  |  | 4.75h | 4.75h |
| 3118 | 14.4.1 | замена из ЗИП | 1h | 2026-05-14 08:00 A | 2026-05-14 10:00 A |  | 100% | start no earlier than 2026-05-14 08:00 | Тимофеев В | 1h | 1h |
| 3119 | 14.4.2 | диагностика неисправности. Бойлер в слесарне | 1h | 2026-05-14 08:00 A | 2026-05-14 10:00 A |  | 100% | start no earlier than 2026-05-14 08:00 | Бобренок В | 1h | 1h |
| 3120 | 14.4.3 | заявка предохарнитель | 30min | 2026-05-15 09:00 A | 2026-05-15 09:30 A | 3119 | 100% | start no earlier than 2026-05-15 08:00 | Шуранов Ю | 0.5h | 0.5h |
| 3121 | 14.4.4 | контроль поставки | 15min | 2026-05-22 09:30 A | 2026-05-22 09:45 A | 3120FS+7d | 100% | start no earlier than 2026-05-15 08:00 | Шуранов Ю | 0.25h | 0.25h |
| 3122 | 14.4.5 | заменить на бойлере в слесарке термостата WY-S37A | 2h | 2026-05-28 09:00 A | 2026-05-28 11:00 A |  | 100% | start no earlier than 2026-05-28 09:00 | Тимофеев В | 2h | 2h |
| 3123 | 14.5 | **ремонт дистилятор** | 31d? | 2026-04-27 09:00 A | 2026-06-08 18:00 A |  | 100% |  |  | 17h | 17h |
| 3124 | 14.5.1 | заявка тен | 1h | 2026-04-27 09:00 A | 2026-04-27 10:00 A |  | 100% | start no earlier than 2026-04-27 09:00 | Шуранов Ю | 1h | 1h |
| 3125 | 14.5.2 | доставка | 1d? | 2026-06-05 09:00 A | 2026-06-05 18:00 A | 3124 | 100% | finish no earlier than 2026-06-05 18:00 | Карабанов | 8h | 8h |
| 3126 | 14.5.3 | замена. Больше не выбиывает | 1d? | 2026-06-05 18:00 A | 2026-06-08 18:00 A | 3125 | 100% | start no earlier than 2026-05-13 09:00 | Тимофеев В | 8h | 8h |
| 3127 | 14.6 | **ремонт АКВ_шесть** | 30d? | 2026-04-27 09:00 A | 2026-06-05 18:00 A |  | 100% |  |  | 11h | 11h |
| 3128 | 14.6.1 | заявка тен | 1h | 2026-04-27 09:00 A | 2026-04-27 10:00 A |  | 100% | start no earlier than 2026-04-27 09:00 | Шуранов Ю | 1h | 1h |
| 3129 | 14.6.2 | доставка | 1d? | 2026-06-05 09:00 A | 2026-06-05 18:00 A | 3128 | 100% | finish no earlier than 2026-06-05 18:00 | Карабанов | 8h | 8h |
| 3130 | 14.6.3 | замена | 2h | 2026-05-24 09:00 A | 2026-05-25 11:00 A |  | 100% | start no earlier than 2026-05-24 09:00 | Дедов В | 2h | 2h |
| 3131 | 14.7 | проверить прибор | 1d? | 2026-05-06 09:00 A | 2026-05-06 18:00 A |  | 100% | start no earlier than 2026-05-06 08:00 | Шуранов Ю | 8h | 8h |
| 3132 | 14.8 | датчик температуры ?? Заявка | 1d? | 2026-04-27 09:00 A | 2026-04-27 18:00 A |  | 100% | start no earlier than 2026-04-27 08:00 | Шуранов Ю | 8h | 8h |
| 3133 | 14.9 | дистилятор отключается ?? Заявка | 1d? | 2026-04-27 09:00 A | 2026-04-27 18:00 A |  | 100% | start no earlier than 2026-04-27 08:00 | Шуранов Ю | 8h | 8h |
| 3134 | 14.10 | перенос старый прибор в архив 5ц | 30min | 2026-04-20 09:00 A | 2026-04-20 09:30 A |  | 100% | start no earlier than 2026-04-20 08:00 | Кладовщики | 0.5h | 0.5h |
| 3135 | 14.11 | замена 2 вентилятора | 4h | 2024-01-16 08:00 A | 2024-01-16 13:00 A |  | 100% | start no earlier than 2024-01-16 08:00 | Бобренок В | 4h | 4h |
| 3136 | 14.12 | ремонт соленоид | 2h | 2024-01-16 08:00 A | 2024-01-16 11:00 A |  | 100% | start no earlier than 2024-01-16 08:00 | Тимофеев В | 2h | 2h |
| 3137 | 14.13 | ремонт вытяжка №2 диагностика вентилятор | 30min | 2024-01-11 08:00 A | 2024-01-11 09:30 A |  | 100% | start no earlier than 2024-01-11 08:00 | Дедов В | 0.5h | 0.5h |
| 3138 | 14.14 | замена насос " агрегат | 1h | 2024-01-11 08:00 A | 2024-01-11 10:00 A |  | 100% | start no earlier than 2024-01-11 08:00 | Дедов В | 1h | 1h |
| 3139 | 14.15 | замена тен по доставке | 2h | 2026-03-17 09:00 A | 2026-03-17 11:00 A |  | 100% | start no earlier than 2026-03-17 09:00 | Макаревич А | 2h | 2h |

| ID | WBS | Task | Duration | Start | Finish | Predecessors | Complete | Remaining | Total slack | Constraint | Resources | Work | Actual work |
| --- | --- | --- | --- | --- | --- | --- | --- | --- | --- | --- | --- | --- | --- |
| 3140 | 15 | **цех наполнителей** | 194.12d | 2025-07-14 09:00 A | 2026-04-10 10:00 A |  | 100% |  |  |  |  | 10h | 10h |
| 3141 | 15.1 | взять со склада АКБ и клеммы заменить на погрузчике, старый АКБ отдать на 2 этаж склад | 1h | 2026-04-10 09:00 A | 2026-04-10 10:00 A |  | 100% |  |  | start no earlier than 2026-04-10 09:00 | Тимофеев В | 1h | 1h |
| 3142 | 15.2 | поменять пневмоцилиндр на нотис | 1h | 2026-04-09 09:00 A | 2026-04-09 10:00 A |  | 100% |  |  | start no earlier than 2026-04-10 09:00 | Тимофеев В | 1h | 1h |
| 3143 | 15.3 | проверить дист. Воду в АКБ погрузчика | 1h | 2026-04-01 09:00 A | 2026-04-01 10:00 A |  | 100% |  |  | start no earlier than 2026-04-01 09:00 | Тимофеев В | 1h | 1h |
| 3144 | 15.4 | просверлить больше, нарезать резьбу для крепления стола запайщика, резьба сорвана | 1h | 2026-03-20 09:00 A | 2026-03-20 10:00 A |  | 100% |  |  | start no earlier than 2026-03-20 09:00 | Бундин В | 1h | 1h |
| 3145 | 15.5 | ремонт компрессор. Проверка конденсаторов/не запускается мотор. Ключь у кладовщиков | 4h | 2025-07-14 09:00 A | 2025-07-14 13:00 A |  | 100% |  |  | start no earlier than 2025-07-14 09:00 | Бобренок В | 4h | 4h |
| 3146 | 15.6 | ТО компрессор / конвейер / запайщик | 2h | 2026-03-09 09:00 A | 2026-03-09 11:00 A |  | 100% |  |  | start no earlier than 2026-03-09 09:00 | Тимофеев В | 2h | 2h |
| 3147 | 16 | **офис** | 940.25d? | 2023-03-10 09:00 A | 2026-10-07 11:00 |  | 97% | 26.27d? | 110.34d |  |  | 221.67h | 215.17h |
| 3148 | 16.1 | монтаж полочка Курдюмова продожить | 1h | 2026-09-22 09:00 A | 2026-09-22 10:00 A |  | 100% |  |  | start no earlier than 2026-09-22 09:00 | Тимофеев В | 1h | 1h |
| 3149 | 16.2 | **Ремонт бойлера** | 13.25d? | 2026-09-08 09:00 A | 2026-09-21 11:00 A |  | 100% |  |  |  |  | 7h | 7h |
| 3150 | 16.2.1 | Заявка тэна | 1d? | 2026-09-08 09:00 A | 2026-09-08 18:00 A |  | 100% |  |  | start no earlier than 2026-09-08 09:00 |  |  |  |
| 3151 | 16.2.2 | контроль доставка | 1d? | 2026-09-14 09:00 A | 2026-09-14 18:00 A |  | 100% |  |  | start no earlier than 2026-09-14 09:00 |  |  |  |
| 3152 | 16.2.3 | Повесить отремонтированный бойлер обратно в офис - проверить работу | 1h | 2026-09-18 09:00 A | 2026-09-18 10:00 A |  | 100% |  |  | start no earlier than 2026-09-18 09:00 | Тимофеев В | 1h | 1h |
| 3153 | 16.2.4 | устранить утечку / монтаж | 2h | 2026-09-21 09:00 A | 2026-09-21 11:00 A |  | 100% |  |  | start no earlier than 2026-09-21 09:00 | Некрасов А; Труфанов А | 4h | 4h |
| 3154 | 16.2.5 | Замена ТЭНа на бойлере, который в слесарке, получить на складе упаковки | 1h | 2026-09-16 09:00 A | 2026-09-16 10:00 A |  | 100% |  |  | start no earlier than 2026-09-16 08:00 | Бундин В | 1h | 1h |
| 3155 | 16.2.6 | Дефектовка бойлера, лежит в слесарке, проверка ТЭНов и анода, показывал кз по тэнам | 1h | 2026-09-14 09:00 A | 2026-09-14 10:00 A |  | 100% |  |  | start no earlier than 2026-09-14 08:00 | Макаревич А | 1h | 1h |
| 3156 | 16.3 | демонтаж шурупы с наличиников | 10min | 2026-07-10 09:00 A | 2026-07-10 09:10 A |  | 100% |  |  | start no earlier than 2026-07-10 09:00 | Тимофеев В | 0.17h | 0.17h |
| 3157 | 16.4 | взять на складе ламочку Е27 малого размера и поменять в муж. Туалете и закрыть плафоном | 1h | 2026-06-29 09:00 A | 2026-06-29 10:00 A |  | 100% |  |  | start no earlier than 2026-06-29 09:00 | Тимофеев В | 1h | 1h |
| 3158 | 16.5 | собрать аккуратно стеллаж для Буслаева (стеллаж на складе у Веры, подписан буквами ГД, мечковская) | 3h | 2026-06-13 09:00 A | 2026-06-15 12:00 A |  | 100% |  |  | start no earlier than 2026-06-13 09:00 | Бобренок В | 3h | 3h |
| 3159 | 16.6 | посмотреть что с розеткой у Ширяевой в кабинете | 1h | 2026-06-22 09:00 A | 2026-06-22 10:00 A |  | 100% |  |  | start no earlier than 2026-06-22 09:00 | Тимофеев В | 1h | 1h |
| 3160 | 16.7 | бухгалтерия настройка язычка двери, что бы дверь закрывалась без усилия | 1h | 2026-05-28 09:00 A | 2026-05-28 10:00 A |  | 100% |  |  | start no earlier than 2026-05-28 09:00 | Тимофеев В | 1h | 1h |
| 3161 | 16.8 | **полка мебельная** | 25.12d | 2026-05-18 09:00 A | 2026-06-22 10:00 A |  | 100% |  |  |  |  | 1.5h | 1.5h |
| 3162 | 16.8.1 | заявка крепеж | 15min | 2026-05-18 09:00 A | 2026-05-18 09:15 A |  | 100% |  |  | start no earlier than 2026-05-18 09:00 | Шуранов Ю | 0.25h | 0.25h |
| 3163 | 16.8.2 | контроль доставка | 15min | 2026-05-27 09:15 A | 2026-05-27 09:30 A | 3162FS+7d | 100% |  |  | start no earlier than 2026-05-15 08:00 | Шуранов Ю | 0.25h | 0.25h |
| 3164 | 16.8.3 | крепеж полки у Юли в кабинете (уголки на складе) | 1h | 2026-06-22 09:00 A | 2026-06-22 10:00 A | 3163 | 100% |  |  | start no earlier than 2026-06-22 09:00 | Тимофеев В | 1h | 1h |
| 3165 | 16.9 | монтаж диплом на стену нач хим лаб | 30min | 2026-05-15 09:00 A | 2026-05-15 09:30 A |  | 100% |  |  | start no earlier than 2026-05-15 09:00 | Тимофеев В | 0.5h | 0.5h |
| 3166 | 16.10 | монтаж розеток в серверной продолжить | 2h | 2026-04-23 09:00 A | 2026-04-23 11:00 A |  | 100% |  |  | start no earlier than 2026-04-23 09:00 | Тимофеев В; Бобренок В | 4h | 4h |
| 3167 | 16.11 | ремонт стул в столовая, спинка | 1h | 2026-04-21 09:00 A | 2026-04-21 10:00 A |  | 100% |  |  | start no earlier than 2026-04-21 09:00 | Тимофеев В | 1h | 1h |

| ID | WBS | Task | Duration | Start | Finish | Complete | Remaining | Total slack | Constraint | Resources | Work | Actual work |
| --- | --- | --- | --- | --- | --- | --- | --- | --- | --- | --- | --- | --- |
| 3168 | 16.12 | **полочка под пк** | 0.12d | 2026-06-26 09:00 A | 2026-06-26 10:00 A | 100% |  |  |  | Тимофеев В | 2h | 2h |
| 3169 | 16.12.1 | замер | 1h | 2026-06-26 09:00 A | 2026-06-26 10:00 A | 100% |  |  | start no earlier than 2026-06-26 09:00 | Тимофеев В | 1h | 1h |
| 3170 | 16.13 | прикрутить декоративную пластину на ручке в столовой | 1h | 2026-04-15 09:00 A | 2026-04-15 10:00 A | 100% |  |  | start no earlier than 2026-04-17 08:00 | Макаревич А | 1h | 1h |
| 3171 | 16.14 | монтаж розеток 4 шт. в серверной | 2h | 2026-04-15 09:00 A | 2026-04-15 11:00 A | 100% |  |  | start no earlier than 2026-04-17 08:00 | Макаревич А | 2h | 2h |
| 3172 | 16.15 | протянуть кабель UTP от кабинета Курдюмовой до переговорки | 2h | 2026-04-17 08:00 A | 2026-04-17 11:00 A | 100% |  |  | start no earlier than 2026-04-17 08:00 | Тимофеев В; Некрасов А | 4h | 4h |
| 3173 | 16.16 | убрать шнурок у Курдюмовой в кабинете | 1h | 2026-04-17 08:00 A | 2026-04-17 10:00 A | 100% |  |  | start no earlier than 2026-04-17 08:00 | Тимофеев В | 1h | 1h |
| 3174 | 16.17 | ремонт кровля над каб Курдюмовой | 20d | 2026-06-15 09:00 A | 2026-07-10 18:00 A | 100% |  |  | start no earlier than 2026-06-15 09:00 | Олег | 160h | 160h |
| 3175 | 16.18 | ремонт крепеж пано каб продаж | 1h | 2026-03-24 08:00 A | 2026-03-24 10:00 A | 100% |  |  | start no earlier than 2026-03-24 08:00 | Тимофеев В | 1h | 1h |
| 3176 | 16.19 | крепить розетку для проектора | 2h | 2025-04-09 09:00 A | 2025-04-09 11:00 A | 100% |  |  | start no earlier than 2025-04-09 09:00 | Тимофеев В | 2h | 2h |
| 3177 | 16.20 | упорядочить кабеля под тв | 2h | 2025-04-09 09:00 A | 2025-04-09 11:00 A | 100% |  |  | start no earlier than 2025-04-09 09:00 | Некрасов А | 2h | 2h |
| 3178 | 16.21 | выбивает автомат у Монича, нет селективности, замена автоматов. Ремонт освещения корридор | 4h | 2026-09-29 09:00 | 2026-09-29 13:00 |  |  | 116.09d | start no earlier than 2026-09-29 09:00 | Дедов В | 4h |  |
| 3179 | 16.22 | монтаж ключница для пожарной двери 2 и 3 этаж | 1h | 2026-03-16 09:00 A | 2026-03-16 10:00 A | 100% |  |  | start no earlier than 2026-03-16 09:00 | Тимофеев В | 1h | 1h |
| 3180 | 16.23 | замена регистр отопления нач снабжения | 2h | 2026-10-07 09:00 | 2026-10-07 11:00 |  |  | 110.34d | start no earlier than 2026-10-07 09:00 | Некрасов А | 2h |  |
| 3181 | 16.24 | сделать заглушки в комнату пищи | 30min | 2026-09-01 09:00 | 2026-09-01 09:30 |  |  | 143.53d | start no earlier than 2026-09-01 09:00 | Домоводов К | 0.5h |  |
| 3182 | 16.25 | **вентиляция в переговорке и к приема пищи** | 812d? | 2023-03-10 09:00 A | 2026-04-20 18:00 A | 100% |  |  |  |  | 17h | 17h |
| 3183 | 16.25.1 | взять на желтом складе (наша половина) вентилятор канальный и проверить работает или нет | 1h | 2023-03-10 09:00 A | 2023-03-10 10:00 A | 100% |  |  |  | Бундин В | 1h | 1h |
| 3184 | 16.25.2 | заявка на КП = 300к | 4h | 2026-03-13 09:00 A | 2026-03-13 13:00 A | 100% |  |  | start no earlier than 2026-03-13 09:00 | Домоводов К | 4h | 4h |
| 3185 | 16.25.3 | монтаж ВК200 + кабель | 6h | 2026-04-20 09:00 A | 2026-04-20 16:00 A | 100% |  |  | start no earlier than 2026-04-20 08:00 | Некрасов А; Труфанов А | 12h | 12h |
| 3186 | 16.25.4 | установка на крыше офиса, приточка в переговорку | 1d? | 2026-04-20 09:00 A | 2026-04-20 18:00 A | 100% |  |  | start no earlier than 2026-04-20 09:00 |  |  |  |
| 3187 | 16.26 | **подсветка продукции в пепреговорке вращающийся лаезерный круг с эмблемой** | 0.12d | 2026-03-13 09:00 A | 2026-03-13 10:00 A | 100% |  |  |  |  | 1h | 1h |
| 3188 | 16.26.1 | найти поставщика / узнать стоимость | 1h | 2026-03-13 09:00 A | 2026-03-13 10:00 A | 100% |  |  | start no earlier than 2026-03-13 09:00 | Зорькин В | 1h | 1h |
| 3189 | 17 | **склад упаковки** | 140.5d? | 2026-04-02 09:00 A | 2026-10-06 13:00 | 97% | 4.16d? | 111.09d |  |  | 390.75h | 373.75h |
| 3190 | 17.1 | Повесить доп светильники 3 шт (спросить у Лехи, где нужны) | 3h | 2026-10-02 09:00 | 2026-10-02 12:00 |  |  | 113.22d | start no earlier than 2026-10-02 09:00 | Труфанов А; Некрасов А | 6h |  |
| 3191 | 17.2 | переделать крепление рамы наруж блока - к МК задния, анкера убрать | 4h | 2026-10-06 09:00 | 2026-10-06 13:00 |  |  | 111.09d | start no earlier than 2026-10-06 09:00 | Некрасов А | 4h |  |
| 3192 | 17.3 | установить светильники над столом Веры и перенести светильник над стеллажами | 3h | 2026-08-25 09:00 | 2026-08-25 12:00 |  |  | 148.22d | start no earlier than 2026-08-25 09:00 | Тимофеев В; Некрасов А | 6h |  |
| 3193 | 17.4 | втягиваем кабель 5х4 от реф, для подключения кондиционера, место установки щитка покажу- подключаем кондиционер | 1d? | 2026-07-31 08:00 A | 2026-07-31 18:00 A | 100% |  |  | start no earlier than 2026-07-31 08:00 | Труфанов А; Бобренок В | 16h | 16h |
| 3194 | 17.5 | сделать акты списания по результатам инвентаризации | 1d? | 2026-06-22 09:00 A | 2026-06-22 18:00 A | 100% |  |  | start no earlier than 2026-06-22 09:00 | Шуранов Ю | 8h | 8h |

| ID | WBS | Task | Type | Duration | Start | Finish | Predecessors | Complete | Remaining | Total slack | Free slack | Constraint | Resources | Work | Actual work |
| --- | --- | --- | --- | --- | --- | --- | --- | --- | --- | --- | --- | --- | --- | --- | --- |
| 3195 | 17.6 | **установить бойлер** |  | 92.12d | 2026-06-01 09:00 A | 2026-09-28 10:00 |  | 89% | 10.24d | 117.47d |  |  |  | 13h | 12h |
| 3196 | 17.6.1 | Замена тэна на бойлере |  | 1h | 2026-09-28 09:00 | 2026-09-28 10:00 |  |  |  | 117.47d |  | start no earlier than 2026-09-28 08:00 | Бобренок В | 1h |  |
| 3197 | 17.6.2 | монтаж кабель + розетка с щитка 1 этажа на 2 этаж |  | 4h | 2026-06-03 09:00 A | 2026-06-03 13:00 A |  | 100% |  |  |  | start no earlier than 2026-06-03 09:00 | Некрасов А; Бундин В | 8h | 8h |
| 3198 | 17.6.3 | монтаж бойлер на стену |  | 2h | 2026-06-01 09:00 A | 2026-06-01 11:00 A | 3197 | 100% |  |  |  | start no earlier than 2026-06-01 09:00 | Тимофеев В | 2h | 2h |
| 3199 | 17.6.4 | подключение сантехника |  | 2h | 2026-06-16 09:00 A | 2026-06-16 11:00 A | 3198 | 100% |  |  |  | start no earlier than 2026-06-16 09:00 | Тимофеев В | 2h | 2h |
| 3200 | 17.7 | отремонтировать ручку на входной двери |  | 1h | 2026-05-16 09:00 A | 2026-05-18 10:00 A |  | 100% |  |  |  | start no earlier than 2026-05-16 09:00 |  |  |  |
| 3201 | 17.8 | **анкерить стеллажи** |  | 26d | 2026-05-15 09:00 A | 2026-06-21 13:00 A |  | 100% |  |  |  |  |  | 4.75h | 4.75h |
| 3202 | 17.8.1 | заявка анкеры |  | 30min | 2026-05-15 09:00 A | 2026-05-15 09:30 A |  | 100% |  |  |  | start no earlier than 2026-05-15 09:00 | Шуранов Ю | 0.5h | 0.5h |
| 3203 | 17.8.2 | контроль доставка |  | 15min | 2026-05-27 09:30 A | 2026-05-27 09:45 A | 3202FS+10d | 100% |  |  |  | start no earlier than 2026-05-14 08:00 | Шуранов Ю | 0.25h | 0.25h |
| 3204 | 17.8.3 | монтаж / указать доделать оставшиеся анкера | manual | 4h | 2026-06-21 09:00 A | 2026-06-21 13:00 A | 3203 | 100% |  |  |  | start no earlier than 2026-06-21 09:00 | Бундин В | 4h | 4h |
| 3205 | 17.9 | заменить тросик на воротах |  | 2h | 2026-04-29 09:00 A | 2026-04-29 11:00 A |  | 100% |  |  |  | start no earlier than 2026-04-29 09:00 | Тимофеев В; Бундин В | 4h | 4h |
| 3206 | 17.10 | **замена двери** |  | 40.12d? | 2026-04-02 09:00 A | 2026-05-28 10:00 A |  | 100% |  |  |  |  |  | 329h | 329h |
| 3207 | 17.10.1 | заказ замерщика / получить счет |  | 1h | 2026-04-02 09:00 A | 2026-04-02 10:00 A |  | 100% |  |  |  | start no earlier than 2026-04-02 08:00 | Домоводов К | 1h | 1h |
| 3208 | 17.10.2 | изготовление |  | 40d | 2026-04-02 10:00 A | 2026-05-28 10:00 A | 3207 | 100% |  |  |  | start no earlier than 2026-04-02 08:00 | Подрядчик | 320h | 320h |
| 3209 | 17.10.3 | замена |  | 1d? | 2026-05-19 10:00 A | 2026-05-20 10:00 A | 3208 | 100% |  |  |  | start no earlier than 2026-04-02 08:00 | Подрядчик | 8h | 8h |
| 3210 | 18 | **РЭФ контейнеры** |  | 211.59d? | 2026-05-28 09:00 A | 2027-03-10 14:45 |  | 15% | 180.72d? | 0d |  |  |  | 66.25h | 13.5h |
| 3211 | 18.1 | уложить палеты в проходе к площадке / вырубить кусты с дворником |  | 1h | 2026-05-28 09:00 A | 2026-05-28 10:00 A |  | 100% |  |  |  | start no earlier than 2026-05-28 09:00 | Некрасов А; Бобренок В | 1h | 1h |
| 3212 | 18.2 | монтаж площадка обслуживания внешнего блока. 4 стойки труба 100 + лист 5 |  | 7h | 2026-05-28 09:00 A | 2026-05-28 17:00 A |  | 100% |  |  |  | start no earlier than 2026-05-28 09:00 | Некрасов А; Бобренок В | 12h | 12h |
| 3213 | 18.3 | **ремонт сплит система холодильная камера №1** |  | 27.12d | 2026-08-12 09:00 A | 2026-09-15 10:00 |  | 40% | 16.27d | 130.47d |  |  |  | 1.25h | 0.5h |
| 3214 | 18.3.1 | отправить фото участка |  | 15min | 2026-08-12 09:00 A | 2026-08-12 09:15 A |  | 100% |  |  |  | start no earlier than 2026-08-12 09:00 | Домоводов К | 0.25h | 0.25h |
| 3215 | 18.3.2 | получить счет на ремонт |  | 15min | 2026-09-08 09:00 A | 2026-09-08 09:15 A |  | 100% |  |  |  | start no earlier than 2026-09-08 09:00 | Домоводов К | 0.25h | 0.25h |
| 3216 | 18.3.3 | оплата |  | 15min | 2026-09-09 09:15 | 2026-09-09 09:30 | 3215FS+1d |  |  | 130.47d | 0d | start no earlier than 2026-09-09 09:00 | Домоводов К | 0.25h |  |
| 3217 | 18.3.4 | контроль даты ремонта |  | 15min | 2026-09-14 09:30 | 2026-09-14 09:45 | 3216FS+5d |  |  | 130.47d | 0d | start no earlier than 2026-08-10 08:00 | Зорькин В | 0.25h |  |
| 3218 | 18.3.5 | приемка работ |  | 15min | 2026-09-15 09:45 | 2026-09-15 10:00 | 3217FS+1d |  |  | 130.47d |  | start no earlier than 2026-08-10 08:00 | Зорькин В | 0.25h |  |

| ID | WBS | Task | Type | Duration | Start | Finish | Predecessors | Complete | Remaining | Total slack | Free slack | Constraint | Resources | Work | Actual work |
| --- | --- | --- | --- | --- | --- | --- | --- | --- | --- | --- | --- | --- | --- | --- | --- |
| 3219 | 18.4 | **монтаж холодильной машины №2** |  | 6.59d? | 2027-03-02 09:00 | 2027-03-10 14:45 |  |  |  | 0d |  |  |  | 45h |  |
| 3220 | 18.4.1 | решение какую ставить машину - на весну |  | 30min | 2027-03-02 09:00 | 2027-03-02 09:30 |  |  |  | 0d |  | start no earlier than 2027-03-02 09:00 | Домоводов К | 0.5h |  |
| 3221 | 18.4.2 | заключение договор |  | 3d | 2027-03-02 09:30 | 2027-03-05 09:30 | 3220 |  |  | 0d |  | start no earlier than 2026-08-12 09:00 | Домоводов К | 24h |  |
| 3222 | 18.4.3 | оплата |  | 15min | 2027-03-08 09:30 | 2027-03-08 09:45 | 3221FS+1d |  |  | 0d |  | start no earlier than 2026-08-18 09:00 | Домоводов К | 0.25h |  |
| 3223 | 18.4.4 | контроль доставки , начала работ |  | 1d? | 2027-03-08 09:45 | 2027-03-09 09:45 | 3222 |  |  | 0d |  | start no earlier than 2026-08-10 08:00 | Зорькин В | 8h |  |
| 3224 | 18.4.5 | **монтаж кабель силовой** |  | 0.5d | 2027-03-09 09:45 | 2027-03-09 14:45 | 3223 |  |  | 0d |  |  |  | 4.25h |  |
| 3225 | 18.4.5.1 | проверка поставки |  | 15min | 2027-03-09 09:45 | 2027-03-09 10:00 |  |  |  | 0.47d |  | start no earlier than 2026-08-10 08:00 | Зорькин В | 0.25h |  |
| 3226 | 18.4.5.2 | монтаж |  | 4h | 2027-03-09 09:45 | 2027-03-09 14:45 |  |  |  | 0d |  | start no earlier than 2026-08-10 08:00 | Некрасов А | 4h |  |
| 3227 | 18.4.6 | монтаж |  | 1d? | 2027-03-09 14:45 | 2027-03-10 14:45 | 3224 |  |  | 0d |  | start no earlier than 2026-08-10 08:00 | Подрядчик | 8h |  |
| 3228 | 18.5 | **утепление контейнера №2 под рефрежератор** |  | 0.5d | 2026-08-21 09:00 | 2026-08-21 13:00 |  |  |  | 0d |  |  |  | 7h |  |
| 3229 | 18.5.1 | продолжить выравнивание пены по периметру ножовкой для будующей установки профлиста (задание, если нечем заняться) | manual | 2h | 2026-08-21 09:00 | 2026-08-21 11:00 |  |  |  |  |  | start no earlier than 2026-08-21 09:00 | Некрасов А; Дедов В | 4h |  |
| 3230 | 18.5.2 | установка профлиста |  | 2h | 2026-08-21 11:00 | 2026-08-21 13:00 | 3229 |  |  | 150.09d |  | start no earlier than 2026-08-11 09:00 | Некрасов А; Дедов В | 3h |  |
| 3231 | 19 | **обучение** |  | 608.5d? | 2024-05-14 09:00 A | 2026-09-10 13:00 |  | 42% | 350.5d? | 135.09d |  |  |  | 130h | 58h |
| 3232 | 19.1 | **инструкция управлления дозаций жира** |  | 1.5d | 2026-09-09 09:00 | 2026-09-10 13:00 |  |  |  | 135.09d |  |  |  | 12h |  |
| 3233 | 19.1.1 | подготовка гидравлической и функциональной схем системы |  | 4h | 2026-09-09 09:00 | 2026-09-09 13:00 |  |  |  | 135.09d | 0d | start no earlier than 2026-09-09 09:00 | Зорькин В | 4h |  |
| 3234 | 19.1.2 | описание принципов регулирования |  | 4h | 2026-09-09 14:00 | 2026-09-09 18:00 | 3233 |  |  | 135.09d | 0d | start no earlier than 2026-08-31 09:00 | Зорькин В | 4h |  |
| 3235 | 19.1.3 | пошаговый алогритм действий по операциям замена фильтров, остановка пуск, настройка режимов |  | 4h | 2026-09-10 09:00 | 2026-09-10 13:00 | 3234 |  |  | 135.09d |  | start no earlier than 2026-08-31 09:00 | Зорькин В | 4h |  |
| 3236 | 19.2 | настройка и ремонты упаковщиков |  | 1h | 2026-02-27 09:00 A | 2026-02-27 10:00 A |  | 100% |  |  |  | start no earlier than 2026-02-27 08:00 | Труфанов А; Бундин В | 2h | 2h |
| 3237 | 19.3 | подготовить памятку по чистке ножа для бестром |  | 4h | 2026-09-04 09:00 A | 2026-09-04 13:00 A |  | 100% |  |  |  | start no earlier than 2026-09-04 09:00 | Зорькин В | 4h | 4h |
| 3238 | 19.4 | бестром |  | 2h | 2025-09-02 09:00 A | 2025-09-02 11:00 A |  | 100% |  |  |  | start no earlier than 2025-09-02 09:00 | Труфанов А; Зорькин В | 4h | 4h |
| 3239 | 19.5 | квадропак |  | 2h | 2025-09-02 11:00 A | 2025-09-02 13:00 A | 3238 | 100% |  |  |  | start no earlier than 2025-09-02 09:00 | Труфанов А; Зорькин В | 4h | 4h |
| 3240 | 19.6 | инструкция парогенератор управление по датчику давления |  | 4h | 2025-01-16 09:00 A | 2025-01-16 13:00 A |  | 100% |  |  |  | start no earlier than 2025-01-16 09:00 | Зорькин В | 4h | 4h |
| 3241 | 19.7 | инструкция по работе на теко 1.5 новый |  | 2d | 2025-01-17 09:00 A | 2025-01-20 18:00 A | 3240 | 100% |  |  |  | start no earlier than 2025-01-17 09:00 | Зорькин В | 16h | 16h |
| 3242 | 19.8 | инструкция ремонт запайщика |  | 1d? | 2025-01-17 09:00 A | 2025-01-17 18:00 A |  | 100% |  |  |  | start no earlier than 2025-01-17 09:00 | Зорькин В | 8h | 8h |
| 3243 | 19.9 | Составить список ЗИП - ежедневно вносить приход / расход |  | 1h | 2024-05-14 09:00 | 2024-05-14 10:00 |  |  |  | 743.47d |  | start no earlier than 2024-05-14 09:00 | Шуранов Ю | 1h |  |
| 3244 | 19.10 | составить инструкцию по затягиванию фильеры и соосности муфты |  | 4h | 2024-05-14 09:00 | 2024-05-14 13:00 |  |  |  | 743.09d |  | start no earlier than 2024-05-14 09:00 | Шуранов Ю | 4h |  |
| 3245 | 19.11 | составитьт инструкцию настройка бестром - формирование шва |  | 4h | 2024-05-14 09:00 | 2024-05-14 13:00 |  |  |  | 743.09d |  | start no earlier than 2024-05-14 09:00 | Шуранов Ю | 4h |  |
| 3246 | 19.12 | составитьт инструкцию настройка бестром - заправка ленты зип лок |  | 4h | 2024-05-14 09:00 | 2024-05-14 13:00 |  |  |  | 743.09d |  | start no earlier than 2024-05-14 09:00 | Шуранов Ю | 4h |  |

| ID | WBS | Task | Duration | Start | Finish | Predecessors | Complete | Remaining | Total slack | Free slack | Constraint | Resources | Work | Actual work |
| --- | --- | --- | --- | --- | --- | --- | --- | --- | --- | --- | --- | --- | --- | --- |
| 3247 | 19.13 | **формирование шаблона настройки оборудования** | 4d | 2024-09-06 09:00 A | 2024-09-11 18:00 |  | 67% | 1.33d | 656.59d |  |  |  | 21h | 14h |
| 3248 | 19.13.1 | **БЕСТРОМ** | 2.25d | 2024-09-06 09:00 A | 2024-09-10 11:00 A |  | 100% |  |  |  |  |  | 7h | 7h |
| 3249 | 19.13.1.1 | определить базовые точки относительно которых будет проводится замер в 3х плоскостях - флажки верх, флажки низ, смыкание ножа, центр трубы | 1h | 2024-09-06 09:00 A | 2024-09-06 10:00 A |  | 100% |  |  |  | start no earlier than 2024-09-06 08:00 | Зорькин В | 1h | 1h |
| 3250 | 19.13.1.2 | обвести в PAINT фото методику измерений, присвоить \имя каждому размеру | 2h | 2024-09-06 10:00 A | 2024-09-06 12:00 A | 3249 | 100% |  |  |  | start no earlier than 2024-09-06 09:00 | Зорькин В | 2h | 2h |
| 3251 | 19.13.1.3 | создать карту / таблицу настройки. Размер-дата-фио | 2h | 2024-09-09 09:00 A | 2024-09-09 11:00 A | 3250 | 100% |  |  |  | start no earlier than 2024-09-09 09:00 | Зорькин В | 2h | 2h |
| 3252 | 19.13.1.4 | оформить ведение карты в журнал | 2h | 2024-09-10 09:00 A | 2024-09-10 11:00 A | 3251 | 100% |  |  |  | start no earlier than 2024-09-10 09:00 | Зорькин В | 2h | 2h |
| 3253 | 19.13.2 | **ТЕКО 1.5** | 0.88d | 2024-09-10 11:00 A | 2024-09-11 10:00 A | 3248 | 100% |  |  |  |  |  | 7h | 7h |
| 3254 | 19.13.2.1 | определить базовые точки относительно которых будет проводится замер в 3х плоскостях - флажки верх, флажки низ, смыкание ножа, центр трубы | 1h | 2024-09-10 11:00 A | 2024-09-10 12:00 A |  | 100% |  |  |  | start no earlier than 2024-09-10 09:00 | Зорькин В | 1h | 1h |
| 3255 | 19.13.2.2 | обвести в PAINT фото методику измерений, присвоить \имя каждому размеру | 2h | 2024-09-10 12:00 A | 2024-09-10 15:00 A | 3254 | 100% |  |  |  | start no earlier than 2024-09-06 08:00 | Зорькин В | 2h | 2h |
| 3256 | 19.13.2.3 | создать карту / таблицу настройки. Размер-дата-фио | 2h | 2024-09-10 15:00 A | 2024-09-10 17:00 A | 3255 | 100% |  |  |  | start no earlier than 2024-09-06 08:00 | Зорькин В | 2h | 2h |
| 3257 | 19.13.2.4 | оформить ведение карты в журнал | 2h | 2024-09-10 17:00 A | 2024-09-11 10:00 A | 3256 | 100% |  |  |  | start no earlier than 2024-09-06 08:00 | Зорькин В | 2h | 2h |
| 3258 | 19.13.3 | **ТЕКО 0,4** | 0.88d | 2024-09-11 10:00 | 2024-09-11 18:00 | 3253 |  |  | 656.59d |  |  |  | 7h |  |
| 3259 | 19.13.3.1 | определить базовые точки относительно которых будет проводится замер в 3х плоскостях - флажки верх, флажки низ, смыкание ножа, центр трубы | 1h | 2024-09-11 10:00 | 2024-09-11 11:00 |  |  |  | 656.59d | 0d | start no earlier than 2024-09-06 08:00 | Зорькин В | 1h |  |
| 3260 | 19.13.3.2 | обвести в PAINT фото методику измерений, присвоить \имя каждому размеру | 2h | 2024-09-11 11:00 | 2024-09-11 13:00 | 3259 |  |  | 656.59d | 0d | start no earlier than 2024-09-06 08:00 | Зорькин В | 2h |  |
| 3261 | 19.13.3.3 | создать карту / таблицу настройки. Размер-дата-фио | 2h | 2024-09-11 14:00 | 2024-09-11 16:00 | 3260 |  |  | 656.59d | 0d | start no earlier than 2024-09-06 08:00 | Зорькин В | 2h |  |
| 3262 | 19.13.3.4 | оформить ведение карты в журнал | 2h | 2024-09-11 16:00 | 2024-09-11 18:00 | 3261 |  |  | 656.59d |  | start no earlier than 2024-09-06 08:00 | Зорькин В | 2h |  |
| 3263 | 19.14 | **наполнение базы данных по занятиям, запись видео уроки** | 5.12d | 2024-09-09 09:00 A | 2024-09-16 10:00 |  | 5% | 4.88d | 654.47d |  |  |  | 42h | 2h |
| 3264 | 19.14.1 | заяавка фотокамера, штатив | 1h | 2024-09-09 09:00 A | 2024-09-09 10:00 A |  | 100% |  |  |  | start no earlier than 2024-09-09 09:00 | Зорькин В | 1h | 1h |
| 3265 | 19.14.2 | доставка | 5d | 2024-09-09 10:00 | 2024-09-16 10:00 | 3264 |  |  | 654.47d |  | start no earlier than 2024-09-06 08:00 | Мультан | 40h |  |
| 3266 | 19.14.3 | **Бестром** | 0.12d | 2024-09-16 09:00 A | 2024-09-16 10:00 A |  | 100% |  |  |  |  |  | 1h | 1h |
| 3267 | 19.14.3.1 | урок 1 | 1h | 2024-09-16 09:00 A | 2024-09-16 10:00 A | 3265 | 100% |  |  |  | start no earlier than 2024-09-16 09:00 | Зорькин В | 1h | 1h |
| 3268 | 20 | **администрантивные** | 131.25d | 2026-03-19 09:00 A | 2026-09-15 11:00 |  | 89% | 14.45d | 130.34d |  |  |  | 99.92h | 88.92h |
| 3269 | 20.1 | спсиание материалов | 6h | 2026-09-01 09:00 | 2026-09-01 16:00 |  |  |  | 142.84d |  | start no earlier than 2026-09-01 09:00 | Шуранов Ю | 6h |  |
| 3270 | 20.2 | составить список остатков шнеков в таблицу зип | 2h | 2026-09-01 09:00 | 2026-09-01 11:00 |  |  |  | 143.34d |  | start no earlier than 2026-09-01 09:00 | Шуранов Ю | 2h |  |
| 3271 | 20.3 | подготовить спсток перчаток | 3h | 2026-03-19 09:00 A | 2026-03-19 12:00 A |  | 100% |  |  |  | start no earlier than 2026-03-19 08:00 | Зорькин В | 3h | 3h |
| 3272 | 20.4 | подготовка данных дебеторская задолжность | 3h | 2026-03-19 09:00 A | 2026-03-19 12:00 A |  | 100% |  |  |  | start no earlier than 2026-03-19 08:00 | Зорькин В | 3h | 3h |
| 3273 | 20.5 | договор по ремонту стиральных машинок. Переговоры | 1h | 2026-09-01 09:00 | 2026-09-01 10:00 |  |  |  | 143.47d |  | start no earlier than 2026-09-01 09:00 | Шуранов Ю | 1h |  |
| 3274 | 20.6 | Составить список на год ППР (планово-предупредительные работы) на оборудовании Цеха №1, Цеха №2, Цеха навесок. | 2h | 2026-09-01 09:00 | 2026-09-01 11:00 |  |  |  | 143.34d |  | start no earlier than 2026-09-01 09:00 | Шуранов Ю | 2h |  |

| ID | WBS | Task | Type | Duration | Start | Finish | Predecessors | Complete | Remaining | Total slack | Free slack | Constraint | Resources | Work | Actual work |
| --- | --- | --- | --- | --- | --- | --- | --- | --- | --- | --- | --- | --- | --- | --- | --- |
| 3275 | 20.7 | **Ключи на шкафы** |  | 111.25d | 2026-04-16 09:00 A | 2026-09-15 11:00 A |  | 100% |  |  |  |  |  | 82.75h | 82.75h |
| 3276 | 20.7.1 | Заказать |  | 30min | 2026-04-16 09:00 A | 2026-04-16 09:30 A |  | 100% |  |  |  | start no earlier than 2026-04-16 09:00 | Зорькин В | 0.5h | 0.5h |
| 3277 | 20.7.2 | доставить |  | 10d | 2026-04-16 09:30 A | 2026-04-30 09:30 A | 3276 | 100% |  |  |  | start no earlier than 2026-04-14 09:00 | Карабанов | 80h | 80h |
| 3278 | 20.7.3 | контроль доставка |  | 15min | 2026-05-15 09:00 A | 2026-05-15 09:15 A |  | 100% |  |  |  | start no earlier than 2026-05-15 09:00 | Зорькин В | 0.25h | 0.25h |
| 3279 | 20.7.4 | Повешать на веревочку ключи на все шкафы ВРУ и электрощитки (ключи на складе, веревочки взять на производстве, нитки) |  | 2h | 2026-09-15 09:00 A | 2026-09-15 11:00 A | 3277 | 100% |  |  |  | start no earlier than 2026-09-15 09:00 | Бобренок В | 2h | 2h |
| 3280 | 20.8 | Расписаться в нашем кабинете |  | 10min | 2026-07-28 09:00 A | 2026-07-28 09:10 A |  | 100% |  |  |  | start no earlier than 2026-07-28 09:00 | Макаревич А | 0.17h | 0.17h |
| 3281 | 21 | **ТБ** |  | 927.25d? | 2023-06-06 09:00 A | 2026-12-15 11:00 |  | 39% | 565.7d? | 61.34d |  |  |  | 249.92h | 96.67h |
| 3282 | 21.1 | инструктаж по ТБ оформить |  | 1h | 2026-08-31 09:00 | 2026-08-31 10:00 |  |  |  | 144.47d |  | start no earlier than 2026-08-31 09:00 | Шуранов Ю | 1h |  |
| 3283 | 21.2 | выполнить перелкаду похарных шлангов офис, 1ц |  | 2h | 2026-12-15 09:00 | 2026-12-15 11:00 |  |  |  | 61.34d |  | start no earlier than 2026-12-15 09:00 | Некрасов А; Труфанов А | 4h |  |
| 3284 | 21.3 | маркировка лестниц / оформление журналов |  | 2h | 2026-08-31 09:00 | 2026-08-31 11:00 |  |  |  | 144.34d |  | start no earlier than 2026-08-31 09:00 | Шуранов Ю | 2h |  |
| 3285 | 21.4 | внеплановый инструктаж персонала при аварии на проризводстве |  | 2h | 2025-03-26 09:00 A | 2025-03-26 11:00 A |  | 100% |  |  |  | start no earlier than 2025-03-26 08:00 | Шуранов Ю | 2h | 2h |
| 3286 | 21.5 | заявка на табличики НЕ ВКЛЮЧАТЬ |  | 10min | 2025-03-26 09:00 A | 2025-03-26 09:10 A |  | 100% |  |  |  | start no earlier than 2025-03-26 08:00 | Шуранов Ю | 0.17h | 0.17h |
| 3287 | 21.6 | офорить наряд допуск на монтаж кабеля КПП |  | 30min | 2024-08-05 09:00 A | 2024-08-05 09:30 A |  | 100% |  |  |  | start no earlier than 2024-08-05 09:00 | Шуранов Ю | 0.5h | 0.5h |
| 3288 | 21.7 | составить схемы кабельных линий по производству |  | 5d | 2026-09-01 09:00 | 2026-09-05 18:00 |  |  |  | 138.59d |  | start no earlier than 2026-09-01 09:00 | Шуранов Ю | 40h |  |
| 3289 | 21.8 | организация аттестации электроперсонала |  | 10d | 2024-05-14 09:00 A | 2024-05-27 18:00 A |  | 100% |  |  |  | start no earlier than 2024-05-14 09:00 | Шуранов Ю | 80h | 80h |
| 3290 | 21.9 | расклеить таблички на стремянки |  | 1h | 2023-10-18 09:00 A | 2023-10-18 10:00 A |  | 100% |  |  |  | start no earlier than 2023-10-18 09:00 | Тимофеев В | 1h | 1h |
| 3291 | 21.10 | вести журнал учета такелажных средств, механизмов и приспособлений |  | 1h | 2026-09-01 09:00 | 2026-09-01 10:00 |  |  |  | 143.47d |  | start no earlier than 2026-09-01 09:00 | Шуранов Ю | 1h |  |
| 3292 | 21.11 | комплект сиз для высотных работ |  | 1h | 2023-06-09 09:00 A | 2023-06-09 10:00 A |  | 100% |  |  |  | start no earlier than 2023-06-09 09:00 | Лобанов И | 1h | 1h |
| 3293 | 21.12 | тестер индикторная отвертка |  | 1h | 2024-05-14 09:00 A | 2024-05-14 10:00 A |  | 100% |  |  |  | start no earlier than 2024-05-14 09:00 | Шуранов Ю | 1h | 1h |
| 3294 | 21.13 | заявка на диэл коврик, галоши, перчатки, маска, таблички |  | 1h | 2026-09-01 09:00 | 2026-09-01 10:00 |  |  |  | 143.47d |  | start no earlier than 2026-09-01 09:00 | Шуранов Ю | 1h |  |
| 3295 | 21.14 | заявка спецодежда наладчикам |  | 1d? | 2024-05-14 09:00 A | 2024-05-14 18:00 A |  | 100% |  |  |  | start no earlier than 2024-05-14 09:00 | Шуранов Ю | 8h | 8h |
| 3296 | 21.15 | аттестация охрана труда |  | 10d | 2024-05-14 09:00 | 2024-05-27 18:00 |  |  |  | 733.59d |  | start no earlier than 2024-05-14 09:00 | Шуранов Ю | 80h |  |
| 3297 | 21.16 | **испытание стеллажей** |  | 847d? | 2023-06-06 09:00 A | 2026-09-02 18:00 |  | 11% | 753.75d? | 141.59d |  |  |  | 27.25h | 3h |
| 3298 | 21.16.1 | оплата испытания стеллажей контроль | milestone | 0d | 2023-06-06 09:00 A | 2023-06-06 09:00 A |  | 100% |  |  |  | start no earlier than 2023-06-06 09:00 | Домоводов К |  |  |
| 3299 | 21.16.2 | орг испытание стеллажей |  | 1h | 2023-07-11 09:00 A | 2023-07-11 10:00 A |  | 100% |  |  |  | start no earlier than 2023-07-11 09:00 | Домоводов К | 1h | 1h |
| 3300 | 21.16.3 | график осмотров стеллажей |  | 1d? | 2026-08-31 09:00 | 2026-08-31 18:00 | 3298 |  |  | 141.59d | 0d | start no earlier than 2026-08-31 09:00 | Домоводов К | 8h |  |
| 3301 | 21.16.4 | табличка КП |  | 1d? | 2026-09-01 09:00 | 2026-09-01 18:00 | 3300 |  |  | 141.59d | 0d | start no earlier than 2023-04-27 08:00 | Домоводов К | 8h |  |
| 3302 | 21.16.5 | журнал технического освидетельствования стеллажей |  | 1d? | 2026-09-02 09:00 | 2026-09-02 18:00 | 3301 |  |  | 141.59d |  | start no earlier than 2023-04-27 08:00 | Домоводов К | 8h |  |
| 3303 | 21.16.6 | запрос стоимости ремонта стеллажей в 5ц |  | 2h | 2026-08-18 09:00 A | 2026-08-18 11:00 A |  | 100% |  |  |  | start no earlier than 2026-08-18 09:00 | Шуранов Ю | 2h | 2h |
| 3304 | 21.16.7 | контрольизг |  | 15min | 2026-08-27 09:00 | 2026-08-27 09:15 |  |  |  | 146.56d |  | start no earlier than 2026-08-27 09:00 | Шуранов Ю | 0.25h |  |

| ID | WBS | Task | Type | Duration | Start | Finish | Predecessors | Complete | Remaining | Total slack | Constraint | Resources | Work | Actual work |
| --- | --- | --- | --- | --- | --- | --- | --- | --- | --- | --- | --- | --- | --- | --- |
| 3305 | 22 | **офис** |  | 325.03d | 2025-06-11 09:00 A | 2026-09-08 09:15 |  | 80% | 65.01d | 137.56d |  |  | 2.25h | 2h |
| 3306 | 22.1 | дует подконник офис - передать Олегу задачу |  | 15min | 2026-09-08 09:00 | 2026-09-08 09:15 |  |  |  | 137.56d | start no earlier than 2026-09-08 08:00 | Зорькин В | 0.25h |  |
| 3307 | 22.2 | ремонт светильник моргает , бухгалтерия |  | 1h | 2025-06-11 09:00 A | 2025-06-11 10:00 A |  | 100% |  |  | start no earlier than 2025-06-11 09:00 | Тимофеев В; Дедов В | 2h | 2h |
| 3308 | 23 | **территория** |  | 430.5d? | 2025-02-20 09:00 A | 2026-10-06 13:00 |  | 71% | 123.3d? | 111.09d |  |  | 368.75h | 260.5h |
| 3309 | 23.1 | Накачать котлы на всех узлах отопления |  | 4h | 2026-09-28 09:00 | 2026-09-28 13:00 |  |  |  | 117.09d | start no earlier than 2026-09-28 08:00 | Бобренок В | 4h |  |
| 3310 | 23.2 | Обход по воде протянутой до 5 цеха, проверка протечек во всех узлах по возможности устранить, если нет возможности, перекрыть в 3-ем цехе |  | 30min | 2026-09-21 09:00 A | 2026-09-21 09:30 A |  | 100% |  |  | start no earlier than 2026-09-21 08:00 | Макаревич А | 0.5h | 0.5h |
| 3311 | 23.3 | отсыпать спуск для парковки между цех 2 и 3 |  | 1d? | 2026-08-26 09:00 A | 2026-08-26 18:00 A |  | 100% |  |  | start no earlier than 2026-08-26 08:00 | Дворник | 8h | 8h |
| 3312 | 23.4 | отсыпать тропинку до КТПН |  | 1d? | 2026-08-27 09:00 | 2026-08-27 18:00 |  |  |  | 145.59d | start no earlier than 2026-08-27 09:00 | Дворник | 8h |  |
| 3313 | 23.5 | **орг водосток КПП - 5ц** |  | 0.03d | 2026-08-31 09:00 A | 2026-08-31 09:15 A |  | 100% |  |  |  |  | 0.25h | 0.25h |
| 3314 | 23.5.1 | получить КП от Вугара |  | 15min | 2026-08-31 09:00 A | 2026-08-31 09:15 A |  | 100% |  |  | start no earlier than 2026-08-31 09:00 | Домоводов К | 0.25h | 0.25h |
| 3315 | 23.6 | **орг водосток между 4 и5А** |  | 0.03d | 2026-08-31 09:00 A | 2026-08-31 09:15 A |  | 100% |  |  |  |  | 0.25h | 0.25h |
| 3316 | 23.6.1 | получить КП от Вугара |  | 15min | 2026-08-31 09:00 A | 2026-08-31 09:15 A |  | 100% |  |  | start no earlier than 2026-08-31 09:00 | Домоводов К | 0.25h | 0.25h |
| 3317 | 23.7 | **Белявский выравнивание стены** |  | 14.16d | 2026-08-13 09:00 A | 2026-09-02 10:15 A |  | 100% |  |  |  |  | 2.58h | 2.58h |
| 3318 | 23.7.1 | оформить план работ, эскиз предложенный ГИП Глуходед |  | 1h | 2026-09-01 09:00 A | 2026-09-01 10:00 A |  | 100% |  |  | start no earlier than 2026-09-01 09:00 | Домоводов К | 1h | 1h |
| 3319 | 23.7.2 | поиск подрядчика на перекладку панели |  | 1h | 2026-09-01 09:00 A | 2026-09-01 10:00 A |  | 100% |  |  | start no earlier than 2026-09-01 09:00 | Домоводов К | 1h | 1h |
| 3320 | 23.7.3 | звонок по решению от варианта ремонта Белявского |  | 20min | 2026-08-13 09:00 A | 2026-08-13 09:20 A |  | 100% |  |  | start no earlier than 2026-08-13 09:00 | Домоводов К | 0.33h | 0.33h |
| 3321 | 23.7.4 | ожидание КП от бригады Белявского | milestone | 0d | 2026-08-20 09:00 A | 2026-08-20 09:00 A | 3320FS+1d | 100% |  |  | start no earlier than 2026-08-20 09:00 | Домоводов К |  |  |
| 3322 | 23.7.5 | согл работы с ГД | milestone | 0d | 2026-09-01 10:00 A | 2026-09-01 10:00 A | 3318, 3321FS+1d | 100% |  |  | start no earlier than 2026-08-31 09:00 | Домоводов К |  |  |
| 3323 | 23.7.6 | заказ кран |  | 15min | 2026-09-02 10:00 A | 2026-09-02 10:15 A | 3322FS+1d | 100% |  |  | start no earlier than 2026-08-13 09:00 | Зорькин В | 0.25h | 0.25h |
| 3324 | 23.8 | замена тусклых или не рабочих ламп на мухоловках 1,2,5 цех.Схемы расположения предоставлю (количество ламп, которые поменял указать в отчете) |  | 4h | 2026-08-06 09:00 A | 2026-08-06 13:00 A |  | 100% |  |  | start no earlier than 2026-08-06 08:00 | Труфанов А | 4h | 4h |
| 3325 | 23.9 | **КПП ревизия прожектор, не горит** |  | 1.12d | 2026-07-08 09:00 A | 2026-07-09 10:00 A |  | 100% |  |  |  |  | 1.33h | 1.33h |
| 3326 | 23.9.1 | Сфотать шильдик от прожектора кпп |  | 20min | 2026-07-08 09:00 A | 2026-07-08 09:20 A |  | 100% |  |  | start no earlier than 2026-07-08 08:00 | Бундин В | 0.33h | 0.33h |
| 3327 | 23.9.2 | монтаж прожетора |  | 1h | 2026-07-09 09:00 A | 2026-07-09 10:00 A |  | 100% |  |  | start no earlier than 2026-07-09 09:00 | Бобренок В | 1h | 1h |
| 3328 | 23.10 | **установить люки колодцев возле на территории** |  | 1d? | 2026-09-25 09:00 A | 2026-09-25 18:00 |  | 50% | 0.5d? |  |  |  | 12h | 4h |
| 3329 | 23.10.1 | разложить по местам |  | 4h | 2026-09-25 09:00 A | 2026-09-25 13:00 A |  | 100% |  |  | start no earlier than 2026-09-25 08:00 | Бобренок В | 4h | 4h |
| 3330 | 23.10.2 | врезать в асфальт |  | 4h | 2026-10-06 09:00 | 2026-10-06 13:00 |  |  |  | 111.09d | start no earlier than 2026-10-06 09:00 | Тимофеев В; Олег | 8h |  |

| ID | WBS | Task | Type | Duration | Start | Finish | Predecessors | Complete | Remaining | Total slack | Free slack | Constraint | Resources | Work | Actual work |
| --- | --- | --- | --- | --- | --- | --- | --- | --- | --- | --- | --- | --- | --- | --- | --- |
| 3331 | 23.11 | **установить пост для зарядки эл мобиль директору** |  | 1d? | 2026-06-03 09:00 | 2026-06-03 18:00 |  |  |  | 206.59d |  |  |  |  |  |
| 3332 | 23.11.1 | заявка на щиток / кабель |  | 1d? | 2026-06-03 09:00 | 2026-06-03 18:00 |  |  |  | 206.59d |  | start no earlier than 2026-06-03 08:00 |  |  |  |
| 3333 | 23.12 | уборка строительный мусор задний двор 5А склад |  | 2h | 2026-05-27 09:00 | 2026-05-27 11:00 |  |  |  | 212.34d |  | start no earlier than 2026-05-27 09:00 | оператор2 | 2h |  |
| 3334 | 23.13 | поправить бетонную крышку колодца. Дренаж вдоль забора колодец №2 |  | 2h | 2026-05-27 09:00 | 2026-05-27 11:00 |  |  |  | 212.34d |  | start no earlier than 2026-05-27 09:00 | оператор2 | 2h |  |
| 3335 | 23.14 | расчистить камни, для доступа к люку. Дренаж вдоль забора колодец №2 |  | 2h | 2026-05-27 09:00 | 2026-05-27 11:00 |  |  |  | 212.34d |  | start no earlier than 2026-05-27 09:00 | оператор2 | 2h |  |
| 3336 | 23.15 | проверка всех стемянок по цехам, приклеить бумажки о проверке |  | 1d? | 2026-06-26 09:00 A | 2026-06-26 18:00 A |  | 100% |  |  |  | start no earlier than 2026-06-26 09:00 | Шуранов Ю | 8h | 8h |
| 3337 | 23.16 | в 1,2,3 цехе ближе к утру выключить все оборудование, кроме камер охраны КПП- подготовка к фогации |  | 2h | 2026-04-30 08:00 A | 2026-04-30 11:00 A |  | 100% |  |  |  | start no earlier than 2026-04-30 08:00 | Дедов В | 2h | 2h |
| 3338 | 23.17 | заизолировать гофру в местах разрыва (гофра с кабелем для рефрежераторов возле нашего склада) | manual | 1h | 2026-04-26 09:00 A | 2026-04-26 10:00 A |  | 100% |  |  |  | start no earlier than 2026-04-26 09:00 | Макаревич А | 1h | 1h |
| 3339 | 23.18 | ремонт стен сосед Белявский |  | 5d | 2026-04-16 09:00 | 2026-04-22 18:00 |  |  |  | 236.59d |  | start no earlier than 2026-04-16 08:00 | Олег; Некрасов А | 80h |  |
| 3340 | 23.19 | **выезд ул.Писемского** |  | 15.03d | 2026-08-11 09:00 A | 2026-09-01 09:15 |  | 89% | 1.67d | 143.56d |  |  |  | 2.25h | 2h |
| 3341 | 23.19.1 | **топосъемка** |  | 15.03d | 2026-08-11 09:00 A | 2026-09-01 09:15 |  | 67% | 5.01d | 143.56d |  |  |  | 0.75h | 0.5h |
| 3342 | 23.19.1.1 | получить старт от ГД | milestone | 0d | 2026-08-31 09:00 | 2026-08-31 09:00 |  |  |  | 143.56d | 0d | start no earlier than 2026-08-31 09:00 | Домоводов К |  |  |
| 3343 | 23.19.1.2 | поск исполнителя / запрос счет |  | 30min | 2026-08-11 09:00 A | 2026-08-11 09:30 A |  | 100% |  |  |  | start no earlier than 2026-08-11 09:00 | Домоводов К | 0.5h | 0.5h |
| 3344 | 23.19.1.3 | контроль оплата |  | 15min | 2026-09-01 09:00 | 2026-09-01 09:15 | 3342FS+1d, 3343FS+5d |  |  | 143.56d | 0d | start no earlier than 2026-08-24 09:00 | Домоводов К | 0.25h |  |
| 3345 | 23.19.2 | **геология** |  | 15.03d | 2026-08-11 09:00 A | 2026-09-01 09:15 |  | 99% | 0d | 143.56d |  |  |  | 0.5h | 0.5h |
| 3346 | 23.19.2.1 | поск исполнителя / запрос счет |  | 30min | 2026-08-11 09:00 A | 2026-08-11 09:30 A |  | 100% |  |  |  | start no earlier than 2026-08-11 09:00 | Домоводов К | 0.5h | 0.5h |
| 3347 | 23.19.2.2 | контроль оплата | milestone | 0min | 2026-09-01 09:15 | 2026-09-01 09:15 | 3344, 3346FS+5d |  |  | 143.56d | 0d | start no earlier than 2026-08-10 08:00 | Домоводов К |  |  |
| 3348 | 23.19.3 | **проект дорога** |  | 15.03d | 2026-08-11 09:00 A | 2026-09-01 09:15 |  | 99% | 0d | 143.56d |  |  |  | 0.5h | 0.5h |
| 3349 | 23.19.3.1 | поск исполнителя / запрос счет |  | 30min | 2026-08-11 09:00 A | 2026-08-11 09:30 A |  | 100% |  |  |  | start no earlier than 2026-08-11 09:00 | Домоводов К | 0.5h | 0.5h |
| 3350 | 23.19.3.2 | получить счет / договор | milestone | 0d | 2026-08-13 09:00 A | 2026-08-13 09:00 A |  | 100% |  |  |  | start no earlier than 2026-08-13 09:00 | Домоводов К |  |  |
| 3351 | 23.19.3.3 | контроль оплата | milestone | 0min | 2026-09-01 09:15 | 2026-09-01 09:15 | 3347, 3349FS+5d |  |  | 143.56d | 0d | start no earlier than 2026-08-10 08:00 | Домоводов К |  |  |
| 3352 | 23.19.4 | **проект бетонная подушка** |  | 15.03d | 2026-08-11 09:00 A | 2026-09-01 09:15 |  | 99% | 0d | 143.56d |  |  |  | 0.5h | 0.5h |
| 3353 | 23.19.4.1 | поск исполнителя / запрос счет |  | 30min | 2026-08-11 09:00 A | 2026-08-11 09:30 A |  | 100% |  |  |  | start no earlier than 2026-08-11 09:00 | Домоводов К | 0.5h | 0.5h |
| 3354 | 23.19.4.2 | получить счет / договор | milestone | 0d | 2026-08-13 09:00 A | 2026-08-13 09:00 A |  | 100% |  |  |  | start no earlier than 2026-08-13 09:00 | Домоводов К |  |  |
| 3355 | 23.19.4.3 | контроль оплата | milestone | 0min | 2026-09-01 09:15 | 2026-09-01 09:15 | 3351, 3353FS+5d |  |  | 143.56d |  | start no earlier than 2026-08-10 08:00 | Домоводов К |  |  |
| 3356 | 23.20 | Сборка рамы и навеса для мусорки 2 ц возле 1 КПП |  | 4h | 2026-09-04 09:00 A | 2026-09-04 13:00 A |  | 100% |  |  |  | start no earlier than 2026-09-04 09:00 | Некрасов А; Макаревич А | 8h | 8h |
| 3357 | 23.21 | Покраска рамы новой мусорки, стоит у ворот навесок 2 цех |  | 1h | 2026-09-04 09:00 A | 2026-09-04 10:00 A |  | 100% |  |  |  | start no earlier than 2026-09-04 09:00 | Некрасов А; Макаревич А | 2h | 2h |
| 3358 | 23.22 | Монтаж дверей на мусорку собираем раму (петли привезем после обеда) |  | 3h | 2026-09-04 09:00 A | 2026-09-04 12:00 A |  | 100% |  |  |  | start no earlier than 2026-09-04 09:00 | Некрасов А; Макаревич А | 6h | 6h |

| ID | WBS | Task | Type | Duration | Start | Finish | Predecessors | Complete | Remaining | Total slack | Constraint | Resources | Work | Actual work |
| --- | --- | --- | --- | --- | --- | --- | --- | --- | --- | --- | --- | --- | --- | --- |
| 3359 | 23.23 | **асфальтирование дороги до 5ц** |  | 11.25d? | 2026-08-11 09:00 A | 2026-08-26 11:00 A |  | 100% |  |  |  |  | 36.5h | 36.5h |
| 3360 | 23.23.1 | составить схему площади дороги / 3 корректировки |  | 2h | 2026-08-11 09:00 A | 2026-08-11 11:00 A |  | 100% |  |  | start no earlier than 2026-08-11 09:00 | Зорькин В | 2h | 2h |
| 3361 | 23.23.2 | получить цену исполнителя |  | 1d | 2026-08-11 11:00 A | 2026-08-12 11:00 A | 3360 | 100% |  |  | start no earlier than 2026-08-10 08:00 | Домоводов К | 8h | 8h |
| 3362 | 23.23.3 | согл с ГД |  | 1d | 2026-08-11 09:00 A | 2026-08-11 18:00 A | 3361 | 100% |  |  | start no earlier than 2026-08-10 08:00 | Домоводов К | 8h | 8h |
| 3363 | 23.23.4 | получить счет от Вугара | milestone | 0h | 2026-08-12 09:00 A | 2026-08-12 09:00 A |  | 100% |  |  | start no earlier than 2026-08-12 09:00 | Домоводов К |  |  |
| 3364 | 23.23.5 | будет ли Вугар оформлятся как подрядчик? Соглаосвать с ГД |  | 15min | 2026-08-17 09:00 A | 2026-08-17 09:15 A |  | 100% |  |  | start no earlier than 2026-08-17 09:00 | Домоводов К | 0.25h | 0.25h |
| 3365 | 23.23.6 | корректировка чертеж объем работ |  | 1d? | 2026-08-20 09:00 A | 2026-08-20 18:00 A |  | 100% |  |  | start no earlier than 2026-08-20 09:00 | Домоводов К | 8h | 8h |
| 3366 | 23.23.7 | подготовка смета |  | 2h | 2026-08-26 09:00 A | 2026-08-26 11:00 A |  | 100% |  |  | start no earlier than 2026-08-26 09:00 | Домоводов К | 2h | 2h |
| 3367 | 23.23.8 | контроль сроков завоза техники |  | 15min | 2026-08-14 09:00 A | 2026-08-14 09:15 A |  | 100% |  |  | start no earlier than 2026-08-14 09:00 | Домоводов К | 0.25h | 0.25h |
| 3368 | 23.23.9 | монтаж |  | 1d? | 2026-08-19 09:00 A | 2026-08-19 18:00 A | 3362, 3363 | 100% |  |  | start no earlier than 2026-08-19 09:00 | Подрядчик | 8h | 8h |
| 3369 | 23.24 | взять роутер у нас в кабинете - подключить к UTP кабелю |  | 1d? | 2026-04-13 09:00 A | 2026-04-13 18:00 A |  | 100% |  |  | start no earlier than 2026-04-13 09:00 |  |  |  |
| 3370 | 23.25 | в цехе 2, 3, 4 и 5 убавить температуры на нагревателях и газ. Котлах |  | 4h | 2026-03-31 09:00 A | 2026-03-31 13:00 A |  | 100% |  |  | start no earlier than 2026-03-31 08:00 | Бундин В | 4h | 4h |
| 3371 | 23.26 | перенос камеры на 10см ниже КПП |  | 3h | 2026-03-21 09:00 A | 2026-03-23 12:00 A |  | 100% |  |  | start no earlier than 2026-03-21 09:00 | Бундин В | 3h | 3h |
| 3372 | 23.27 | запуск контейнер рэф |  | 2h | 2026-03-20 09:00 A | 2026-03-20 11:00 A |  | 100% |  |  | start no earlier than 2026-03-20 09:00 | Шуранов Ю | 2h | 2h |
| 3373 | 23.28 | **выровнить контейнеры, перекос двери** |  | 3.25d | 2026-03-19 09:00 A | 2026-03-24 11:00 A |  | 100% |  |  |  |  | 2.5h | 2.5h |
| 3374 | 23.28.1 | заявка кран |  | 30min | 2026-03-19 09:00 A | 2026-03-19 09:30 A |  | 100% |  |  | start no earlier than 2026-03-19 09:00 | Шуранов Ю | 0.5h | 0.5h |
| 3375 | 23.28.2 | работа по выравниванию |  | 2h | 2026-03-24 09:00 A | 2026-03-24 11:00 A | 3374FS+1d | 100% |  |  | start no earlier than 2026-03-24 09:00 | Некрасов А | 2h | 2h |
| 3376 | 23.29 | **двойной шлагбаум замрзает** |  | 5.01d | 2025-02-20 09:00 A | 2025-02-27 09:05 A |  | 100% |  |  |  |  | 1.08h | 1.08h |
| 3377 | 23.29.1 | вызов сервисного инженера контроль даты |  | 5min | 2025-02-27 09:00 A | 2025-02-27 09:05 A |  | 100% |  |  | start no earlier than 2025-02-27 09:00 | Шуранов Ю | 0.08h | 0.08h |
| 3378 | 23.29.2 | осмотр с сервисн инжзенером |  | 1h | 2025-02-20 09:00 A | 2025-02-20 10:00 A |  | 100% |  |  | start no earlier than 2025-02-20 09:00 | Шуранов Ю | 1h | 1h |
| 3379 | 23.30 | **Люки на колодцы** |  | 13.31d | 2026-05-26 09:00 A | 2026-06-12 11:30 |  | 98% | 0.32d | 200.28d |  |  | 163.5h | 161.5h |
| 3380 | 23.30.1 | Консультация с Олегом |  | 30min | 2026-05-26 09:00 A | 2026-05-26 09:30 A |  | 100% |  |  | start no earlier than 2026-05-26 08:00 | Зорькин В; Олег | 1h | 1h |
| 3381 | 23.30.2 | Заявка на закуп |  | 30min | 2026-05-29 09:00 A | 2026-05-29 09:30 A | 3380 | 100% |  |  | start no earlier than 2026-05-29 09:00 | Зорькин В | 0.5h | 0.5h |
| 3382 | 23.30.3 | Доставка, контроль |  | 10d | 2026-05-29 09:30 A | 2026-06-12 09:30 A | 3381 | 100% |  |  | start no earlier than 2026-05-26 09:00 | Зорькин В; Шуранов Ю | 160h | 160h |
| 3383 | 23.30.4 | установка люков на колодцы |  | 2h | 2026-06-12 09:30 | 2026-06-12 11:30 | 3382 |  |  | 200.28d | start no earlier than 2026-06-04 09:00 | Олег | 2h |  |

| ID | WBS | Task | Duration | Start | Finish | Predecessors | Complete | Remaining | Total slack | Free slack | Constraint | Resources | Work | Actual work |
| --- | --- | --- | --- | --- | --- | --- | --- | --- | --- | --- | --- | --- | --- | --- |
| 3384 | 24 | **ежедневные обходы и осмотры** | 473.5d | 2024-05-14 09:00 A | 2026-03-06 13:00 |  | 16% | 398.74d | 270.09d |  |  |  | 25.33h | 4h |
| 3385 | 24.1 | цех 1 | 20min | 2024-05-14 09:00 | 2024-05-14 09:20 |  |  |  | 741.01d | 0d | start no earlier than 2024-05-14 09:00 | Шуранов Ю | 0.33h |  |
| 3386 | 24.2 | цех 2 | 20min | 2024-05-14 09:00 | 2024-05-14 09:20 |  |  |  | 743.55d |  | start no earlier than 2024-05-14 09:00 | Шуранов Ю | 0.33h |  |
| 3387 | 24.3 | цех навесок | 20min | 2024-05-14 09:20 | 2024-05-14 09:40 | 3385 |  |  | 741.01d | 0d | start no earlier than 2024-05-14 09:00 | Шуранов Ю | 0.33h |  |
| 3388 | 24.4 | техника | 20h | 2024-05-14 09:40 | 2024-05-16 14:40 | 3387 |  |  | 741.01d |  | start no earlier than 2024-05-14 09:00 | Шуранов Ю | 20h |  |
| 3389 | 24.5 | вести журнал осмотров стеллажей | 20min | 2024-05-14 09:00 | 2024-05-14 09:20 |  |  |  | 743.55d |  | start no earlier than 2024-05-14 09:00 | Шуранов Ю | 0.33h |  |
| 3390 | 24.6 | оперативная работа | 4h | 2026-03-06 09:00 A | 2026-03-06 13:00 A |  | 100% |  |  |  | start no earlier than 2026-03-06 09:00 | Бобренок В | 4h | 4h |
| 3391 | 25 | **замена шнеков** | 882.5d? | 2023-03-29 09:00 A | 2026-08-14 13:00 |  | 2% | 864.01d? | 155.09d |  |  |  | 53h | 34h |
| 3392 | 25.1 | посчитать количество шнеков и гильз для цех1 и цех 2 | 2h | 2026-04-03 09:00 | 2026-04-03 11:00 |  |  |  | 250.34d |  | start no earlier than 2026-04-03 09:00 | Шуранов Ю | 2h |  |
| 3393 | 25.2 | вести список и учет замены шнеков | 1h | 2024-05-14 09:00 | 2024-05-14 10:00 |  |  |  | 743.47d |  | start no earlier than 2024-05-14 09:00 | Шуранов Ю | 1h |  |
| 3394 | 25.3 | линия 3 - было 3/приход спец12-3/спец14-9 | 1d? | 2024-04-15 09:00 A | 2024-04-15 18:00 A |  | 100% |  |  |  | start no earlier than 2024-04-15 08:00 |  |  |  |
| 3395 | 25.4 | линия3 | 42d | 2023-10-16 09:00 | 2023-12-12 18:00 |  |  |  | 852.59d |  | start no earlier than 2023-10-16 09:00 |  |  |  |
| 3396 | 25.5 | линия3 | 30d | 2023-12-12 09:00 | 2024-01-22 18:00 |  |  |  | 823.59d |  | start no earlier than 2023-12-12 09:00 |  |  |  |
| 3397 | 25.6 | линия3 | 45d | 2024-01-24 09:00 | 2024-03-26 18:00 |  |  |  | 777.59d |  | start no earlier than 2024-01-24 09:00 |  |  |  |
| 3398 | 25.7 | линия3 | 11d | 2023-03-29 09:00 | 2023-04-12 18:00 |  |  |  | 1026.59d |  | start no earlier than 2023-03-29 09:00 |  |  |  |
| 3399 | 25.8 | линия3 | 1d? | 2023-04-12 09:00 | 2023-04-12 18:00 |  |  |  | 1026.59d |  | start no earlier than 2023-04-12 09:00 |  |  |  |
| 3400 | 25.9 | линия 3 | 1.38d? | 2024-05-08 08:00 A | 2024-05-13 11:00 A |  | 100% |  |  |  | start no earlier than 2024-05-08 08:00 | Макаревич А; Некрасов А; Черепанов И | 26h | 26h |
| 3401 | 25.10 | диния 3 | 1d? | 2024-05-20 09:00 | 2024-05-20 18:00 |  |  |  | 738.59d |  | start no earlier than 2024-05-20 09:00 | Некрасов А; Тимофеев В | 16h |  |
| 3532 | 25.11 | замена линия 3, была струшка | 4h | 2026-08-14 09:00 A | 2026-08-14 13:00 A |  | 100% |  |  |  | start no earlier than 2026-08-14 09:00 | Некрасов А; Бундин В | 8h | 8h |
